# Planificación RestApp(TERMINADA - SIN RECURSOS)

How a schedule from MS Project changed from version to version. A marks actual dates.

## Version 1 (saved 2013-12-11, file Planificación RestApp(TERMINADA - SIN RECURSOS).mpp)

Note of the change: Subo Linea Base

| ID | WBS | Task | Duration | Start | Finish | Predecessors | Total float |
| --- | --- | --- | --- | --- | --- | --- | --- |
| 1 | 1 | **RestApp** | 73.75d | 2013-07-29 | 2014-10-06 |  | 0d |
| 2 | 1.1 | **INICIO** | 12.38d | 2013-07-29 | 2013-10-04 |  | 0d |
| 3 | 1.1.1 | **Iteración I1** | 12.38d | 2013-07-29 | 2013-10-04 |  | 0d |
| 4 | 1.1.1.1 | **Modelo de Negocio** | 1.88d | 2013-07-29 | 2013-08-05 |  | 0d |
| 5 |  | Analisis del dominio del problema | 6h | 2013-07-29 | 2013-07-30 |  | 0d |
| 6 |  | Confección de entrevista | 2h | 2013-07-30 | 2013-08-01 | 5 | 0d |
| 7 |  | Realización de entrevista | 3h | 2013-08-01 | 2013-08-02 | 6 | 0d |
| 8 |  | Analisis de Entrevista | 4h | 2013-08-02 | 2013-08-05 | 7 | 0d |
| 9 | 1.1.1.2 | **Requerimientos** | 2.75d | 2013-08-05 | 2013-08-16 | 4 | 0d |
| 10 |  | Definición de caracteristicas y limitaciones | 7h | 2013-08-05 | 2013-08-09 |  | 0d |
| 11 |  | Definición de Requerimientos Funcionales y No Funcionales | 15h | 2013-08-09 | 2013-08-16 | 10 | 0d |
| 12 | 1.1.1.3 | **Análisis/Diseño** | 1d | 2013-08-16 | 2013-08-27 | 9 | 0d |
| 13 |  | Definición inicial del Modelo de Casos de Usos | 8h | 2013-08-16 | 2013-08-27 |  | 0d |
| 14 | 1.1.1.4 | **Gestión del Proyecto** | 5.12d | 2013-08-27 | 2013-09-26 | 12 | 0d |
| 15 |  | Estudio de prefactibilidad | 8h | 2013-08-27 | 2013-09-02 |  | 0d |
| 16 |  | Planificación | 15h | 2013-09-02 | 2013-09-16 | 15 | 0d |
| 17 |  | Gestión de riesgos (definición) | 8h | 2013-09-16 | 2013-09-20 | 16 | 0d |
| 18 |  | Gestión de configuración (definición) | 10h | 2013-09-20 | 2013-09-26 | 17 | 0d |
| 19 | 1.1.1.5 | **Gestión de configuración** | 1d | 2013-09-27 | 2013-09-30 | 14 | 0d |
| 20 |  | Preparación del ambiente de versionado | 8h | 2013-09-27 | 2013-09-30 |  | 0d |
| 21 | 1.1.1.6 | **Ambiente** | 0.62d | 2013-10-01 | 2013-10-04 | 19 | 0d |
| 22 |  | Identificación y evaluación de herramientas | 5h | 2013-10-01 | 2013-10-04 |  | 0d |
| 23 |  | Objetivos del ciclo de vida | 0h | 2013-10-04 | 2013-10-04 | 2 | 0d |
| 24 | 1.3 | **ELABORACIÓN** | 19.25d | 2013-10-04 | 2014-03-31 | 23 | 0d |
| 25 | 1.3.1 | **Iteración E1** | 7.38d | 2013-10-04 | 2013-11-15 |  | 0d |
| 26 | 1.3.1.1 | **Modelo de Negocio** | 1.25d | 2013-10-04 | 2013-10-08 |  | 0d |
| 27 |  | Entendimiento del Modelo de Negocio | 10h | 2013-10-04 | 2013-10-08 |  | 0d |
| 28 | 1.3.1.2 | **Requerimientos** | 1.38d | 2013-10-10 | 2013-10-18 | 26 | 0d |
| 29 |  | Definicón de nuevos requerimientos | 4h | 2013-10-10 | 2013-10-11 |  | 0d |
| 30 |  | Documentación de requerimientos según estandar | 3h | 2013-10-11 | 2013-10-15 | 29 | 0d |
| 31 |  | Jerarquización de requerimientos | 4h | 2013-10-15 | 2013-10-18 | 30 | 0d |
| 32 | 1.3.1.3 | **Análisis/Diseño** | 2.25d | 2013-10-18 | 2013-11-04 | 28 | 0d |
| 33 |  | Refinación de Modelo de Casos de Usos | 3h | 2013-10-18 | 2013-10-18 |  | 0d |
| 34 |  | Definición preliminar de Diagrama de clases | 15h | 2013-10-18 | 2013-11-04 | 33 | 0d |
| 35 | 1.3.1.4 | **Implementación** | 1d | 2013-11-04 | 2013-11-08 | 32 | 0d |
| 36 |  | Desarrollo prototipos independientes de prueba | 8h | 2013-11-04 | 2013-11-08 |  | 0d |
| 37 | 1.3.1.5 | **Gestión del Proyecto** | 0.88d | 2013-11-08 | 2013-11-12 | 35 | 0d |
| 38 |  | Actualización y priorización de Riesgos | 4h | 2013-11-08 | 2013-11-11 |  | 0d |
| 39 |  | Refinación del Plan de Proyecto | 3h | 2013-11-11 | 2013-11-12 | 38 | 0d |
| 40 | 1.3.1.6 | **Gestión de Configuración** | 0.25d | 2013-11-12 | 2013-11-12 | 37 | 0d |
| 41 |  | Creacion de linea base de Planificación | 1h | 2013-11-12 | 2013-11-12 |  | 0d |
| 42 |  | Revisión de versionado de documentos modificados | 1h | 2013-11-12 | 2013-11-12 | 41 | 0d |
| 43 | 1.3.1.7 | **Ambiente** | 0.38d | 2013-11-14 | 2013-11-15 | 40 | 0d |
| 44 |  | Identificación de Tecnología | 3h | 2013-11-14 | 2013-11-15 |  | 0d |
| 45 | 1.3.2 | **Iteración E2** | 7.38d | 2013-11-15 | 2014-03-10 | 25 | 0d |
| 46 | 1.3.2.1 | **Modelo de Negocio** | 0.62d | 2013-11-15 | 2013-11-18 |  | 0d |
| 47 |  | Refinación del Modelo de Negocio | 5h | 2013-11-15 | 2013-11-18 |  | 0d |
| 48 | 1.3.2.2 | **Requerimientos** | 0.5d | 2013-11-18 | 2013-11-19 | 46 | 0d |
| 49 |  | Validación de requerimientos | 3h | 2013-11-18 | 2013-11-19 |  | 0.12d |
| 50 |  | Mapeo de Requerimientos a Casos de Uso | 4h | 2013-11-18 | 2013-11-19 |  | 0d |
| 51 | 1.3.2.3 | **Análisis/Diseño** | 4.5d | 2013-11-19 | 2014-02-06 | 48 | 0d |
| 52 |  | Definición Inicial de diagrama de Clases | 10h | 2013-11-19 | 2013-11-28 |  | 0d |
| 53 |  | Definición inicial del Modelo de Datos | 8h | 2013-11-28 | 2013-12-09 | 52 | 0d |
| 54 |  | Definición inicial de Diagrama de Actividades | 8h | 2013-12-09 | 2013-12-13 | 53 | 0d |
| 55 |  | Definición inicial de Diagramas de Secuencia | 10h | 2013-12-13 | 2014-02-06 | 54 | 0d |
| 56 | 1.3.2.4 | **Implementación** | 0.75d | 2014-02-07 | 2014-02-27 | 51 | 0d |
| 57 |  | Mejoramientos de prototipos | 6h | 2014-02-07 | 2014-02-27 |  | 0d |
| 58 | 1.3.2.5 | **Gestión del Proyecto** | 0.25d | 2014-02-28 | 2014-02-28 | 56 | 0d |
| 59 |  | Validación del Plan de proyecto | 2h | 2014-02-28 | 2014-02-28 |  | 0d |
| 60 | 1.3.2.6 | **Gestión de Configuración** | 0.12d | 2014-02-28 | 2014-02-28 | 58 | 0d |
| 61 |  | Versionado de los prototipos | 1h | 2014-02-28 | 2014-02-28 |  | 0d |
| 62 |  | Revisión de versionado de documentos modificados | 1h | 2014-02-28 | 2014-02-28 |  | 0d |
| 63 | 1.3.2.7 | **Ambiente** | 0.62d | 2014-02-28 | 2014-03-10 | 60 | 0d |
| 64 |  | Preparación del ambiente de desarrollo | 5h | 2014-02-28 | 2014-03-10 |  | 0d |
| 65 | 1.3.3 | **Iteración E3** | 4.5d | 2014-03-11 | 2014-03-31 | 45 | 0d |
| 66 | 1.3.3.1 | **Requerimientos** | 0.38d | 2014-03-11 | 2014-03-13 |  | 0d |
| 67 |  | Validacion de Mapeo de Requerimientos a Casos de Uso | 3h | 2014-03-11 | 2014-03-13 |  | 0d |
| 68 | 1.3.3.2 | **Análisis/Diseño** | 2.75d | 2014-03-13 | 2014-03-24 | 66 | 0d |
| 69 |  | Refinación de Diagrama de Casos de Uso | 6h | 2014-03-13 | 2014-03-17 |  | 0d |
| 70 |  | Refinación de Diagrama de Clases | 6h | 2014-03-17 | 2014-03-18 | 69 | 0d |

| ID | WBS | Task | Duration | Start | Finish | Predecessors | Total float |
| --- | --- | --- | --- | --- | --- | --- | --- |
| 71 |  | Refinación del Modelo de Datos | 4h | 2014-03-20 | 2014-03-21 | 70 | 0d |
| 72 |  | Descripción de casos de uso mas importantes | 6h | 2014-03-21 | 2014-03-24 | 71 | 0d |
| 73 | 1.3.3.3 | **Implementación** | 1d | 2014-03-25 | 2014-03-28 | 68 | 0d |
| 74 |  | Definición de interfaces de comunicación entre plataformas | 8h | 2014-03-25 | 2014-03-28 |  | 0d |
| 75 | 1.3.3.4 | **Gestión del Proyecto** | 0.25d | 2014-03-28 | 2014-03-31 | 73 | 0d |
| 76 |  | Actualización de planes de prevención y contigencia para nuevos Riesgos | 2h | 2014-03-28 | 2014-03-31 |  | 0d |
| 77 | 1.3.3.5 | **Gestión de Configuración** | 0.12d | 2014-03-31 | 2014-03-31 | 75 | 0d |
| 78 |  | Revisión de versionado de documentos modificados | 1h | 2014-03-31 | 2014-03-31 |  | 0d |
| 79 |  | Arquitectura del ciclo de vida | 0h | 2014-03-31 | 2014-03-31 | 24 | 0d |
| 80 | 1.5 | **CONSTRUCCIÓN** | 34.25d | 2014-03-31 | 2014-09-01 | 79 | 0d |
| 81 | 1.5.1 | **Iteración C1** | 3.5d | 2014-03-31 | 2014-04-15 |  | 0d |
| 82 | 1.5.1.1 | **Análisis/Diseño** | 1d | 2014-03-31 | 2014-04-04 |  | 0d |
| 83 |  | Refinación de Diagramas de Actividad | 4h | 2014-03-31 | 2014-04-01 |  | 0d |
| 84 |  | Refinación de Diagramas de Secuencia | 4h | 2014-04-03 | 2014-04-04 | 83 | 0d |
| 85 | 1.5.1.2 | **Implementación** | 1.88d | 2014-04-04 | 2014-04-14 | 82 | 0d |
| 86 |  | Construcción de Base de Datos | 8h | 2014-04-04 | 2014-04-08 |  | 0d |
| 87 |  | Definición de Interfaz de Usuario | 7h | 2014-04-08 | 2014-04-14 | 86 | 0d |
| 88 | 1.5.1.3 | **Gestión del Proyecto** | 0.5d | 2014-04-14 | 2014-04-15 | 85 | 0d |
| 89 |  | Actualización de Riesgos | 1h | 2014-04-14 | 2014-04-14 |  | 0d |
| 90 |  | Revisión de planificacion (posible replanificación) | 3h | 2014-04-14 | 2014-04-15 | 89 | 0d |
| 91 | 1.5.1.4 | **Gestión de Configuración** | 0.12d | 2014-04-15 | 2014-04-15 | 88 | 0d |
| 92 |  | Versionado de prototipos | 1h | 2014-04-15 | 2014-04-15 |  | 0d |
| 93 |  | Revisión de versionado de documentos modificados | 1h | 2014-04-15 | 2014-04-15 |  | 0d |
| 94 | 1.5.2 | **Iteración C2** | 5.75d | 2014-04-15 | 2014-05-12 | 81 | 0d |
| 95 | 1.5.2.1 | **Análisis/Diseño** | 1.62d | 2014-04-15 | 2014-04-22 |  | 0d |
| 96 |  | Definición inicial del Modelo de componentes | 9h | 2014-04-15 | 2014-04-21 |  | 0d |
| 97 |  | Refinación de Diagramas de clases (agregado de operaciones) | 4h | 2014-04-21 | 2014-04-22 | 96 | 0d |
| 98 | 1.5.2.2 | **Implementación** | 3.12d | 2014-04-22 | 2014-05-06 | 95 | 0d |
| 99 |  | Codificación de Interfaz de usuario (FrontEnd) | 25h | 2014-04-22 | 2014-05-06 |  | 0d |
| 100 |  | Codificación de Interfaz de usuario (BackEnd) | 22h | 2014-04-22 | 2014-05-05 |  | 0.38d |
| 101 |  | Codificación de Interfaz de usuario (Android) | 23h | 2014-04-22 | 2014-05-05 |  | 0.25d |
| 102 | 1.5.2.3 | **Gestión del Proyecto** | 0.75d | 2014-05-06 | 2014-05-09 | 98 | 0d |
| 103 |  | Actualización de Riesgos | 3h | 2014-05-06 | 2014-05-09 |  | 0d |
| 104 |  | Revisión de planificacion (posible replanificación) | 3h | 2014-05-09 | 2014-05-09 | 103 | 0d |
| 105 | 1.5.2.4 | **Gestión de Configuración** | 0.25d | 2014-05-09 | 2014-05-12 | 102 | 0d |
| 106 |  | Versionado de interfaz de usuario | 1h | 2014-05-09 | 2014-05-12 |  | 0d |
| 107 |  | Revisión de versionado de documentos modificados | 1h | 2014-05-12 | 2014-05-12 | 106 | 0d |
| 108 | 1.5.3 | **Iteración C3** | 4.38d | 2014-05-12 | 2014-05-30 | 94 | 0d |
| 109 | 1.5.3.1 | **Análisis/Diseño** | 0.38d | 2014-05-12 | 2014-05-13 |  | 0d |
| 110 |  | Refinación del Modelo de componentes | 3h | 2014-05-12 | 2014-05-13 |  | 0d |
| 111 | 1.5.3.2 | **Implementación** | 3.5d | 2014-05-13 | 2014-05-29 | 109 | 0d |
| 112 |  | Codificacion de logeo de usuario (FrontEnd) | 24h | 2014-05-13 | 2014-05-26 |  | 0.5d |
| 113 |  | Codificación de seguridad [Roles y Usuario] (BackEnd) | 24h | 2014-05-13 | 2014-05-26 |  | 0.5d |
| 114 |  | Codificación de Local Storage (Android) | 28h | 2014-05-13 | 2014-05-29 |  | 0d |
| 115 | 1.5.3.3 | **Gestión del Proyecto** | 0.38d | 2014-05-29 | 2014-05-30 | 111 | 0d |
| 116 |  | Actualización de Riesgos | 3h | 2014-05-29 | 2014-05-30 |  | 0d |
| 117 |  | Revisión de planificacion (posible replanificación) | 3h | 2014-05-29 | 2014-05-30 |  | 0d |
| 118 | 1.5.3.4 | **Gestión de Configuración** | 0.12d | 2014-05-30 | 2014-05-30 | 115 | 0d |
| 119 |  | Versionado de todos los proyectos | 1h | 2014-05-30 | 2014-05-30 |  | 0d |
| 120 |  | Revisión de versionado de documentos modificados | 1h | 2014-05-30 | 2014-05-30 |  | 0d |
| 121 | 1.5.4 | **Iteración C4** | 5.62d | 2014-05-30 | 2014-06-24 | 108 | 0d |
| 122 | 1.5.4.1 | **Análisis/Diseño** | 0.5d | 2014-05-30 | 2014-06-02 |  | 0d |
| 123 |  | Refinación del Modelo de Datos | 4h | 2014-05-30 | 2014-06-02 |  | 0d |
| 124 | 1.5.4.2 | **Implementación** | 4.75d | 2014-06-02 | 2014-06-23 | 122 | 0d |
| 125 |  | Codificación de Gestión de reservas online (FrontEnd) | 36h | 2014-06-02 | 2014-06-23 |  | 0.25d |
| 126 |  | Codificación de ABM principales (BackEnd) | 38h | 2014-06-02 | 2014-06-23 |  | 0d |
| 127 |  | Codificación de ABM principales (Android) | 32h | 2014-06-02 | 2014-06-20 |  | 0.75d |
| 128 | 1.5.4.3 | **Gestión del Proyecto** | 0.25d | 2014-06-23 | 2014-06-24 | 124 | 0d |
| 129 |  | Actualización de Riesgos | 2h | 2014-06-23 | 2014-06-24 |  | 0d |
| 130 |  | Revisión de planificacion (posible replanificación) | 1h | 2014-06-23 | 2014-06-24 |  | 0.12d |
| 131 | 1.5.4.4 | **Gestión de Configuración** | 0.12d | 2014-06-24 | 2014-06-24 | 128 | 0d |
| 132 |  | Versionado de todos los proyectos | 1h | 2014-06-24 | 2014-06-24 |  | 0d |
| 133 |  | Revisión de versionado de documentos modificados | 1h | 2014-06-24 | 2014-06-24 |  | 0d |
| 134 | 1.5.5 | **Iteración C5** | 7.62d | 2014-06-26 | 2014-07-29 | 121 | 0d |
| 135 | 1.5.5.1 | **Análisis/Diseño** | 0.75d | 2014-06-26 | 2014-06-27 |  | 0d |
| 136 |  | Revisión de Diagramas y Modelos de Análisis/Diseño | 6h | 2014-06-26 | 2014-06-27 |  | 0d |
| 137 | 1.5.5.2 | **Implementación** | 5.25d | 2014-06-30 | 2014-07-22 | 135 | 0d |
| 138 |  | Codificación de Calculos de tiempos de espera (FrontEnd) | 42h | 2014-06-30 | 2014-07-22 |  | 0d |
| 139 |  | Codificación de Funciones básicas (BackEnd) | 41h | 2014-06-30 | 2014-07-21 |  | 0.12d |
| 140 |  | Codificación de visualizador de ordenes (Android) | 35h | 2014-06-30 | 2014-07-18 |  | 0.88d |

| ID | WBS | Task | Duration | Start | Finish | Predecessors | Total float |
| --- | --- | --- | --- | --- | --- | --- | --- |
| 141 | 1.5.5.3 | **Pruebas** | 1.25d | 2014-07-22 | 2014-07-28 | 137 | 0d |
| 142 |  | Pruebas de Funcionalidad (para las 3 aplicaciones) | 10h | 2014-07-22 | 2014-07-28 |  | 0d |
| 143 | 1.5.5.4 | **Gestión del Proyecto** | 0.25d | 2014-07-28 | 2014-07-28 | 141 | 0d |
| 144 |  | Actualización de Riesgos | 2h | 2014-07-28 | 2014-07-28 |  | 0d |
| 145 |  | Revisión de planificacion (posible replanificación) | 1h | 2014-07-28 | 2014-07-28 |  | 0.12d |
| 146 | 1.5.5.5 | **Gestión de Configuración** | 0.12d | 2014-07-29 | 2014-07-29 | 143 | 0d |
| 147 |  | Versionado de todos los proyectos | 1h | 2014-07-29 | 2014-07-29 |  | 0d |
| 148 |  | Revisión de versionado de documentos modificados | 1h | 2014-07-29 | 2014-07-29 |  | 0d |
| 149 | 1.5.6 | **Iteración C6** | 7.38d | 2014-07-29 | 2014-09-01 | 134 | 0d |
| 150 | 1.5.6.1 | **Análisis/Diseño** | 1d | 2014-07-29 | 2014-08-04 |  | 0d |
| 151 |  | Revisión de Diagramas y Modelos de Análisis/Diseño | 8h | 2014-07-29 | 2014-08-04 |  | 0d |
| 152 | 1.5.6.2 | **Implementación** | 4.75d | 2014-08-04 | 2014-08-25 | 150 | 0d |
| 153 |  | Codificación de Calculos de tiempos de espera (FrontEnd) | 38h | 2014-08-04 | 2014-08-25 |  | 0d |
| 154 |  | Codificación de visualizador de Ordenes (BackEnd) | 36h | 2014-08-04 | 2014-08-22 |  | 0.25d |
| 155 |  | Codificación de personalización gráfica (Android) | 38h | 2014-08-04 | 2014-08-25 |  | 0d |
| 156 | 1.5.6.3 | **Pruebas** | 1.25d | 2014-08-25 | 2014-08-29 | 152 | 0d |
| 157 |  | Pruebas de comunicación de interfaces y pruebas de funcionalidad | 10h | 2014-08-25 | 2014-08-29 |  | 0d |
| 158 | 1.5.6.4 | **Gestión del Proyecto** | 0.12d | 2014-08-29 | 2014-08-29 | 156 | 0d |
| 159 |  | Actualización de Riesgos | 1h | 2014-08-29 | 2014-08-29 |  | 0d |
| 160 |  | Revisión de planificacion (posible replanificación) | 1h | 2014-08-29 | 2014-08-29 |  | 0d |
| 161 | 1.5.6.5 | **Gestión de Configuración** | 0.25d | 2014-08-29 | 2014-09-01 | 158 | 0d |
| 162 |  | Versionado de todos los proyectos | 2h | 2014-08-29 | 2014-09-01 |  | 0d |
| 163 |  | Revisión de versionado de documentos modificados | 2h | 2014-08-29 | 2014-09-01 |  | 0d |
| 164 |  | Capacidad Operacional Inicial | 0h | 2014-09-01 | 2014-09-01 | 80 | 0d |
| 165 | 1.7 | **Transición** | 7.88d | 2014-09-01 | 2014-10-06 | 164 | 0d |
| 166 | 1.7.1 | **Iteración T1** | 7.88d | 2014-09-01 | 2014-10-06 |  | 0d |
| 167 | 1.7.1.1 | **Implementación** | 2.5d | 2014-09-01 | 2014-09-12 |  | 0d |
| 168 |  | Elaboracion de documentación para usuarios y videos tutoriales | 20h | 2014-09-01 | 2014-09-12 |  | 0d |
| 169 | 1.7.1.2 | **Despliegue** | 3d | 2014-09-12 | 2014-09-25 | 167 | 0d |
| 170 |  | Modelo de despliegue | 10h | 2014-09-12 | 2014-09-16 |  | 0d |
| 171 |  | Integración y puesta a punto del sistema | 14h | 2014-09-18 | 2014-09-25 | 170 | 0d |
| 172 | 1.7.1.3 | **Gestión del Proyecto** | 2.12d | 2014-09-25 | 2014-10-03 | 169 | 0d |
| 173 |  | Actualización de Riesgos | 1h | 2014-09-25 | 2014-09-26 |  | 0d |
| 174 |  | Revisión de planificacion (posible replanificación) | 1h | 2014-09-26 | 2014-09-26 | 173 | 0d |
| 175 |  | Análisis de resultados del proyecto | 15h | 2014-09-26 | 2014-10-03 | 174 | 0d |
| 176 | 1.7.1.4 | **Gestión de Configuración** | 0.25d | 2014-10-06 | 2014-10-06 | 172 | 0d |
| 177 |  | Versionado de todos los proyectos | 2h | 2014-10-06 | 2014-10-06 |  | 0d |
| 178 |  | Revisión de versionado de documentos modificados | 2h | 2014-10-06 | 2014-10-06 |  | 0d |
| 179 |  | Lanzamiento de producto | 0h | 2014-10-06 | 2014-10-06 | 165 | 0d |
| 180 |  | Fin de Proyecto | 0h | 2014-10-06 | 2014-10-06 | 179 | 0d |

## Version 2 (saved 2013-12-11, file Planificación RestApp(LINEA BASE).mpp)

Note of the change: Subo Linea Base

Last finish 2014-10-06 → 2014-10-28 (+22d).

Added:

| ID | Task | Duration | Start | Finish | Predecessors | Resources |
| --- | --- | --- | --- | --- | --- | --- |
| 40 | Generación de Informe #1 | 4h | 2013-11-12 | 2013-11-14 | 39 | Fernando Raviola; Lucas Ferrero; Oscar Salomón |
| 61 | Generación de Informe #2 | 4h | 2014-03-10 | 2014-03-11 | 60 | Fernando Raviola; Lucas Ferrero; Oscar Salomón |
| 79 | Generación de Informe #3 | 4h | 2014-04-04 | 2014-04-07 | 78 | Fernando Raviola; Lucas Ferrero; Oscar Salomón |
| 94 | Generación de Informe #4 | 4h | 2014-04-22 | 2014-04-24 | 93 | Fernando Raviola; Lucas Ferrero; Oscar Salomón |
| 109 | Generación de Informe #5 | 4h | 2014-05-19 | 2014-05-22 | 108 | Fernando Raviola; Lucas Ferrero; Oscar Salomón |
| 123 | Generación de Informe #6 | 4h | 2014-06-10 | 2014-06-13 | 122, 121 | Fernando Raviola; Lucas Ferrero; Oscar Salomón |
| 137 | Generación de Informe #8 | 4h | 2014-07-08 | 2014-07-10 | 135, 136 | Fernando Raviola; Lucas Ferrero; Oscar Salomón |
| 153 | Generación de Informe #9 | 4h | 2014-08-14 | 2014-08-15 | 151, 152 | Fernando Raviola; Lucas Ferrero; Oscar Salomón |
| 169 | Generación de Informe #10 | 4h | 2014-09-18 | 2014-09-19 | 168, 167 | Fernando Raviola; Lucas Ferrero; Oscar Salomón |
| 185 | Generación de Informe #11 | 4h | 2014-10-24 | 2014-10-27 | 184 | Fernando Raviola; Lucas Ferrero; Oscar Salomón |

Changed:

| ID | Task | Start | Finish | Duration | Other |
| --- | --- | --- | --- | --- | --- |
| 1 | **RestApp** |  | 2014-10-06 → 2014-10-28 (+22d) | 73.75d → 78.75d | baseline start none → 2013-07-29; baseline finish none → 2014-10-28 |
| 2 | **INICIO** |  |  |  | baseline start none → 2013-07-29; baseline finish none → 2013-10-04 |
| 3 | **Iteración I1** |  |  |  | baseline start none → 2013-07-29; baseline finish none → 2013-10-04 |
| 4 | **Modelo de Negocio** |  |  |  | baseline start none → 2013-07-29; baseline finish none → 2013-08-05 |
| 5 | Analisis del dominio del problema |  |  |  | resources none → Fernando Raviola; Lucas Ferrero; Oscar Salomón; baseline start none → 2013-07-29; baseline finish none → 2013-07-30 |
| 6 | Confección de entrevista |  |  |  | resources none → Fernando Raviola; Lucas Ferrero; Oscar Salomón; baseline start none → 2013-07-30; baseline finish none → 2013-08-01 |
| 7 | Realización de entrevista |  |  |  | resources none → Fernando Raviola; Lucas Ferrero; Oscar Salomón; baseline start none → 2013-08-01; baseline finish none → 2013-08-02 |
| 8 | Analisis de Entrevista |  |  |  | resources none → Fernando Raviola; Lucas Ferrero; Oscar Salomón; baseline start none → 2013-08-02; baseline finish none → 2013-08-05 |
| 9 | **Requerimientos** |  |  |  | baseline start none → 2013-08-05; baseline finish none → 2013-08-16 |
| 10 | Definición de caracteristicas y limitaciones |  |  |  | resources none → Fernando Raviola; Lucas Ferrero; Oscar Salomón; baseline start none → 2013-08-05; baseline finish none → 2013-08-09 |
| 11 | Definición de Requerimientos Funcionales y No Funcionales |  |  |  | baseline start none → 2013-08-09; baseline finish none → 2013-08-16 |
| 12 | **Análisis/Diseño** |  |  |  | baseline start none → 2013-08-16; baseline finish none → 2013-08-27 |
| 13 | Definición inicial del Modelo de Casos de Usos |  |  |  | resources none → Fernando Raviola; Lucas Ferrero; Oscar Salomón; baseline start none → 2013-08-16; baseline finish none → 2013-08-27 |
| 14 | **Gestión del Proyecto** |  |  |  | baseline start none → 2013-08-27; baseline finish none → 2013-09-26 |
| 15 | Estudio de prefactibilidad |  |  |  | resources none → Fernando Raviola; Lucas Ferrero; Oscar Salomón; baseline start none → 2013-08-27; baseline finish none → 2013-09-02 |
| 16 | Planificación |  |  |  | resources none → Fernando Raviola; Lucas Ferrero; Oscar Salomón; baseline start none → 2013-09-02; baseline finish none → 2013-09-16 |
| 17 | Gestión de riesgos (definición) |  |  |  | resources none → Fernando Raviola; Lucas Ferrero; Oscar Salomón; baseline start none → 2013-09-16; baseline finish none → 2013-09-20 |
| 18 | Gestión de configuración (definición) |  |  |  | resources none → Fernando Raviola; Lucas Ferrero; Oscar Salomón; baseline start none → 2013-09-20; baseline finish none → 2013-09-26 |
| 19 | **Gestión de configuración** |  |  |  | baseline start none → 2013-09-27; baseline finish none → 2013-09-30 |
| 20 | Preparación del ambiente de versionado |  |  |  | resources none → Fernando Raviola; Lucas Ferrero; Oscar Salomón; baseline start none → 2013-09-27; baseline finish none → 2013-09-30 |
| 21 | **Ambiente** |  |  |  | baseline start none → 2013-10-01; baseline finish none → 2013-10-04 |
| 22 | Identificación y evaluación de herramientas |  |  |  | resources none → Fernando Raviola; Lucas Ferrero; Oscar Salomón; baseline start none → 2013-10-01; baseline finish none → 2013-10-04 |
| 23 | Objetivos del ciclo de vida |  |  |  | baseline start none → 2013-10-04; baseline finish none → 2013-10-04 |
| 24 | **ELABORACIÓN** |  | 2014-03-31 → 2014-04-07 (+7d) | 19.25d → 20.75d | baseline start none → 2013-10-04; baseline finish none → 2014-04-07 |
| 25 | **Iteración E1** |  | 2013-11-15 → 2013-11-18 (+3d) | 7.38d → 7.88d | baseline start none → 2013-10-04; baseline finish none → 2013-11-18 |
| 26 | **Modelo de Negocio** |  |  |  | baseline start none → 2013-10-04; baseline finish none → 2013-10-08 |
| 27 | Entendimiento del Modelo de Negocio |  |  |  | resources none → Fernando Raviola; Lucas Ferrero; Oscar Salomón; baseline start none → 2013-10-04; baseline finish none → 2013-10-08 |
| 28 | **Requerimientos** |  |  |  | baseline start none → 2013-10-10; baseline finish none → 2013-10-18 |
| 29 | Definicón de nuevos requerimientos |  |  |  | resources none → Fernando Raviola; Lucas Ferrero; Oscar Salomón; baseline start none → 2013-10-10; baseline finish none → 2013-10-11 |
| 30 | Documentación de requerimientos según estandar |  |  |  | resources none → Fernando Raviola; Lucas Ferrero; Oscar Salomón; baseline start none → 2013-10-11; baseline finish none → 2013-10-15 |
| 31 | Jerarquización de requerimientos |  |  |  | resources none → Fernando Raviola; Lucas Ferrero; Oscar Salomón; baseline start none → 2013-10-15; baseline finish none → 2013-10-18 |
| 32 | **Análisis/Diseño** |  |  |  | baseline start none → 2013-10-18; baseline finish none → 2013-11-04 |
| 33 | Refinación de Modelo de Casos de Usos |  |  |  | resources none → Fernando Raviola; Lucas Ferrero; Oscar Salomón; baseline start none → 2013-10-18; baseline finish none → 2013-10-18 |
| 34 | Definición preliminar de Diagrama de clases |  |  |  | resources none → Fernando Raviola; Lucas Ferrero; Oscar Salomón; baseline start none → 2013-10-18; baseline finish none → 2013-11-04 |
| 35 | **Implementación** |  |  |  | baseline start none → 2013-11-04; baseline finish none → 2013-11-08 |
| 36 | Desarrollo prototipos independientes de prueba |  |  |  | resources none → Fernando Raviola; Lucas Ferrero; Oscar Salomón; baseline start none → 2013-11-04; baseline finish none → 2013-11-08 |
| 37 | **Gestión del Proyecto** |  | 2013-11-12 → 2013-11-14 (+2d) | 0.88d → 1.38d | baseline start none → 2013-11-08; baseline finish none → 2013-11-14 |
| 38 | Actualización y priorización de Riesgos |  |  |  | resources none → Fernando Raviola; Lucas Ferrero; Oscar Salomón; baseline start none → 2013-11-08; baseline finish none → 2013-11-11 |
| 39 | Refinación del Plan de Proyecto |  |  |  | resources none → Fernando Raviola; Lucas Ferrero; Oscar Salomón; baseline start none → 2013-11-11; baseline finish none → 2013-11-12 |
| 41 | **Gestión de Configuración** | 2013-11-12 → 2013-11-15 (+3d) | 2013-11-12 → 2013-11-15 (+3d) |  | baseline start none → 2013-11-15; baseline finish none → 2013-11-15 |
| 42 | Creacion de linea base de Planificación | 2013-11-12 → 2013-11-15 (+3d) | 2013-11-12 → 2013-11-15 (+3d) |  | resources none → Fernando Raviola; Lucas Ferrero; Oscar Salomón; baseline start none → 2013-11-15; baseline finish none → 2013-11-15 |
| 43 | Revisión de versionado de documentos modificados | 2013-11-12 → 2013-11-15 (+3d) | 2013-11-12 → 2013-11-15 (+3d) |  | resources none → Fernando Raviola; Lucas Ferrero; Oscar Salomón; baseline start none → 2013-11-15; baseline finish none → 2013-11-15 |
| 44 | **Ambiente** | 2013-11-14 → 2013-11-15 (+1d) | 2013-11-15 → 2013-11-18 (+3d) |  | baseline start none → 2013-11-15; baseline finish none → 2013-11-18 |
| 45 | Identificación de Tecnología | 2013-11-14 → 2013-11-15 (+1d) | 2013-11-15 → 2013-11-18 (+3d) |  | resources none → Fernando Raviola; Lucas Ferrero; Oscar Salomón; baseline start none → 2013-11-15; baseline finish none → 2013-11-18 |
| 46 | **Iteración E2** | 2013-11-15 → 2013-11-18 (+3d) | 2014-03-10 → 2014-03-14 (+4d) | 7.38d → 7.88d | baseline start none → 2013-11-18; baseline finish none → 2014-03-14 |
| 47 | **Modelo de Negocio** | 2013-11-15 → 2013-11-18 (+3d) | 2013-11-18 → 2013-11-19 (+1d) |  | baseline start none → 2013-11-18; baseline finish none → 2013-11-19 |
| 48 | Refinación del Modelo de Negocio | 2013-11-15 → 2013-11-18 (+3d) | 2013-11-18 → 2013-11-19 (+1d) |  | resources none → Fernando Raviola; Lucas Ferrero; Oscar Salomón; baseline start none → 2013-11-18; baseline finish none → 2013-11-19 |
| 49 | **Requerimientos** | 2013-11-18 → 2013-11-19 (+1d) | 2013-11-19 → 2013-11-22 (+3d) |  | baseline start none → 2013-11-19; baseline finish none → 2013-11-22 |
| 50 | Validación de requerimientos | 2013-11-18 → 2013-11-19 (+1d) | 2013-11-19 → 2013-11-22 (+3d) |  | resources none → Fernando Raviola; Oscar Salomón; baseline start none → 2013-11-19; baseline finish none → 2013-11-22 |
| 51 | Mapeo de Requerimientos a Casos de Uso | 2013-11-18 → 2013-11-19 (+1d) | 2013-11-19 → 2013-11-22 (+3d) |  | resources none → Lucas Ferrero; baseline start none → 2013-11-19; baseline finish none → 2013-11-22 |
| 52 | **Análisis/Diseño** | 2013-11-19 → 2013-11-22 (+3d) | 2014-02-06 → 2014-02-07 (+1d) |  | baseline start none → 2013-11-22; baseline finish none → 2014-02-07 |
| 53 | Definición Inicial de diagrama de Clases | 2013-11-19 → 2013-11-22 (+3d) | 2013-11-28 → 2013-11-29 (+1d) |  | resources none → Fernando Raviola; Lucas Ferrero; Oscar Salomón; baseline start none → 2013-11-22; baseline finish none → 2013-11-29 |
| 54 | Definición inicial del Modelo de Datos | 2013-11-28 → 2013-11-29 (+1d) | 2013-12-09 → 2013-12-12 (+3d) |  | resources none → Fernando Raviola; Lucas Ferrero; Oscar Salomón; baseline start none → 2013-11-29; baseline finish none → 2013-12-12 |
| 55 | Definición inicial de Diagrama de Actividades | 2013-12-09 → 2013-12-12 (+3d) | 2013-12-13 → 2014-02-03 (+52d) |  | resources none → Fernando Raviola; Lucas Ferrero; Oscar Salomón; baseline start none → 2013-12-12; baseline finish none → 2014-02-03 |
| 56 | Definición inicial de Diagramas de Secuencia | 2013-12-13 → 2014-02-03 (+52d) | 2014-02-06 → 2014-02-07 (+1d) |  | resources none → Fernando Raviola; Lucas Ferrero; Oscar Salomón; baseline start none → 2014-02-03; baseline finish none → 2014-02-07 |
| 57 | **Implementación** | 2014-02-07 → 2014-02-27 (+20d) | 2014-02-27 → 2014-02-28 (+1d) |  | baseline start none → 2014-02-27; baseline finish none → 2014-02-28 |
| 58 | Mejoramientos de prototipos | 2014-02-07 → 2014-02-27 (+20d) | 2014-02-27 → 2014-02-28 (+1d) |  | resources none → Fernando Raviola; Lucas Ferrero; Oscar Salomón; baseline start none → 2014-02-27; baseline finish none → 2014-02-28 |
| 59 | **Gestión del Proyecto** | 2014-02-28 → 2014-03-10 (+10d) | 2014-02-28 → 2014-03-11 (+11d) | 0.25d → 0.75d | baseline start none → 2014-03-10; baseline finish none → 2014-03-11 |
| 60 | Validación del Plan de proyecto | 2014-02-28 → 2014-03-10 (+10d) | 2014-02-28 → 2014-03-10 (+10d) |  | resources none → Fernando Raviola; Lucas Ferrero; Oscar Salomón; baseline start none → 2014-03-10; baseline finish none → 2014-03-10 |
| 62 | **Gestión de Configuración** | 2014-02-28 → 2014-03-11 (+11d) | 2014-02-28 → 2014-03-13 (+13d) |  | baseline start none → 2014-03-11; baseline finish none → 2014-03-13 |
| 63 | Versionado de los prototipos | 2014-02-28 → 2014-03-11 (+11d) | 2014-02-28 → 2014-03-13 (+13d) |  | resources none → Oscar Salomón; baseline start none → 2014-03-11; baseline finish none → 2014-03-13 |
| 64 | Revisión de versionado de documentos modificados | 2014-02-28 → 2014-03-11 (+11d) | 2014-02-28 → 2014-03-13 (+13d) |  | resources none → Fernando Raviola; Lucas Ferrero; baseline start none → 2014-03-11; baseline finish none → 2014-03-13 |
| 65 | **Ambiente** | 2014-02-28 → 2014-03-13 (+13d) | 2014-03-10 → 2014-03-14 (+4d) |  | baseline start none → 2014-03-13; baseline finish none → 2014-03-14 |
| 66 | Preparación del ambiente de desarrollo | 2014-02-28 → 2014-03-13 (+13d) | 2014-03-10 → 2014-03-14 (+4d) |  | resources none → Fernando Raviola; Lucas Ferrero; Oscar Salomón; baseline start none → 2014-03-13; baseline finish none → 2014-03-14 |
| 67 | **Iteración E3** | 2014-03-11 → 2014-03-14 (+3d) | 2014-03-31 → 2014-04-07 (+7d) | 4.5d → 5d | baseline start none → 2014-03-14; baseline finish none → 2014-04-07 |
| 68 | **Requerimientos** | 2014-03-11 → 2014-03-14 (+3d) | 2014-03-13 → 2014-03-17 (+4d) |  | baseline start none → 2014-03-14; baseline finish none → 2014-03-17 |
| 69 | Validacion de Mapeo de Requerimientos a Casos de Uso | 2014-03-11 → 2014-03-14 (+3d) | 2014-03-13 → 2014-03-17 (+4d) |  | resources none → Fernando Raviola; Lucas Ferrero; Oscar Salomón; baseline start none → 2014-03-14; baseline finish none → 2014-03-17 |
| 70 | **Análisis/Diseño** | 2014-03-13 → 2014-03-17 (+4d) | 2014-03-24 → 2014-03-28 (+4d) |  | baseline start none → 2014-03-17; baseline finish none → 2014-03-28 |
| 71 | Refinación de Diagrama de Casos de Uso | 2014-03-13 → 2014-03-17 (+4d) | 2014-03-17 → 2014-03-20 (+3d) |  | resources none → Fernando Raviola; Lucas Ferrero; Oscar Salomón; baseline start none → 2014-03-17; baseline finish none → 2014-03-20 |
| 72 | Refinación de Diagrama de Clases | 2014-03-17 → 2014-03-21 (+4d) | 2014-03-18 → 2014-03-24 (+6d) |  | resources none → Fernando Raviola; Lucas Ferrero; Oscar Salomón; baseline start none → 2014-03-21; baseline finish none → 2014-03-24 |

| ID | Task | Start | Finish | Duration | Other |
| --- | --- | --- | --- | --- | --- |
| 73 | Refinación del Modelo de Datos | 2014-03-20 → 2014-03-24 (+4d) | 2014-03-21 → 2014-03-25 (+4d) |  | resources none → Fernando Raviola; Lucas Ferrero; Oscar Salomón; baseline start none → 2014-03-24; baseline finish none → 2014-03-25 |
| 74 | Descripción de casos de uso mas importantes | 2014-03-21 → 2014-03-25 (+4d) | 2014-03-24 → 2014-03-28 (+4d) |  | resources none → Fernando Raviola; Lucas Ferrero; Oscar Salomón; baseline start none → 2014-03-25; baseline finish none → 2014-03-28 |
| 75 | **Implementación** | 2014-03-25 → 2014-03-28 (+3d) | 2014-03-28 → 2014-04-03 (+6d) |  | baseline start none → 2014-03-28; baseline finish none → 2014-04-03 |
| 76 | Definición de interfaces de comunicación entre plataformas | 2014-03-25 → 2014-03-28 (+3d) | 2014-03-28 → 2014-04-03 (+6d) |  | resources none → Fernando Raviola; Lucas Ferrero; Oscar Salomón; baseline start none → 2014-03-28; baseline finish none → 2014-04-03 |
| 77 | **Gestión del Proyecto** | 2014-03-28 → 2014-04-03 (+6d) | 2014-03-31 → 2014-04-07 (+7d) | 0.25d → 0.75d | baseline start none → 2014-04-03; baseline finish none → 2014-04-07 |
| 78 | Actualización de planes de prevención y contigencia para nuevos Riesgos | 2014-03-28 → 2014-04-03 (+6d) | 2014-03-31 → 2014-04-04 (+4d) |  | resources none → Fernando Raviola; Lucas Ferrero; Oscar Salomón; baseline start none → 2014-04-03; baseline finish none → 2014-04-04 |
| 80 | **Gestión de Configuración** | 2014-03-31 → 2014-04-07 (+7d) | 2014-03-31 → 2014-04-07 (+7d) |  | baseline start none → 2014-04-07; baseline finish none → 2014-04-07 |
| 81 | Revisión de versionado de documentos modificados | 2014-03-31 → 2014-04-07 (+7d) | 2014-03-31 → 2014-04-07 (+7d) |  | resources none → Fernando Raviola; Lucas Ferrero; Oscar Salomón; baseline start none → 2014-04-07; baseline finish none → 2014-04-07 |
| 82 | Arquitectura del ciclo de vida | 2014-03-31 → 2014-04-07 (+7d) | 2014-03-31 → 2014-04-07 (+7d) |  | baseline start none → 2014-04-07; baseline finish none → 2014-04-07 |
| 83 | **CONSTRUCCIÓN** | 2014-03-31 → 2014-04-07 (+7d) | 2014-09-01 → 2014-09-19 (+18d) | 34.25d → 37.25d | baseline start none → 2014-04-07; baseline finish none → 2014-09-19 |
| 84 | **Iteración C1** | 2014-03-31 → 2014-04-07 (+7d) | 2014-04-15 → 2014-04-25 (+10d) | 3.5d → 4d | baseline start none → 2014-04-07; baseline finish none → 2014-04-25 |
| 85 | **Análisis/Diseño** | 2014-03-31 → 2014-04-07 (+7d) | 2014-04-04 → 2014-04-11 (+7d) |  | baseline start none → 2014-04-07; baseline finish none → 2014-04-11 |
| 86 | Refinación de Diagramas de Actividad | 2014-03-31 → 2014-04-07 (+7d) | 2014-04-01 → 2014-04-08 (+7d) |  | resources none → Fernando Raviola; Lucas Ferrero; Oscar Salomón; baseline start none → 2014-04-07; baseline finish none → 2014-04-08 |
| 87 | Refinación de Diagramas de Secuencia | 2014-04-03 → 2014-04-08 (+5d) | 2014-04-04 → 2014-04-11 (+7d) |  | resources none → Fernando Raviola; Lucas Ferrero; Oscar Salomón; baseline start none → 2014-04-08; baseline finish none → 2014-04-11 |
| 88 | **Implementación** | 2014-04-04 → 2014-04-11 (+7d) | 2014-04-14 → 2014-04-18 (+4d) |  | baseline start none → 2014-04-11; baseline finish none → 2014-04-18 |
| 89 | Construcción de Base de Datos | 2014-04-04 → 2014-04-11 (+7d) | 2014-04-08 → 2014-04-15 (+7d) |  | resources none → Fernando Raviola; Lucas Ferrero; Oscar Salomón; baseline start none → 2014-04-11; baseline finish none → 2014-04-15 |
| 90 | Definición de Interfaz de Usuario | 2014-04-08 → 2014-04-15 (+7d) | 2014-04-14 → 2014-04-18 (+4d) |  | resources none → Fernando Raviola; Lucas Ferrero; Oscar Salomón; baseline start none → 2014-04-15; baseline finish none → 2014-04-18 |
| 91 | **Gestión del Proyecto** | 2014-04-14 → 2014-04-21 (+7d) | 2014-04-15 → 2014-04-24 (+9d) | 0.5d → 1d | baseline start none → 2014-04-21; baseline finish none → 2014-04-24 |
| 92 | Actualización de Riesgos | 2014-04-14 → 2014-04-21 (+7d) | 2014-04-14 → 2014-04-21 (+7d) |  | resources none → Fernando Raviola; Lucas Ferrero; Oscar Salomón; baseline start none → 2014-04-21; baseline finish none → 2014-04-21 |
| 93 | Revisión de planificacion (posible replanificación) | 2014-04-14 → 2014-04-21 (+7d) | 2014-04-15 → 2014-04-21 (+6d) |  | resources none → Fernando Raviola; Lucas Ferrero; Oscar Salomón; baseline start none → 2014-04-21; baseline finish none → 2014-04-21 |
| 95 | **Gestión de Configuración** | 2014-04-15 → 2014-04-24 (+9d) | 2014-04-15 → 2014-04-25 (+10d) |  | baseline start none → 2014-04-24; baseline finish none → 2014-04-25 |
| 96 | Versionado de prototipos | 2014-04-15 → 2014-04-24 (+9d) | 2014-04-15 → 2014-04-25 (+10d) |  | resources none → Fernando Raviola; baseline start none → 2014-04-24; baseline finish none → 2014-04-25 |
| 97 | Revisión de versionado de documentos modificados | 2014-04-15 → 2014-04-24 (+9d) | 2014-04-15 → 2014-04-25 (+10d) |  | resources none → Lucas Ferrero; Oscar Salomón; baseline start none → 2014-04-24; baseline finish none → 2014-04-25 |
| 98 | **Iteración C2** | 2014-04-15 → 2014-04-25 (+10d) | 2014-05-12 → 2014-05-23 (+11d) | 5.75d → 6.25d | baseline start none → 2014-04-25; baseline finish none → 2014-05-23 |
| 99 | **Análisis/Diseño** | 2014-04-15 → 2014-04-25 (+10d) | 2014-04-22 → 2014-05-02 (+10d) |  | baseline start none → 2014-04-25; baseline finish none → 2014-05-02 |
| 100 | Definición inicial del Modelo de componentes | 2014-04-15 → 2014-04-25 (+10d) | 2014-04-21 → 2014-04-29 (+8d) |  | resources none → Fernando Raviola; Lucas Ferrero; Oscar Salomón; baseline start none → 2014-04-25; baseline finish none → 2014-04-29 |
| 101 | Refinación de Diagramas de clases (agregado de operaciones) | 2014-04-21 → 2014-04-29 (+8d) | 2014-04-22 → 2014-05-02 (+10d) |  | resources none → Fernando Raviola; Lucas Ferrero; Oscar Salomón; baseline start none → 2014-04-29; baseline finish none → 2014-05-02 |
| 102 | **Implementación** | 2014-04-22 → 2014-05-02 (+10d) | 2014-05-06 → 2014-05-16 (+10d) |  | baseline start none → 2014-05-02; baseline finish none → 2014-05-16 |
| 103 | Codificación de Interfaz de usuario (FrontEnd) | 2014-04-22 → 2014-05-02 (+10d) | 2014-05-06 → 2014-05-16 (+10d) |  | resources none → Oscar Salomón; baseline start none → 2014-05-02; baseline finish none → 2014-05-16 |
| 104 | Codificación de Interfaz de usuario (BackEnd) | 2014-04-22 → 2014-05-02 (+10d) | 2014-05-05 → 2014-05-13 (+8d) |  | resources none → Lucas Ferrero; baseline start none → 2014-05-02; baseline finish none → 2014-05-13 |
| 105 | Codificación de Interfaz de usuario (Android) | 2014-04-22 → 2014-05-02 (+10d) | 2014-05-05 → 2014-05-15 (+10d) |  | resources none → Fernando Raviola; baseline start none → 2014-05-02; baseline finish none → 2014-05-15 |
| 106 | **Gestión del Proyecto** | 2014-05-06 → 2014-05-16 (+10d) | 2014-05-09 → 2014-05-22 (+13d) | 0.75d → 1.25d | baseline start none → 2014-05-16; baseline finish none → 2014-05-22 |
| 107 | Actualización de Riesgos | 2014-05-06 → 2014-05-16 (+10d) | 2014-05-09 → 2014-05-16 (+7d) |  | resources none → Fernando Raviola; Lucas Ferrero; Oscar Salomón; baseline start none → 2014-05-16; baseline finish none → 2014-05-16 |
| 108 | Revisión de planificacion (posible replanificación) | 2014-05-09 → 2014-05-19 (+10d) | 2014-05-09 → 2014-05-19 (+10d) |  | resources none → Fernando Raviola; Lucas Ferrero; Oscar Salomón; baseline start none → 2014-05-19; baseline finish none → 2014-05-19 |
| 110 | **Gestión de Configuración** | 2014-05-09 → 2014-05-22 (+13d) | 2014-05-12 → 2014-05-23 (+11d) |  | baseline start none → 2014-05-22; baseline finish none → 2014-05-23 |
| 111 | Versionado de interfaz de usuario | 2014-05-09 → 2014-05-22 (+13d) | 2014-05-12 → 2014-05-22 (+10d) |  | resources none → Fernando Raviola; Lucas Ferrero; Oscar Salomón; baseline start none → 2014-05-22; baseline finish none → 2014-05-22 |
| 112 | Revisión de versionado de documentos modificados | 2014-05-12 → 2014-05-22 (+10d) | 2014-05-12 → 2014-05-23 (+11d) |  | resources none → Fernando Raviola; Lucas Ferrero; Oscar Salomón; baseline start none → 2014-05-22; baseline finish none → 2014-05-23 |
| 113 | **Iteración C3** | 2014-05-12 → 2014-05-23 (+11d) | 2014-05-30 → 2014-06-13 (+14d) | 4.38d → 4.88d | baseline start none → 2014-05-23; baseline finish none → 2014-06-13 |
| 114 | **Análisis/Diseño** | 2014-05-12 → 2014-05-23 (+11d) | 2014-05-13 → 2014-05-23 (+10d) |  | baseline start none → 2014-05-23; baseline finish none → 2014-05-23 |
| 115 | Refinación del Modelo de componentes | 2014-05-12 → 2014-05-23 (+11d) | 2014-05-13 → 2014-05-23 (+10d) |  | resources none → Fernando Raviola; Lucas Ferrero; Oscar Salomón; baseline start none → 2014-05-23; baseline finish none → 2014-05-23 |
| 116 | **Implementación** | 2014-05-13 → 2014-05-23 (+10d) | 2014-05-29 → 2014-06-09 (+11d) |  | baseline start none → 2014-05-23; baseline finish none → 2014-06-09 |
| 117 | Codificacion de logeo de usuario (FrontEnd) | 2014-05-13 → 2014-05-23 (+10d) | 2014-05-26 → 2014-06-06 (+11d) |  | resources none → Oscar Salomón; baseline start none → 2014-05-23; baseline finish none → 2014-06-06 |
| 118 | Codificación de seguridad [Roles y Usuario] (BackEnd) | 2014-05-13 → 2014-05-23 (+10d) | 2014-05-26 → 2014-06-06 (+11d) |  | resources none → Lucas Ferrero; baseline start none → 2014-05-23; baseline finish none → 2014-06-06 |
| 119 | Codificación de Local Storage (Android) | 2014-05-13 → 2014-05-23 (+10d) | 2014-05-29 → 2014-06-09 (+11d) |  | resources none → Fernando Raviola; baseline start none → 2014-05-23; baseline finish none → 2014-06-09 |
| 120 | **Gestión del Proyecto** | 2014-05-29 → 2014-06-09 (+11d) | 2014-05-30 → 2014-06-13 (+14d) | 0.38d → 0.88d | baseline start none → 2014-06-09; baseline finish none → 2014-06-13 |
| 121 | Actualización de Riesgos | 2014-05-29 → 2014-06-09 (+11d) | 2014-05-30 → 2014-06-10 (+11d) |  | resources none → Lucas Ferrero; baseline start none → 2014-06-09; baseline finish none → 2014-06-10 |
| 122 | Revisión de planificacion (posible replanificación) | 2014-05-29 → 2014-06-09 (+11d) | 2014-05-30 → 2014-06-10 (+11d) |  | resources none → Fernando Raviola; Oscar Salomón; baseline start none → 2014-06-09; baseline finish none → 2014-06-10 |
| 124 | **Gestión de Configuración** | 2014-05-30 → 2014-06-13 (+14d) | 2014-05-30 → 2014-06-13 (+14d) |  | baseline start none → 2014-06-13; baseline finish none → 2014-06-13 |
| 125 | Versionado de todos los proyectos | 2014-05-30 → 2014-06-13 (+14d) | 2014-05-30 → 2014-06-13 (+14d) |  | resources none → Oscar Salomón; baseline start none → 2014-06-13; baseline finish none → 2014-06-13 |
| 126 | Revisión de versionado de documentos modificados | 2014-05-30 → 2014-06-13 (+14d) | 2014-05-30 → 2014-06-13 (+14d) |  | resources none → Fernando Raviola; Lucas Ferrero; baseline start none → 2014-06-13; baseline finish none → 2014-06-13 |
| 127 | **Iteración C4** | 2014-05-30 → 2014-06-13 (+14d) | 2014-06-24 → 2014-07-11 (+17d) | 5.62d → 6.12d | baseline start none → 2014-06-13; baseline finish none → 2014-07-11 |
| 128 | **Análisis/Diseño** | 2014-05-30 → 2014-06-13 (+14d) | 2014-06-02 → 2014-06-16 (+14d) |  | baseline start none → 2014-06-13; baseline finish none → 2014-06-16 |
| 129 | Refinación del Modelo de Datos | 2014-05-30 → 2014-06-13 (+14d) | 2014-06-02 → 2014-06-16 (+14d) |  | resources none → Fernando Raviola; Lucas Ferrero; Oscar Salomón; baseline start none → 2014-06-13; baseline finish none → 2014-06-16 |
| 130 | **Implementación** | 2014-06-02 → 2014-06-16 (+14d) | 2014-06-23 → 2014-07-07 (+14d) |  | baseline start none → 2014-06-16; baseline finish none → 2014-07-07 |
| 131 | Codificación de Gestión de reservas online (FrontEnd) | 2014-06-02 → 2014-06-16 (+14d) | 2014-06-23 → 2014-07-07 (+14d) |  | resources none → Oscar Salomón; baseline start none → 2014-06-16; baseline finish none → 2014-07-07 |
| 132 | Codificación de ABM principales (BackEnd) | 2014-06-02 → 2014-06-16 (+14d) | 2014-06-23 → 2014-07-07 (+14d) |  | resources none → Lucas Ferrero; baseline start none → 2014-06-16; baseline finish none → 2014-07-07 |
| 133 | Codificación de ABM principales (Android) | 2014-06-02 → 2014-06-16 (+14d) | 2014-06-20 → 2014-07-04 (+14d) |  | resources none → Fernando Raviola; baseline start none → 2014-06-16; baseline finish none → 2014-07-04 |
| 134 | **Gestión del Proyecto** | 2014-06-23 → 2014-07-07 (+14d) | 2014-06-24 → 2014-07-10 (+16d) | 0.25d → 0.75d | baseline start none → 2014-07-07; baseline finish none → 2014-07-10 |
| 135 | Actualización de Riesgos | 2014-06-23 → 2014-07-07 (+14d) | 2014-06-24 → 2014-07-08 (+14d) |  | resources none → Fernando Raviola; baseline start none → 2014-07-07; baseline finish none → 2014-07-08 |
| 136 | Revisión de planificacion (posible replanificación) | 2014-06-23 → 2014-07-07 (+14d) | 2014-06-24 → 2014-07-07 (+13d) |  | resources none → Lucas Ferrero; Oscar Salomón; baseline start none → 2014-07-07; baseline finish none → 2014-07-07 |
| 138 | **Gestión de Configuración** | 2014-06-24 → 2014-07-11 (+17d) | 2014-06-24 → 2014-07-11 (+17d) |  | baseline start none → 2014-07-11; baseline finish none → 2014-07-11 |
| 139 | Versionado de todos los proyectos | 2014-06-24 → 2014-07-11 (+17d) | 2014-06-24 → 2014-07-11 (+17d) |  | resources none → Lucas Ferrero; baseline start none → 2014-07-11; baseline finish none → 2014-07-11 |
| 140 | Revisión de versionado de documentos modificados | 2014-06-24 → 2014-07-11 (+17d) | 2014-06-24 → 2014-07-11 (+17d) |  | resources none → Fernando Raviola; Oscar Salomón; baseline start none → 2014-07-11; baseline finish none → 2014-07-11 |
| 141 | **Iteración C5** | 2014-06-26 → 2014-07-11 (+15d) | 2014-07-29 → 2014-08-15 (+17d) | 7.62d → 8.12d | baseline start none → 2014-07-11; baseline finish none → 2014-08-15 |
| 142 | **Análisis/Diseño** | 2014-06-26 → 2014-07-11 (+15d) | 2014-06-27 → 2014-07-14 (+17d) |  | baseline start none → 2014-07-11; baseline finish none → 2014-07-14 |
| 143 | Revisión de Diagramas y Modelos de Análisis/Diseño | 2014-06-26 → 2014-07-11 (+15d) | 2014-06-27 → 2014-07-14 (+17d) |  | resources none → Fernando Raviola; Lucas Ferrero; Oscar Salomón; baseline start none → 2014-07-11; baseline finish none → 2014-07-14 |
| 144 | **Implementación** | 2014-06-30 → 2014-07-14 (+14d) | 2014-07-22 → 2014-08-07 (+16d) |  | baseline start none → 2014-07-14; baseline finish none → 2014-08-07 |
| 145 | Codificación de Calculos de tiempos de espera (FrontEnd) | 2014-06-30 → 2014-07-14 (+14d) | 2014-07-22 → 2014-08-07 (+16d) |  | resources none → Oscar Salomón; baseline start none → 2014-07-14; baseline finish none → 2014-08-07 |
| 146 | Codificación de Funciones básicas (BackEnd) | 2014-06-30 → 2014-07-14 (+14d) | 2014-07-21 → 2014-08-05 (+15d) |  | resources none → Lucas Ferrero; baseline start none → 2014-07-14; baseline finish none → 2014-08-05 |
| 147 | Codificación de visualizador de ordenes (Android) | 2014-06-30 → 2014-07-14 (+14d) | 2014-07-18 → 2014-08-04 (+17d) |  | resources none → Fernando Raviola; baseline start none → 2014-07-14; baseline finish none → 2014-08-04 |

| ID | Task | Start | Finish | Duration | Other |
| --- | --- | --- | --- | --- | --- |
| 148 | **Pruebas** | 2014-07-22 → 2014-08-07 (+16d) | 2014-07-28 → 2014-08-12 (+15d) |  | baseline start none → 2014-08-07; baseline finish none → 2014-08-12 |
| 149 | Pruebas de Funcionalidad (para las 3 aplicaciones) | 2014-07-22 → 2014-08-07 (+16d) | 2014-07-28 → 2014-08-12 (+15d) |  | resources none → Fernando Raviola; Lucas Ferrero; Oscar Salomón; baseline start none → 2014-08-07; baseline finish none → 2014-08-12 |
| 150 | **Gestión del Proyecto** | 2014-07-28 → 2014-08-12 (+15d) | 2014-07-28 → 2014-08-15 (+18d) | 0.25d → 0.75d | baseline start none → 2014-08-12; baseline finish none → 2014-08-15 |
| 151 | Actualización de Riesgos | 2014-07-28 → 2014-08-12 (+15d) | 2014-07-28 → 2014-08-14 (+17d) |  | resources none → Oscar Salomón; baseline start none → 2014-08-12; baseline finish none → 2014-08-14 |
| 152 | Revisión de planificacion (posible replanificación) | 2014-07-28 → 2014-08-12 (+15d) | 2014-07-28 → 2014-08-12 (+15d) |  | resources none → Fernando Raviola; Lucas Ferrero; baseline start none → 2014-08-12; baseline finish none → 2014-08-12 |
| 154 | **Gestión de Configuración** | 2014-07-29 → 2014-08-15 (+17d) | 2014-07-29 → 2014-08-15 (+17d) |  | baseline start none → 2014-08-15; baseline finish none → 2014-08-15 |
| 155 | Versionado de todos los proyectos | 2014-07-29 → 2014-08-15 (+17d) | 2014-07-29 → 2014-08-15 (+17d) |  | resources none → Fernando Raviola; baseline start none → 2014-08-15; baseline finish none → 2014-08-15 |
| 156 | Revisión de versionado de documentos modificados | 2014-07-29 → 2014-08-15 (+17d) | 2014-07-29 → 2014-08-15 (+17d) |  | resources none → Lucas Ferrero; Oscar Salomón; baseline start none → 2014-08-15; baseline finish none → 2014-08-15 |
| 157 | **Iteración C6** | 2014-07-29 → 2014-08-15 (+17d) | 2014-09-01 → 2014-09-19 (+18d) | 7.38d → 7.88d | baseline start none → 2014-08-15; baseline finish none → 2014-09-19 |
| 158 | **Análisis/Diseño** | 2014-07-29 → 2014-08-15 (+17d) | 2014-08-04 → 2014-08-21 (+17d) |  | baseline start none → 2014-08-15; baseline finish none → 2014-08-21 |
| 159 | Revisión de Diagramas y Modelos de Análisis/Diseño | 2014-07-29 → 2014-08-15 (+17d) | 2014-08-04 → 2014-08-21 (+17d) |  | resources none → Fernando Raviola; Lucas Ferrero; Oscar Salomón; baseline start none → 2014-08-15; baseline finish none → 2014-08-21 |
| 160 | **Implementación** | 2014-08-04 → 2014-08-21 (+17d) | 2014-08-25 → 2014-09-11 (+17d) |  | baseline start none → 2014-08-21; baseline finish none → 2014-09-11 |
| 161 | Codificación de Calculos de tiempos de espera (FrontEnd) | 2014-08-04 → 2014-08-21 (+17d) | 2014-08-25 → 2014-09-11 (+17d) |  | resources none → Oscar Salomón; baseline start none → 2014-08-21; baseline finish none → 2014-09-11 |
| 162 | Codificación de visualizador de Ordenes (BackEnd) | 2014-08-04 → 2014-08-21 (+17d) | 2014-08-22 → 2014-09-09 (+18d) |  | resources none → Lucas Ferrero; baseline start none → 2014-08-21; baseline finish none → 2014-09-09 |
| 163 | Codificación de personalización gráfica (Android) | 2014-08-04 → 2014-08-21 (+17d) | 2014-08-25 → 2014-09-11 (+17d) |  | resources none → Fernando Raviola; baseline start none → 2014-08-21; baseline finish none → 2014-09-11 |
| 164 | **Pruebas** | 2014-08-25 → 2014-09-11 (+17d) | 2014-08-29 → 2014-09-16 (+18d) |  | baseline start none → 2014-09-11; baseline finish none → 2014-09-16 |
| 165 | Pruebas de comunicación de interfaces y pruebas de funcionalidad | 2014-08-25 → 2014-09-11 (+17d) | 2014-08-29 → 2014-09-16 (+18d) |  | resources none → Fernando Raviola; Lucas Ferrero; Oscar Salomón; baseline start none → 2014-09-11; baseline finish none → 2014-09-16 |
| 166 | **Gestión del Proyecto** | 2014-08-29 → 2014-09-16 (+18d) | 2014-08-29 → 2014-09-19 (+21d) | 0.12d → 0.62d | baseline start none → 2014-09-16; baseline finish none → 2014-09-19 |
| 167 | Actualización de Riesgos | 2014-08-29 → 2014-09-16 (+18d) | 2014-08-29 → 2014-09-16 (+18d) |  | resources none → Fernando Raviola; Oscar Salomón; baseline start none → 2014-09-16; baseline finish none → 2014-09-16 |
| 168 | Revisión de planificacion (posible replanificación) | 2014-08-29 → 2014-09-16 (+18d) | 2014-08-29 → 2014-09-16 (+18d) |  | resources none → Lucas Ferrero; baseline start none → 2014-09-16; baseline finish none → 2014-09-16 |
| 170 | **Gestión de Configuración** | 2014-08-29 → 2014-09-19 (+21d) | 2014-09-01 → 2014-09-19 (+18d) |  | baseline start none → 2014-09-19; baseline finish none → 2014-09-19 |
| 171 | Versionado de todos los proyectos | 2014-08-29 → 2014-09-19 (+21d) | 2014-09-01 → 2014-09-19 (+18d) |  | resources none → Oscar Salomón; baseline start none → 2014-09-19; baseline finish none → 2014-09-19 |
| 172 | Revisión de versionado de documentos modificados | 2014-08-29 → 2014-09-19 (+21d) | 2014-09-01 → 2014-09-19 (+18d) |  | resources none → Fernando Raviola; Lucas Ferrero; baseline start none → 2014-09-19; baseline finish none → 2014-09-19 |
| 173 | Capacidad Operacional Inicial | 2014-09-01 → 2014-09-19 (+18d) | 2014-09-01 → 2014-09-19 (+18d) |  | baseline start none → 2014-09-19; baseline finish none → 2014-09-19 |
| 174 | **TRANSICIÓN** | 2014-09-01 → 2014-09-22 (+21d) | 2014-10-06 → 2014-10-28 (+22d) | 7.88d → 8.38d | was named Transición; baseline start none → 2014-09-22; baseline finish none → 2014-10-28 |
| 175 | **Iteración T1** | 2014-09-01 → 2014-09-22 (+21d) | 2014-10-06 → 2014-10-28 (+22d) | 7.88d → 8.38d | baseline start none → 2014-09-22; baseline finish none → 2014-10-28 |
| 176 | **Implementación** | 2014-09-01 → 2014-09-22 (+21d) | 2014-09-12 → 2014-10-02 (+20d) |  | baseline start none → 2014-09-22; baseline finish none → 2014-10-02 |
| 177 | Elaboracion de documentación para usuarios y videos tutoriales | 2014-09-01 → 2014-09-22 (+21d) | 2014-09-12 → 2014-10-02 (+20d) |  | resources none → Fernando Raviola; Lucas Ferrero; Oscar Salomón; baseline start none → 2014-09-22; baseline finish none → 2014-10-02 |
| 178 | **Despliegue** | 2014-09-12 → 2014-10-02 (+20d) | 2014-09-25 → 2014-10-14 (+19d) |  | baseline start none → 2014-10-02; baseline finish none → 2014-10-14 |
| 179 | Modelo de despliegue | 2014-09-12 → 2014-10-02 (+20d) | 2014-09-16 → 2014-10-07 (+21d) |  | resources none → Fernando Raviola; Lucas Ferrero; Oscar Salomón; baseline start none → 2014-10-02; baseline finish none → 2014-10-07 |
| 180 | Integración y puesta a punto del sistema | 2014-09-18 → 2014-10-07 (+19d) | 2014-09-25 → 2014-10-14 (+19d) |  | resources none → Fernando Raviola; Lucas Ferrero; Oscar Salomón; baseline start none → 2014-10-07; baseline finish none → 2014-10-14 |
| 181 | **Gestión del Proyecto** | 2014-09-25 → 2014-10-16 (+21d) | 2014-10-03 → 2014-10-27 (+24d) | 2.12d → 2.62d | baseline start none → 2014-10-16; baseline finish none → 2014-10-27 |
| 182 | Actualización de Riesgos | 2014-09-25 → 2014-10-16 (+21d) | 2014-09-26 → 2014-10-16 (+20d) |  | resources none → Fernando Raviola; Lucas Ferrero; Oscar Salomón; baseline start none → 2014-10-16; baseline finish none → 2014-10-16 |
| 183 | Revisión de planificacion (posible replanificación) | 2014-09-26 → 2014-10-16 (+20d) | 2014-09-26 → 2014-10-16 (+20d) |  | resources none → Fernando Raviola; Lucas Ferrero; Oscar Salomón; baseline start none → 2014-10-16; baseline finish none → 2014-10-16 |
| 184 | Análisis de resultados del proyecto | 2014-09-26 → 2014-10-17 (+21d) | 2014-10-03 → 2014-10-24 (+21d) |  | resources none → Fernando Raviola; Lucas Ferrero; Oscar Salomón; baseline start none → 2014-10-17; baseline finish none → 2014-10-24 |
| 186 | **Gestión de Configuración** | 2014-10-06 → 2014-10-27 (+21d) | 2014-10-06 → 2014-10-28 (+22d) |  | baseline start none → 2014-10-27; baseline finish none → 2014-10-28 |
| 187 | Versionado de todos los proyectos | 2014-10-06 → 2014-10-27 (+21d) | 2014-10-06 → 2014-10-28 (+22d) |  | resources none → Fernando Raviola; baseline start none → 2014-10-27; baseline finish none → 2014-10-28 |
| 188 | Revisión de versionado de documentos modificados | 2014-10-06 → 2014-10-27 (+21d) | 2014-10-06 → 2014-10-28 (+22d) |  | resources none → Lucas Ferrero; Oscar Salomón; baseline start none → 2014-10-27; baseline finish none → 2014-10-28 |
| 189 | Lanzamiento de producto | 2014-10-06 → 2014-10-28 (+22d) | 2014-10-06 → 2014-10-28 (+22d) |  | baseline start none → 2014-10-28; baseline finish none → 2014-10-28 |
| 190 | Fin de Proyecto | 2014-10-06 → 2014-10-28 (+22d) | 2014-10-06 → 2014-10-28 (+22d) |  | baseline start none → 2014-10-28; baseline finish none → 2014-10-28 |

## Version 3 (saved 2013-12-11, file Planificación RestApp(HASTA PRIMER INFORME).mpp)

Note of the change: Hasta primer informe

Last finish 2014-10-28 → 2014-10-17 (-11d). Complete tasks 0 → 24.

Added:

| ID | Task | Duration | Start | Finish | Predecessors |
| --- | --- | --- | --- | --- | --- |
| 19 | Presentación Inicial | 4h | 2013-09-16 A | 2013-09-17 A | 18 |

Removed: 42 Creacion de linea base de Planificación

Changed:

| ID | Task | Start | Finish | Duration | Complete | Total float | Predecessors |
| --- | --- | --- | --- | --- | --- | --- | --- |
| 1 | **RestApp** | 2013-07-29 A | 2014-10-28 → 2014-10-17 (-11d) | 78.75d → 76.5d | 0% → 14% |  |  |
| 2 | **INICIO** | 2013-07-29 A | 2013-10-04 → 2013-09-24 A (-10d) | 12.38d → 10.38d | 0% → 100% | 0d → none |  |
| 3 | **Iteración I1** | 2013-07-29 A | 2013-10-04 → 2013-09-24 A (-10d) | 12.38d → 10.38d | 0% → 100% | 0d → none |  |
| 4 | **Modelo de Negocio** | 2013-07-29 A | 2013-08-05 → 2013-08-02 A (-3d) | 1.88d → 1.12d | 0% → 100% | 0d → none |  |
| 5 | Analisis del dominio del problema | 2013-07-29 A | 2013-07-30 → 2013-07-29 A (-1d) | 6h → 4h | 0% → 100% | 0d → none |  |
| 6 | Confección de entrevista | 2013-07-30 A | 2013-08-01 → 2013-07-30 A (-2d) |  | 0% → 100% | 0d → none |  |
| 7 | Realización de entrevista | 2013-08-01 → 2013-07-30 A (-2d) | 2013-08-02 → 2013-08-01 A (-1d) | 3h → 1h | 0% → 100% | 0d → none |  |
| 8 | Analisis de Entrevista | 2013-08-02 → 2013-08-01 A (-1d) | 2013-08-05 → 2013-08-02 A (-3d) | 4h → 2h | 0% → 100% | 0d → none |  |
| 9 | **Requerimientos** | 2013-08-05 → 2013-08-02 A (-3d) | 2013-08-16 → 2013-08-09 A (-7d) | 2.75d → 1.75d | 0% → 100% | 0d → none |  |
| 10 | Definición de caracteristicas y limitaciones | 2013-08-05 → 2013-08-02 A (-3d) | 2013-08-09 → 2013-08-05 A (-4d) | 7h → 6h | 0% → 100% | 0d → none |  |
| 11 | Definición de Requerimientos Funcionales y No Funcionales | 2013-08-09 → 2013-08-05 A (-4d) | 2013-08-16 → 2013-08-09 A (-7d) | 15h → 8h | 0% → 100% | 0d → none |  |
| 12 | **Análisis/Diseño** | 2013-08-16 → 2013-08-09 A (-7d) | 2013-08-27 → 2013-08-12 A (-15d) | 1d → 0.75d | 0% → 100% | 0d → none |  |
| 13 | Definición inicial del Modelo de Casos de Usos | 2013-08-16 → 2013-08-09 A (-7d) | 2013-08-27 → 2013-08-12 A (-15d) | 8h → 6h | 0% → 100% | 0d → none |  |
| 14 | **Gestión del Proyecto** | 2013-08-27 → 2013-08-13 A (-14d) | 2013-09-26 → 2013-09-17 A (-9d) | 5.12d → 5.25d | 0% → 100% | 0d → none |  |
| 15 | Estudio de prefactibilidad | 2013-08-27 → 2013-08-13 A (-14d) | 2013-09-02 → 2013-08-16 A (-17d) |  | 0% → 100% | 0d → none |  |
| 16 | Planificación | 2013-09-02 → 2013-08-16 A (-17d) | 2013-09-16 → 2013-09-02 A (-14d) | 15h → 18h | 0% → 100% | 0d → none |  |
| 17 | Gestión de riesgos (definición) | 2013-09-16 → 2013-09-02 A (-14d) | 2013-09-20 → 2013-09-05 A (-15d) | 8h → 6h | 0% → 100% | 0d → none |  |
| 18 | Gestión de configuración (definición) | 2013-09-20 → 2013-09-06 A (-14d) | 2013-09-26 → 2013-09-16 A (-10d) | 10h → 6h | 0% → 100% | 0d → none |  |
| 20 | **Gestión de configuración** | 2013-09-27 → 2013-09-17 A (-10d) | 2013-09-30 → 2013-09-23 A (-7d) |  | 0% → 100% | 0d → none |  |
| 21 | Preparación del ambiente de versionado | 2013-09-27 → 2013-09-17 A (-10d) | 2013-09-30 → 2013-09-23 A (-7d) |  | 0% → 100% | 0d → none |  |
| 22 | **Ambiente** | 2013-10-01 → 2013-09-23 A (-8d) | 2013-10-04 → 2013-09-24 A (-10d) | 0.62d → 0.5d | 0% → 100% | 0d → none |  |
| 23 | Identificación y evaluación de herramientas | 2013-10-01 → 2013-09-23 A (-8d) | 2013-10-04 → 2013-09-24 A (-10d) | 5h → 4h | 0% → 100% | 0d → none |  |
| 24 | Objetivos del ciclo de vida | 2013-10-04 → 2013-09-24 A (-10d) | 2013-10-04 → 2013-09-24 A (-10d) |  | 0% → 100% | 0d → none |  |
| 25 | **ELABORACIÓN** | 2013-10-04 → 2013-09-24 A (-10d) | 2014-04-07 → 2014-03-28 (-10d) | 20.75d → 20.5d | 0% → 32% |  |  |
| 26 | **Iteración E1** | 2013-10-04 → 2013-09-24 A (-10d) | 2013-11-18 → 2013-11-07 (-11d) | 7.88d → 7.62d | 0% → 87% |  |  |
| 27 | **Modelo de Negocio** | 2013-10-04 → 2013-09-24 A (-10d) | 2013-10-08 → 2013-09-27 A (-11d) | 1.25d → 0.88d | 0% → 100% | 0d → none |  |
| 28 | Entendimiento del Modelo de Negocio | 2013-10-04 → 2013-09-24 A (-10d) | 2013-10-08 → 2013-09-27 A (-11d) | 10h → 7h | 0% → 100% | 0d → none |  |
| 29 | **Requerimientos** | 2013-10-10 → 2013-09-30 A (-10d) | 2013-10-18 → 2013-10-04 A (-14d) | 1.38d → 1.5d | 0% → 100% | 0d → none |  |
| 30 | Definicón de nuevos requerimientos | 2013-10-10 → 2013-09-30 A (-10d) | 2013-10-11 → 2013-09-30 A (-11d) | 4h → 2h | 0% → 100% | 0d → none |  |
| 31 | Documentación de requerimientos según estandar | 2013-10-11 → 2013-09-30 A (-11d) | 2013-10-15 → 2013-10-03 A (-12d) | 3h → 5h | 0% → 100% | 0d → none |  |
| 32 | Jerarquización de requerimientos | 2013-10-15 → 2013-10-03 A (-12d) | 2013-10-18 → 2013-10-04 A (-14d) | 4h → 5h | 0% → 100% | 0d → none |  |
| 33 | **Análisis/Diseño** | 2013-10-18 → 2013-10-04 A (-14d) | 2013-11-04 → 2013-10-11 A (-24d) | 2.25d → 1.5d | 0% → 100% | 0d → none |  |
| 34 | Refinación de Modelo de Casos de Usos | 2013-10-18 → 2013-10-04 A (-14d) | 2013-10-18 → 2013-10-07 A (-11d) | 3h → 2h | 0% → 100% | 0d → none |  |
| 35 | Definición preliminar de Diagrama de clases | 2013-10-18 → 2013-10-07 A (-11d) | 2013-11-04 → 2013-10-11 A (-24d) | 15h → 10h | 0% → 100% | 0d → none |  |
| 36 | **Implementación** | 2013-11-04 → 2013-10-11 A (-24d) | 2013-11-08 → 2013-11-01 A (-7d) | 1d → 2.5d | 0% → 100% | 0d → none |  |
| 37 | Desarrollo prototipos independientes de prueba | 2013-11-04 → 2013-10-11 A (-24d) | 2013-11-08 → 2013-11-01 A (-7d) | 8h → 20h | 0% → 100% | 0d → none |  |
| 38 | **Gestión del Proyecto** | 2013-11-08 → 2013-11-01 A (-7d) | 2013-11-14 → 2013-11-04 (-10d) | 1.38d → 0.75d | 0% → 33% |  |  |
| 39 | Actualización y priorización de Riesgos | 2013-11-08 → 2013-11-01 A (-7d) | 2013-11-11 → 2013-11-01 A (-10d) | 4h → 1h | 0% → 100% | 0d → none |  |
| 40 | Refinación del Plan de Proyecto | 2013-11-11 → 2013-11-01 A (-10d) | 2013-11-12 → 2013-11-01 A (-11d) | 3h → 1h | 0% → 100% | 0d → none |  |
| 41 | Generación de Informe #1 | 2013-11-12 → 2013-11-04 (-8d) | 2013-11-14 → 2013-11-04 (-10d) |  |  |  |  |
| 42 | **Gestión de Configuración** | 2013-11-15 → 2013-11-05 (-10d) | 2013-11-15 → 2013-11-05 (-10d) | 0.25d → 0.12d |  |  |  |
| 43 | Revisión de versionado de documentos modificados | 2013-11-15 → 2013-11-05 (-10d) | 2013-11-15 → 2013-11-05 (-10d) |  |  |  | Creacion de linea base de Planificación → none |
| 44 | **Ambiente** | 2013-11-15 → 2013-11-05 (-10d) | 2013-11-18 → 2013-11-07 (-11d) |  |  |  |  |
| 45 | Identificación de Tecnología | 2013-11-15 → 2013-11-05 (-10d) | 2013-11-18 → 2013-11-07 (-11d) |  |  |  |  |
| 46 | **Iteración E2** | 2013-11-18 → 2013-11-07 (-11d) | 2014-03-14 → 2014-02-07 (-35d) |  |  |  |  |
| 47 | **Modelo de Negocio** | 2013-11-18 → 2013-11-07 (-11d) | 2013-11-19 → 2013-11-11 (-8d) |  |  |  |  |
| 48 | Refinación del Modelo de Negocio | 2013-11-18 → 2013-11-07 (-11d) | 2013-11-19 → 2013-11-11 (-8d) |  |  |  |  |
| 49 | **Requerimientos** | 2013-11-19 → 2013-11-11 (-8d) | 2013-11-22 → 2013-11-12 (-10d) |  |  |  |  |
| 50 | Validación de requerimientos | 2013-11-19 → 2013-11-11 (-8d) | 2013-11-22 → 2013-11-11 (-11d) |  |  |  |  |
| 51 | Mapeo de Requerimientos a Casos de Uso | 2013-11-19 → 2013-11-11 (-8d) | 2013-11-22 → 2013-11-12 (-10d) |  |  |  |  |
| 52 | **Análisis/Diseño** | 2013-11-22 → 2013-11-12 (-10d) | 2014-02-07 → 2013-12-12 (-57d) |  |  |  |  |
| 53 | Definición Inicial de diagrama de Clases | 2013-11-22 → 2013-11-12 (-10d) | 2013-11-29 → 2013-11-18 (-11d) |  |  |  |  |
| 54 | Definición inicial del Modelo de Datos | 2013-11-29 → 2013-11-18 (-11d) | 2013-12-12 → 2013-11-22 (-20d) |  |  |  |  |
| 55 | Definición inicial de Diagrama de Actividades | 2013-12-12 → 2013-11-22 (-20d) | 2014-02-03 → 2013-11-29 (-66d) |  |  |  |  |
| 56 | Definición inicial de Diagramas de Secuencia | 2014-02-03 → 2013-11-29 (-66d) | 2014-02-07 → 2013-12-12 (-57d) |  |  |  |  |
| 57 | **Implementación** | 2014-02-27 → 2013-12-12 (-77d) | 2014-02-28 → 2014-02-03 (-25d) |  |  |  |  |
| 58 | Mejoramientos de prototipos | 2014-02-27 → 2013-12-12 (-77d) | 2014-02-28 → 2014-02-03 (-25d) |  |  |  |  |
| 59 | **Gestión del Proyecto** | 2014-03-10 → 2014-02-03 (-35d) | 2014-03-11 → 2014-02-04 (-35d) |  |  |  |  |
| 60 | Validación del Plan de proyecto | 2014-03-10 → 2014-02-03 (-35d) | 2014-03-10 → 2014-02-03 (-35d) |  |  |  |  |
| 61 | Generación de Informe #2 | 2014-03-10 → 2014-02-03 (-35d) | 2014-03-11 → 2014-02-04 (-35d) |  |  |  |  |
| 62 | **Gestión de Configuración** | 2014-03-11 → 2014-02-06 (-33d) | 2014-03-13 → 2014-02-06 (-35d) |  |  |  |  |
| 63 | Versionado de los prototipos | 2014-03-11 → 2014-02-06 (-33d) | 2014-03-13 → 2014-02-06 (-35d) |  |  |  |  |
| 64 | Revisión de versionado de documentos modificados | 2014-03-11 → 2014-02-06 (-33d) | 2014-03-13 → 2014-02-06 (-35d) |  |  |  |  |
| 65 | **Ambiente** | 2014-03-13 → 2014-02-06 (-35d) | 2014-03-14 → 2014-02-07 (-35d) |  |  |  |  |
| 66 | Preparación del ambiente de desarrollo | 2014-03-13 → 2014-02-06 (-35d) | 2014-03-14 → 2014-02-07 (-35d) |  |  |  |  |
| 67 | **Iteración E3** | 2014-03-14 → 2014-02-27 (-15d) | 2014-04-07 → 2014-03-28 (-10d) |  |  |  |  |
| 68 | **Requerimientos** | 2014-03-14 → 2014-02-27 (-15d) | 2014-03-17 → 2014-02-28 (-17d) |  |  |  |  |
| 69 | Validacion de Mapeo de Requerimientos a Casos de Uso | 2014-03-14 → 2014-02-27 (-15d) | 2014-03-17 → 2014-02-28 (-17d) |  |  |  |  |
| 70 | **Análisis/Diseño** | 2014-03-17 → 2014-02-28 (-17d) | 2014-03-28 → 2014-03-18 (-10d) |  |  |  |  |
| 71 | Refinación de Diagrama de Casos de Uso | 2014-03-17 → 2014-02-28 (-17d) | 2014-03-20 → 2014-03-10 (-10d) |  |  |  |  |

| ID | Task | Start | Finish |
| --- | --- | --- | --- |
| 72 | Refinación de Diagrama de Clases | 2014-03-21 → 2014-03-10 (-11d) | 2014-03-24 → 2014-03-14 (-10d) |
| 73 | Refinación del Modelo de Datos | 2014-03-24 → 2014-03-14 (-10d) | 2014-03-25 → 2014-03-17 (-8d) |
| 74 | Descripción de casos de uso mas importantes | 2014-03-25 → 2014-03-17 (-8d) | 2014-03-28 → 2014-03-18 (-10d) |
| 75 | **Implementación** | 2014-03-28 → 2014-03-20 (-8d) | 2014-04-03 → 2014-03-24 (-10d) |
| 76 | Definición de interfaces de comunicación entre plataformas | 2014-03-28 → 2014-03-20 (-8d) | 2014-04-03 → 2014-03-24 (-10d) |
| 77 | **Gestión del Proyecto** | 2014-04-03 → 2014-03-24 (-10d) | 2014-04-07 → 2014-03-27 (-11d) |
| 78 | Actualización de planes de prevención y contigencia para nuevos Riesgos | 2014-04-03 → 2014-03-24 (-10d) | 2014-04-04 → 2014-03-24 (-11d) |
| 79 | Generación de Informe #3 | 2014-04-04 → 2014-03-25 (-10d) | 2014-04-07 → 2014-03-27 (-11d) |
| 80 | **Gestión de Configuración** | 2014-04-07 → 2014-03-27 (-11d) | 2014-04-07 → 2014-03-28 (-10d) |
| 81 | Revisión de versionado de documentos modificados | 2014-04-07 → 2014-03-27 (-11d) | 2014-04-07 → 2014-03-28 (-10d) |
| 82 | Arquitectura del ciclo de vida | 2014-04-07 → 2014-03-28 (-10d) | 2014-04-07 → 2014-03-28 (-10d) |
| 83 | **CONSTRUCCIÓN** | 2014-04-07 → 2014-03-28 (-10d) | 2014-09-19 → 2014-09-11 (-8d) |
| 84 | **Iteración C1** | 2014-04-07 → 2014-03-28 (-10d) | 2014-04-25 → 2014-04-14 (-11d) |
| 85 | **Análisis/Diseño** | 2014-04-07 → 2014-03-28 (-10d) | 2014-04-11 → 2014-04-01 (-10d) |
| 86 | Refinación de Diagramas de Actividad | 2014-04-07 → 2014-03-28 (-10d) | 2014-04-08 → 2014-03-31 (-8d) |
| 87 | Refinación de Diagramas de Secuencia | 2014-04-08 → 2014-03-31 (-8d) | 2014-04-11 → 2014-04-01 (-10d) |
| 88 | **Implementación** | 2014-04-11 → 2014-04-01 (-10d) | 2014-04-18 → 2014-04-10 (-8d) |
| 89 | Construcción de Base de Datos | 2014-04-11 → 2014-04-01 (-10d) | 2014-04-15 → 2014-04-04 (-11d) |
| 90 | Definición de Interfaz de Usuario | 2014-04-15 → 2014-04-07 (-8d) | 2014-04-18 → 2014-04-10 (-8d) |
| 91 | **Gestión del Proyecto** | 2014-04-21 → 2014-04-10 (-11d) | 2014-04-24 → 2014-04-14 (-10d) |
| 92 | Actualización de Riesgos | 2014-04-21 → 2014-04-10 (-11d) | 2014-04-21 → 2014-04-10 (-11d) |
| 93 | Revisión de planificacion (posible replanificación) | 2014-04-21 → 2014-04-10 (-11d) | 2014-04-21 → 2014-04-11 (-10d) |
| 94 | Generación de Informe #4 | 2014-04-22 → 2014-04-11 (-11d) | 2014-04-24 → 2014-04-14 (-10d) |
| 95 | **Gestión de Configuración** | 2014-04-24 → 2014-04-14 (-10d) | 2014-04-25 → 2014-04-14 (-11d) |
| 96 | Versionado de prototipos | 2014-04-24 → 2014-04-14 (-10d) | 2014-04-25 → 2014-04-14 (-11d) |
| 97 | Revisión de versionado de documentos modificados | 2014-04-24 → 2014-04-14 (-10d) | 2014-04-25 → 2014-04-14 (-11d) |
| 98 | **Iteración C2** | 2014-04-25 → 2014-04-14 (-11d) | 2014-05-23 → 2014-05-12 (-11d) |
| 99 | **Análisis/Diseño** | 2014-04-25 → 2014-04-14 (-11d) | 2014-05-02 → 2014-04-21 (-11d) |
| 100 | Definición inicial del Modelo de componentes | 2014-04-25 → 2014-04-14 (-11d) | 2014-04-29 → 2014-04-18 (-11d) |
| 101 | Refinación de Diagramas de clases (agregado de operaciones) | 2014-04-29 → 2014-04-21 (-8d) | 2014-05-02 → 2014-04-21 (-11d) |
| 102 | **Implementación** | 2014-05-02 → 2014-04-22 (-10d) | 2014-05-16 → 2014-05-05 (-11d) |
| 103 | Codificación de Interfaz de usuario (FrontEnd) | 2014-05-02 → 2014-04-22 (-10d) | 2014-05-16 → 2014-05-05 (-11d) |
| 104 | Codificación de Interfaz de usuario (BackEnd) | 2014-05-02 → 2014-04-22 (-10d) | 2014-05-13 → 2014-05-05 (-8d) |
| 105 | Codificación de Interfaz de usuario (Android) | 2014-05-02 → 2014-04-22 (-10d) | 2014-05-15 → 2014-05-05 (-10d) |
| 106 | **Gestión del Proyecto** | 2014-05-16 → 2014-05-06 (-10d) | 2014-05-22 → 2014-05-12 (-10d) |
| 107 | Actualización de Riesgos | 2014-05-16 → 2014-05-06 (-10d) | 2014-05-16 → 2014-05-08 (-8d) |
| 108 | Revisión de planificacion (posible replanificación) | 2014-05-19 → 2014-05-08 (-11d) | 2014-05-19 → 2014-05-09 (-10d) |
| 109 | Generación de Informe #5 | 2014-05-19 → 2014-05-09 (-10d) | 2014-05-22 → 2014-05-12 (-10d) |
| 110 | **Gestión de Configuración** | 2014-05-22 → 2014-05-12 (-10d) | 2014-05-23 → 2014-05-12 (-11d) |
| 111 | Versionado de interfaz de usuario | 2014-05-22 → 2014-05-12 (-10d) | 2014-05-22 → 2014-05-12 (-10d) |
| 112 | Revisión de versionado de documentos modificados | 2014-05-22 → 2014-05-12 (-10d) | 2014-05-23 → 2014-05-12 (-11d) |
| 113 | **Iteración C3** | 2014-05-23 → 2014-05-12 (-11d) | 2014-06-13 → 2014-06-03 (-10d) |
| 114 | **Análisis/Diseño** | 2014-05-23 → 2014-05-12 (-11d) | 2014-05-23 → 2014-05-13 (-10d) |
| 115 | Refinación del Modelo de componentes | 2014-05-23 → 2014-05-12 (-11d) | 2014-05-23 → 2014-05-13 (-10d) |
| 116 | **Implementación** | 2014-05-23 → 2014-05-15 (-8d) | 2014-06-09 → 2014-05-30 (-10d) |
| 117 | Codificacion de logeo de usuario (FrontEnd) | 2014-05-23 → 2014-05-15 (-8d) | 2014-06-06 → 2014-05-27 (-10d) |
| 118 | Codificación de seguridad [Roles y Usuario] (BackEnd) | 2014-05-23 → 2014-05-15 (-8d) | 2014-06-06 → 2014-05-27 (-10d) |
| 119 | Codificación de Local Storage (Android) | 2014-05-23 → 2014-05-15 (-8d) | 2014-06-09 → 2014-05-30 (-10d) |
| 120 | **Gestión del Proyecto** | 2014-06-09 → 2014-05-30 (-10d) | 2014-06-13 → 2014-06-02 (-11d) |
| 121 | Actualización de Riesgos | 2014-06-09 → 2014-05-30 (-10d) | 2014-06-10 → 2014-05-30 (-11d) |
| 122 | Revisión de planificacion (posible replanificación) | 2014-06-09 → 2014-05-30 (-10d) | 2014-06-10 → 2014-05-30 (-11d) |
| 123 | Generación de Informe #6 | 2014-06-10 → 2014-06-02 (-8d) | 2014-06-13 → 2014-06-02 (-11d) |
| 124 | **Gestión de Configuración** | 2014-06-13 → 2014-06-03 (-10d) | 2014-06-13 → 2014-06-03 (-10d) |
| 125 | Versionado de todos los proyectos | 2014-06-13 → 2014-06-03 (-10d) | 2014-06-13 → 2014-06-03 (-10d) |
| 126 | Revisión de versionado de documentos modificados | 2014-06-13 → 2014-06-03 (-10d) | 2014-06-13 → 2014-06-03 (-10d) |
| 127 | **Iteración C4** | 2014-06-13 → 2014-06-03 (-10d) | 2014-07-11 → 2014-06-30 (-11d) |
| 128 | **Análisis/Diseño** | 2014-06-13 → 2014-06-03 (-10d) | 2014-06-16 → 2014-06-06 (-10d) |
| 129 | Refinación del Modelo de Datos | 2014-06-13 → 2014-06-03 (-10d) | 2014-06-16 → 2014-06-06 (-10d) |
| 130 | **Implementación** | 2014-06-16 → 2014-06-06 (-10d) | 2014-07-07 → 2014-06-27 (-10d) |
| 131 | Codificación de Gestión de reservas online (FrontEnd) | 2014-06-16 → 2014-06-06 (-10d) | 2014-07-07 → 2014-06-26 (-11d) |
| 132 | Codificación de ABM principales (BackEnd) | 2014-06-16 → 2014-06-06 (-10d) | 2014-07-07 → 2014-06-27 (-10d) |
| 133 | Codificación de ABM principales (Android) | 2014-06-16 → 2014-06-06 (-10d) | 2014-07-04 → 2014-06-23 (-11d) |
| 134 | **Gestión del Proyecto** | 2014-07-07 → 2014-06-27 (-10d) | 2014-07-10 → 2014-06-30 (-10d) |
| 135 | Actualización de Riesgos | 2014-07-07 → 2014-06-27 (-10d) | 2014-07-08 → 2014-06-27 (-11d) |
| 136 | Revisión de planificacion (posible replanificación) | 2014-07-07 → 2014-06-27 (-10d) | 2014-07-07 → 2014-06-27 (-10d) |
| 137 | Generación de Informe #8 | 2014-07-08 → 2014-06-27 (-11d) | 2014-07-10 → 2014-06-30 (-10d) |
| 138 | **Gestión de Configuración** | 2014-07-11 → 2014-06-30 (-11d) | 2014-07-11 → 2014-06-30 (-11d) |
| 139 | Versionado de todos los proyectos | 2014-07-11 → 2014-06-30 (-11d) | 2014-07-11 → 2014-06-30 (-11d) |
| 140 | Revisión de versionado de documentos modificados | 2014-07-11 → 2014-06-30 (-11d) | 2014-07-11 → 2014-06-30 (-11d) |
| 141 | **Iteración C5** | 2014-07-11 → 2014-07-01 (-10d) | 2014-08-15 → 2014-08-05 (-10d) |

| ID | Task | Start | Finish |
| --- | --- | --- | --- |
| 142 | **Análisis/Diseño** | 2014-07-11 → 2014-07-01 (-10d) | 2014-07-14 → 2014-07-04 (-10d) |
| 143 | Revisión de Diagramas y Modelos de Análisis/Diseño | 2014-07-11 → 2014-07-01 (-10d) | 2014-07-14 → 2014-07-04 (-10d) |
| 144 | **Implementación** | 2014-07-14 → 2014-07-04 (-10d) | 2014-08-07 → 2014-07-28 (-10d) |
| 145 | Codificación de Calculos de tiempos de espera (FrontEnd) | 2014-07-14 → 2014-07-04 (-10d) | 2014-08-07 → 2014-07-28 (-10d) |
| 146 | Codificación de Funciones básicas (BackEnd) | 2014-07-14 → 2014-07-04 (-10d) | 2014-08-05 → 2014-07-28 (-8d) |
| 147 | Codificación de visualizador de ordenes (Android) | 2014-07-14 → 2014-07-04 (-10d) | 2014-08-04 → 2014-07-24 (-11d) |
| 148 | **Pruebas** | 2014-08-07 → 2014-07-28 (-10d) | 2014-08-12 → 2014-08-01 (-11d) |
| 149 | Pruebas de Funcionalidad (para las 3 aplicaciones) | 2014-08-07 → 2014-07-28 (-10d) | 2014-08-12 → 2014-08-01 (-11d) |
| 150 | **Gestión del Proyecto** | 2014-08-12 → 2014-08-01 (-11d) | 2014-08-15 → 2014-08-05 (-10d) |
| 151 | Actualización de Riesgos | 2014-08-12 → 2014-08-01 (-11d) | 2014-08-14 → 2014-08-04 (-10d) |
| 152 | Revisión de planificacion (posible replanificación) | 2014-08-12 → 2014-08-01 (-11d) | 2014-08-12 → 2014-08-04 (-8d) |
| 153 | Generación de Informe #9 | 2014-08-14 → 2014-08-04 (-10d) | 2014-08-15 → 2014-08-05 (-10d) |
| 154 | **Gestión de Configuración** | 2014-08-15 → 2014-08-05 (-10d) | 2014-08-15 → 2014-08-05 (-10d) |
| 155 | Versionado de todos los proyectos | 2014-08-15 → 2014-08-05 (-10d) | 2014-08-15 → 2014-08-05 (-10d) |
| 156 | Revisión de versionado de documentos modificados | 2014-08-15 → 2014-08-05 (-10d) | 2014-08-15 → 2014-08-05 (-10d) |
| 157 | **Iteración C6** | 2014-08-15 → 2014-08-07 (-8d) | 2014-09-19 → 2014-09-11 (-8d) |
| 158 | **Análisis/Diseño** | 2014-08-15 → 2014-08-07 (-8d) | 2014-08-21 → 2014-08-11 (-10d) |
| 159 | Revisión de Diagramas y Modelos de Análisis/Diseño | 2014-08-15 → 2014-08-07 (-8d) | 2014-08-21 → 2014-08-11 (-10d) |
| 160 | **Implementación** | 2014-08-21 → 2014-08-11 (-10d) | 2014-09-11 → 2014-09-01 (-10d) |
| 161 | Codificación de Calculos de tiempos de espera (FrontEnd) | 2014-08-21 → 2014-08-11 (-10d) | 2014-09-11 → 2014-09-01 (-10d) |
| 162 | Codificación de visualizador de Ordenes (BackEnd) | 2014-08-21 → 2014-08-11 (-10d) | 2014-09-09 → 2014-09-01 (-8d) |
| 163 | Codificación de personalización gráfica (Android) | 2014-08-21 → 2014-08-11 (-10d) | 2014-09-11 → 2014-09-01 (-10d) |
| 164 | **Pruebas** | 2014-09-11 → 2014-09-01 (-10d) | 2014-09-16 → 2014-09-05 (-11d) |
| 165 | Pruebas de comunicación de interfaces y pruebas de funcionalidad | 2014-09-11 → 2014-09-01 (-10d) | 2014-09-16 → 2014-09-05 (-11d) |
| 166 | **Gestión del Proyecto** | 2014-09-16 → 2014-09-08 (-8d) | 2014-09-19 → 2014-09-09 (-10d) |
| 167 | Actualización de Riesgos | 2014-09-16 → 2014-09-08 (-8d) | 2014-09-16 → 2014-09-08 (-8d) |
| 168 | Revisión de planificacion (posible replanificación) | 2014-09-16 → 2014-09-08 (-8d) | 2014-09-16 → 2014-09-08 (-8d) |
| 169 | Generación de Informe #10 | 2014-09-18 → 2014-09-08 (-10d) | 2014-09-19 → 2014-09-09 (-10d) |
| 170 | **Gestión de Configuración** | 2014-09-19 → 2014-09-09 (-10d) | 2014-09-19 → 2014-09-11 (-8d) |
| 171 | Versionado de todos los proyectos | 2014-09-19 → 2014-09-09 (-10d) | 2014-09-19 → 2014-09-11 (-8d) |
| 172 | Revisión de versionado de documentos modificados | 2014-09-19 → 2014-09-09 (-10d) | 2014-09-19 → 2014-09-11 (-8d) |
| 173 | Capacidad Operacional Inicial | 2014-09-19 → 2014-09-11 (-8d) | 2014-09-19 → 2014-09-11 (-8d) |
| 174 | **TRANSICIÓN** | 2014-09-22 → 2014-09-11 (-11d) | 2014-10-28 → 2014-10-17 (-11d) |
| 175 | **Iteración T1** | 2014-09-22 → 2014-09-11 (-11d) | 2014-10-28 → 2014-10-17 (-11d) |
| 176 | **Implementación** | 2014-09-22 → 2014-09-11 (-11d) | 2014-10-02 → 2014-09-22 (-10d) |
| 177 | Elaboracion de documentación para usuarios y videos tutoriales | 2014-09-22 → 2014-09-11 (-11d) | 2014-10-02 → 2014-09-22 (-10d) |
| 178 | **Despliegue** | 2014-10-02 → 2014-09-22 (-10d) | 2014-10-14 → 2014-10-06 (-8d) |
| 179 | Modelo de despliegue | 2014-10-02 → 2014-09-22 (-10d) | 2014-10-07 → 2014-09-26 (-11d) |
| 180 | Integración y puesta a punto del sistema | 2014-10-07 → 2014-09-26 (-11d) | 2014-10-14 → 2014-10-06 (-8d) |
| 181 | **Gestión del Proyecto** | 2014-10-16 → 2014-10-06 (-10d) | 2014-10-27 → 2014-10-17 (-10d) |
| 182 | Actualización de Riesgos | 2014-10-16 → 2014-10-06 (-10d) | 2014-10-16 → 2014-10-06 (-10d) |
| 183 | Revisión de planificacion (posible replanificación) | 2014-10-16 → 2014-10-06 (-10d) | 2014-10-16 → 2014-10-06 (-10d) |
| 184 | Análisis de resultados del proyecto | 2014-10-17 → 2014-10-06 (-11d) | 2014-10-24 → 2014-10-14 (-10d) |
| 185 | Generación de Informe #11 | 2014-10-24 → 2014-10-14 (-10d) | 2014-10-27 → 2014-10-17 (-10d) |
| 186 | **Gestión de Configuración** | 2014-10-27 → 2014-10-17 (-10d) | 2014-10-28 → 2014-10-17 (-11d) |
| 187 | Versionado de todos los proyectos | 2014-10-27 → 2014-10-17 (-10d) | 2014-10-28 → 2014-10-17 (-11d) |
| 188 | Revisión de versionado de documentos modificados | 2014-10-27 → 2014-10-17 (-10d) | 2014-10-28 → 2014-10-17 (-11d) |
| 189 | Lanzamiento de producto | 2014-10-28 → 2014-10-17 (-11d) | 2014-10-28 → 2014-10-17 (-11d) |
| 190 | Fin de Proyecto | 2014-10-28 → 2014-10-17 (-11d) | 2014-10-28 → 2014-10-17 (-11d) |

## Version 4 (data date 2013-07-29, saved 2014-03-11, file Planificación RestApp Nueva.mpp)

Note of the change: Planificación 'nueva'

Last finish 2014-10-17 → 2014-09-23 (-24d). Complete tasks 24 → 0.

Removed: 41 Generación de Informe #1; 61 Generación de Informe #2; 79 Generación de Informe #3; 94 Generación de Informe #4; 109 Generación de Informe #5; 123 Generación de Informe #6; 137 Generación de Informe #8; 153 Generación de Informe #9; 169 Generación de Informe #10; 185 Generación de Informe #11

Changed:

| ID | Task | Start | Finish | Duration | Complete | Total float | Predecessors | Other |
| --- | --- | --- | --- | --- | --- | --- | --- | --- |
| 1 | **RestApp** | 2013-07-29 A → 2013-07-30 17:00 (+1d) | 2014-10-17 → 2014-09-23 18:00 (-24d) | 76.5d → 138.25d | 14% → 0% |  |  | baseline start 2013-07-29 → none; baseline finish 2014-10-28 → none |
| 2 | **INICIO** | 2013-07-29 A → 2013-07-30 17:00 (+1d) | 2013-09-24 A → 2013-09-25 21:00 (+1d) | 10.38d → 21d | 100% → 0% | none → 0d |  | baseline start 2013-07-29 → none; baseline finish 2013-10-04 → none |
| 3 | **Iteración I1** | 2013-07-29 A → 2013-07-30 17:00 (+1d) | 2013-09-24 A → 2013-09-25 21:00 (+1d) | 10.38d → 21d | 100% → 0% | none → 0d |  | baseline start 2013-07-29 → none; baseline finish 2013-10-04 → none |
| 4 | **Modelo de Negocio** | 2013-07-29 A → 2013-07-30 17:00 (+1d) | 2013-08-02 A → 2013-08-01 19:00 (-1d) | 1.12d → 2.5d | 100% → 0% | none → 0d |  | baseline start 2013-07-29 → none; baseline finish 2013-08-05 → none |
| 5 | Analisis del dominio del problema | 2013-07-29 A → 2013-07-30 17:00 (+1d) | 2013-07-29 A → 2013-07-30 21:00 (+1d) |  | 100% → 0% | none → 0d |  | baseline start 2013-07-29 → none; baseline finish 2013-07-30 → none |
| 6 | Confección de entrevista | 2013-07-30 A → 2013-07-31 17:00 (+1d) | 2013-07-30 A → 2013-07-31 19:00 (+1d) |  | 100% → 0% | none → 0d |  | baseline start 2013-07-30 → none; baseline finish 2013-08-01 → none |
| 7 | Realización de entrevista | 2013-07-30 A → 2013-07-31 19:00 (+1d) | 2013-08-01 A → 2013-07-31 21:00 (-1d) | 1h → 2h | 100% → 0% | none → 0d |  | baseline start 2013-08-01 → none; baseline finish 2013-08-02 → none |
| 8 | Analisis de Entrevista | 2013-08-01 A → 2013-08-01 17:00 | 2013-08-02 A → 2013-08-01 19:00 (-1d) |  | 100% → 0% | none → 0d |  | baseline start 2013-08-02 → none; baseline finish 2013-08-05 → none |
| 9 | **Requerimientos** | 2013-08-02 A → 2013-08-01 19:00 (-1d) | 2013-08-09 A → 2013-08-13 21:00 (+4d) | 1.75d → 4.5d | 100% → 0% | none → 0d |  | baseline start 2013-08-05 → none; baseline finish 2013-08-16 → none |
| 10 | Definición de caracteristicas y limitaciones | 2013-08-02 A → 2013-08-01 19:00 (-1d) | 2013-08-05 A → 2013-08-07 19:00 (+2d) | 6h → 8h | 100% → 0% | none → 0d |  | baseline start 2013-08-05 → none; baseline finish 2013-08-09 → none |
| 11 | Definición de Requerimientos Funcionales y No Funcionales | 2013-08-05 A → 2013-08-07 19:00 (+2d) | 2013-08-09 A → 2013-08-13 21:00 (+4d) | 8h → 10h | 100% → 0% | none → 0d |  | resources none → Fernando Raviola; Lucas Ferrero; Oscar Salomón; baseline start 2013-08-09 → none; baseline finish 2013-08-16 → none |
| 12 | **Análisis/Diseño** | 2013-08-09 A → 2013-08-14 17:00 (+5d) | 2013-08-12 A → 2013-08-15 21:00 (+3d) | 0.75d → 2d | 100% → 0% | none → 0d |  | baseline start 2013-08-16 → none; baseline finish 2013-08-27 → none |
| 13 | Definición inicial del Modelo de Casos de Usos | 2013-08-09 A → 2013-08-14 17:00 (+5d) | 2013-08-12 A → 2013-08-15 21:00 (+3d) | 6h → 8h | 100% → 0% | none → 0d |  | baseline start 2013-08-16 → none; baseline finish 2013-08-27 → none |
| 14 | **Gestión del Proyecto** | 2013-08-13 A → 2013-08-20 17:00 (+7d) | 2013-09-17 A → 2013-09-18 21:00 (+1d) | 5.25d → 9d | 100% → 0% | none → 0d |  | baseline start 2013-08-27 → none; baseline finish 2013-09-26 → none |
| 15 | Estudio de prefactibilidad | 2013-08-13 A → 2013-08-20 17:00 (+7d) | 2013-08-16 A → 2013-08-27 21:00 (+11d) |  | 100% → 0% | none → 0d |  | baseline start 2013-08-27 → none; baseline finish 2013-09-02 → none |
| 16 | Planificación | 2013-08-16 A → 2013-08-28 17:00 (+12d) | 2013-09-02 A → 2013-08-29 21:00 (-4d) | 18h → 8h | 100% → 0% | none → 0d |  | baseline start 2013-09-02 → none; baseline finish 2013-09-16 → none |
| 17 | Gestión de riesgos (definición) | 2013-09-02 A → 2013-09-03 17:00 (+1d) | 2013-09-05 A → 2013-09-04 21:00 (-1d) | 6h → 8h | 100% → 0% | none → 0d |  | baseline start 2013-09-16 → none; baseline finish 2013-09-20 → none |
| 18 | Gestión de configuración (definición) | 2013-09-06 A → 2013-09-05 17:00 (-1d) | 2013-09-16 A → 2013-09-17 21:00 (+1d) | 6h → 8h | 100% → 0% | none → 0d |  | baseline start 2013-09-20 → none; baseline finish 2013-09-26 → none |
| 19 | Presentación Inicial | 2013-09-16 A → 2013-09-18 17:00 (+2d) | 2013-09-17 A → 2013-09-18 21:00 (+1d) | 4h → 1d | 100% → 0% | none → 0d |  | resources none → Fernando Raviola; Lucas Ferrero; Oscar Salomón |
| 20 | **Gestión de configuración** | 2013-09-17 A → 2013-09-19 17:00 (+2d) | 2013-09-23 A → 2013-09-24 21:00 (+1d) | 1d → 2d | 100% → 0% | none → 0d |  | baseline start 2013-09-27 → none; baseline finish 2013-09-30 → none |
| 21 | Preparación del ambiente de versionado | 2013-09-17 A → 2013-09-19 17:00 (+2d) | 2013-09-23 A → 2013-09-24 21:00 (+1d) |  | 100% → 0% | none → 0d |  | baseline start 2013-09-27 → none; baseline finish 2013-09-30 → none |
| 22 | **Ambiente** | 2013-09-23 A → 2013-09-25 17:00 (+2d) | 2013-09-24 A → 2013-09-25 21:00 (+1d) | 0.5d → 1d | 100% → 0% | none → 0d |  | baseline start 2013-10-01 → none; baseline finish 2013-10-04 → none |
| 23 | Identificación y evaluación de herramientas | 2013-09-23 A → 2013-09-25 17:00 (+2d) | 2013-09-24 A → 2013-09-25 21:00 (+1d) |  | 100% → 0% | none → 0d |  | baseline start 2013-10-01 → none; baseline finish 2013-10-04 → none |
| 24 | Objetivos del ciclo de vida | 2013-09-24 A → 2013-09-25 21:00 (+1d) | 2013-09-24 A → 2013-09-25 21:00 (+1d) |  | 100% → 0% | none → 0d |  | baseline start 2013-10-04 → none; baseline finish 2013-10-04 → none |
| 25 | **ELABORACIÓN** | 2013-09-24 A → 2013-09-26 17:00 (+2d) | 2014-03-28 → 2014-03-19 21:00 (-9d) | 20.5d → 38d | 32% → 0% |  |  | baseline start 2013-10-04 → none; baseline finish 2014-04-07 → none |
| 26 | **Iteración E1** | 2013-09-24 A → 2013-09-26 17:00 (+2d) | 2013-11-07 → 2013-11-06 18:00 (-1d) | 7.62d → 14.25d | 87% → 0% |  |  | baseline start 2013-10-04 → none; baseline finish 2013-11-18 → none |
| 27 | **Modelo de Negocio** | 2013-09-24 A → 2013-09-26 17:00 (+2d) | 2013-09-27 A → 2013-10-01 20:00 (+4d) | 0.88d → 1.75d | 100% → 0% | none → 0d |  | baseline start 2013-10-04 → none; baseline finish 2013-10-08 → none |
| 28 | Entendimiento del Modelo de Negocio | 2013-09-24 A → 2013-09-26 17:00 (+2d) | 2013-09-27 A → 2013-10-01 20:00 (+4d) |  | 100% → 0% | none → 0d |  | baseline start 2013-10-04 → none; baseline finish 2013-10-08 → none |
| 29 | **Requerimientos** | 2013-09-30 A → 2013-10-01 20:00 (+1d) | 2013-10-04 A → 2013-10-08 20:00 (+4d) | 1.5d → 3d | 100% → 0% | none → 0d |  | baseline start 2013-10-10 → none; baseline finish 2013-10-18 → none |
| 30 | Definicón de nuevos requerimientos | 2013-09-30 A → 2013-10-01 20:00 (+1d) | 2013-09-30 A → 2013-10-02 18:00 (+2d) |  | 100% → 0% | none → 0d |  | baseline start 2013-10-10 → none; baseline finish 2013-10-11 → none |
| 31 | Documentación de requerimientos según estandar | 2013-09-30 A → 2013-10-02 18:00 (+2d) | 2013-10-03 A → 2013-10-03 19:00 |  | 100% → 0% | none → 0d |  | baseline start 2013-10-11 → none; baseline finish 2013-10-15 → none |
| 32 | Jerarquización de requerimientos | 2013-10-03 A → 2013-10-03 19:00 | 2013-10-04 A → 2013-10-08 20:00 (+4d) |  | 100% → 0% | none → 0d |  | baseline start 2013-10-15 → none; baseline finish 2013-10-18 → none |
| 33 | **Análisis/Diseño** | 2013-10-04 A → 2013-10-08 20:00 (+4d) | 2013-10-11 A → 2013-10-15 20:00 (+4d) | 1.5d → 3d | 100% → 0% | none → 0d |  | baseline start 2013-10-18 → none; baseline finish 2013-11-04 → none |
| 34 | Refinación de Modelo de Casos de Usos | 2013-10-04 A → 2013-10-08 20:00 (+4d) | 2013-10-07 A → 2013-10-09 18:00 (+2d) |  | 100% → 0% | none → 0d |  | baseline start 2013-10-18 → none; baseline finish 2013-10-18 → none |
| 35 | Definición preliminar de Diagrama de clases | 2013-10-07 A → 2013-10-09 18:00 (+2d) | 2013-10-11 A → 2013-10-15 20:00 (+4d) |  | 100% → 0% | none → 0d |  | baseline start 2013-10-18 → none; baseline finish 2013-11-04 → none |
| 36 | **Implementación** | 2013-10-11 A → 2013-10-15 20:00 (+4d) | 2013-11-01 A → 2013-10-31 20:00 (-1d) | 2.5d → 5d | 100% → 0% | none → 0d |  | baseline start 2013-11-04 → none; baseline finish 2013-11-08 → none |
| 37 | Desarrollo prototipos independientes de prueba | 2013-10-11 A → 2013-10-15 20:00 (+4d) | 2013-11-01 A → 2013-10-31 20:00 (-1d) |  | 100% → 0% | none → 0d |  | baseline start 2013-11-04 → none; baseline finish 2013-11-08 → none |
| 38 | **Gestión del Proyecto** | 2013-11-01 A → 2013-10-31 20:00 (-1d) | 2013-11-04 → 2013-11-05 18:00 (+1d) | 0.75d → 0.5d | 33% → 0% |  |  | baseline start 2013-11-08 → none; baseline finish 2013-11-14 → none |
| 39 | Actualización y priorización de Riesgos | 2013-11-01 A → 2013-10-31 20:00 (-1d) | 2013-11-01 A → 2013-10-31 21:00 (-1d) |  | 100% → 0% | none → 0d |  | baseline start 2013-11-08 → none; baseline finish 2013-11-11 → none |
| 40 | Refinación del Plan de Proyecto | 2013-11-01 A → 2013-11-05 17:00 (+4d) | 2013-11-01 A → 2013-11-05 18:00 (+4d) |  | 100% → 0% | none → 0d |  | baseline start 2013-11-11 → none; baseline finish 2013-11-12 → none |
| 41 | **Gestión de Configuración** | 2013-11-05 → 2013-11-05 18:00 | 2013-11-05 → 2013-11-05 19:00 | 0.12d → 0.25d |  |  |  | baseline start 2013-11-15 → none; baseline finish 2013-11-15 → none |
| 42 | Revisión de versionado de documentos modificados | 2013-11-05 → 2013-11-05 18:00 | 2013-11-05 → 2013-11-05 19:00 |  |  |  |  | baseline start 2013-11-15 → none; baseline finish 2013-11-15 → none |
| 43 | **Ambiente** | 2013-11-05 → 2013-11-05 19:00 | 2013-11-07 → 2013-11-06 18:00 (-1d) | 0.38d → 0.75d |  |  |  | baseline start 2013-11-15 → none; baseline finish 2013-11-18 → none |
| 44 | Identificación de Tecnología | 2013-11-05 → 2013-11-05 19:00 | 2013-11-07 → 2013-11-06 18:00 (-1d) |  |  |  |  | baseline start 2013-11-15 → none; baseline finish 2013-11-18 → none |
| 45 | **Iteración E2** | 2013-11-07 → 2013-11-06 18:00 (-1d) | 2014-02-07 → 2014-02-04 21:00 (-3d) | 7.88d → 14.75d |  |  |  | baseline start 2013-11-18 → none; baseline finish 2014-03-14 → none |
| 46 | **Modelo de Negocio** | 2013-11-07 → 2013-11-06 18:00 (-1d) | 2013-11-11 → 2013-11-07 19:00 (-4d) | 0.62d → 1.25d |  |  |  | baseline start 2013-11-18 → none; baseline finish 2013-11-19 → none |
| 47 | Refinación del Modelo de Negocio | 2013-11-07 → 2013-11-06 18:00 (-1d) | 2013-11-11 → 2013-11-07 19:00 (-4d) |  |  |  |  | resources Fernando Raviola; Lucas Ferrero; Oscar Salomón → none; baseline start 2013-11-18 → none; baseline finish 2013-11-19 → none |
| 48 | **Requerimientos** | 2014-02-27 → 2013-11-07 19:00 (-112d) | 2014-02-28 → 2013-11-12 19:00 (-108d) | 0.38d → 1d |  |  | none → 46 | baseline start 2014-03-14 → none; baseline finish 2014-03-17 → none |
| 49 | Validación de requerimientos | 2013-11-11 → 2013-11-07 19:00 (-4d) | 2013-11-11 → 2013-11-12 18:00 (+1d) |  |  | 0.12d → 0.25d |  | resources Fernando Raviola; Oscar Salomón → Oscar Salomón; Fernando Raviola; baseline start 2013-11-19 → none; baseline finish 2013-11-22 → none |
| 50 | Mapeo de Requerimientos a Casos de Uso | 2013-11-11 → 2013-11-07 19:00 (-4d) | 2013-11-12 → 2013-11-12 19:00 |  |  |  |  | baseline start 2013-11-19 → none; baseline finish 2013-11-22 → none |
| 51 | **Análisis/Diseño** | 2013-11-12 → 2013-11-12 19:00 | 2013-12-12 → 2013-12-10 19:00 (-2d) | 4.5d → 9d |  |  | 66 → 48 | baseline start 2013-11-22 → none; baseline finish 2014-02-07 → none |
| 52 | Definición Inicial de diagrama de Clases | 2013-11-12 → 2013-11-12 19:00 | 2013-11-18 → 2013-11-14 21:00 (-4d) |  |  |  |  | baseline start 2013-11-22 → none; baseline finish 2013-11-29 → none |
| 53 | Definición inicial del Modelo de Datos | 2013-11-18 → 2013-11-19 17:00 (+1d) | 2013-11-22 → 2013-11-20 21:00 (-2d) |  |  |  |  | baseline start 2013-11-29 → none; baseline finish 2013-12-12 → none |
| 54 | Definición inicial de Diagrama de Actividades | 2013-11-22 → 2013-11-21 17:00 (-1d) | 2013-11-29 → 2013-11-26 21:00 (-3d) |  |  |  |  | baseline start 2013-12-12 → none; baseline finish 2014-02-03 → none |
| 55 | Definición inicial de Diagramas de Secuencia | 2013-11-29 → 2013-11-27 17:00 (-2d) | 2013-12-12 → 2013-12-10 19:00 (-2d) |  |  |  |  | baseline start 2014-02-03 → none; baseline finish 2014-02-07 → none |
| 56 | **Implementación** | 2013-12-12 → 2013-12-10 19:00 (-2d) | 2014-02-03 → 2013-12-11 21:00 (-54d) | 0.75d → 1.5d |  |  |  | baseline start 2014-02-27 → none; baseline finish 2014-02-28 → none |
| 57 | Mejoramientos de prototipos | 2013-12-12 → 2013-12-10 19:00 (-2d) | 2014-02-03 → 2013-12-11 21:00 (-54d) |  |  |  |  | baseline start 2014-02-27 → none; baseline finish 2014-02-28 → none |
| 58 | **Gestión del Proyecto** | 2014-03-24 → 2013-12-12 17:00 (-102d) | 2014-03-27 → 2013-12-12 19:00 (-105d) | 0.75d → 0.5d |  |  | 73 → 56 | baseline start 2014-04-03 → none; baseline finish 2014-04-07 → none |
| 59 | Validación del Plan de proyecto | 2014-02-03 → 2013-12-12 17:00 (-53d) | 2014-02-03 → 2013-12-12 19:00 (-53d) |  |  |  |  | baseline start 2014-03-10 → none; baseline finish 2014-03-10 → none |
| 60 | **Gestión de Configuración** | 2014-03-27 → 2013-12-12 19:00 (-105d) | 2014-03-28 → 2013-12-12 20:00 (-106d) | 0.12d → 0.25d |  |  |  | baseline start 2014-04-07 → none; baseline finish 2014-04-07 → none |
| 61 | Versionado de los prototipos | 2014-02-06 → 2013-12-12 19:00 (-56d) | 2014-02-06 → 2013-12-12 20:00 (-56d) |  |  |  |  | baseline start 2014-03-11 → none; baseline finish 2014-03-13 → none |
| 62 | Revisión de versionado de documentos modificados | 2014-03-27 → 2013-12-12 19:00 (-105d) | 2014-03-28 → 2013-12-12 20:00 (-106d) |  |  |  |  | resources Fernando Raviola; Lucas Ferrero; Oscar Salomón → Lucas Ferrero; Fernando Raviola; baseline start 2014-04-07 → none; baseline finish 2014-04-07 → none |
| 63 | **Ambiente** | 2014-02-06 → 2013-12-12 20:00 (-56d) | 2014-02-07 → 2014-02-04 21:00 (-3d) | 0.62d → 1.25d |  |  | 91 → 60 | baseline start 2014-03-13 → none; baseline finish 2014-03-14 → none |
| 64 | Preparación del ambiente de desarrollo | 2014-02-06 → 2013-12-12 20:00 (-56d) | 2014-02-07 → 2014-02-04 21:00 (-3d) |  |  |  |  | baseline start 2014-03-13 → none; baseline finish 2014-03-14 → none |
| 65 | **Iteración E3** | 2014-02-27 → 2014-02-05 17:00 (-22d) | 2014-03-28 → 2014-03-19 21:00 (-9d) | 5d → 9d |  |  |  | baseline start 2014-03-14 → none; baseline finish 2014-04-07 → none |
| 66 | **Requerimientos** | 2013-11-11 → 2014-02-05 17:00 (+86d) | 2013-11-12 → 2014-02-05 20:00 (+85d) | 0.5d → 0.75d |  |  | 46 → none | baseline start 2013-11-19 → none; baseline finish 2013-11-22 → none |
| 67 | Validacion de Mapeo de Requerimientos a Casos de Uso | 2014-02-27 → 2014-02-05 17:00 (-22d) | 2014-02-28 → 2014-02-05 20:00 (-23d) |  |  |  |  | baseline start 2014-03-14 → none; baseline finish 2014-03-17 → none |
| 68 | **Análisis/Diseño** | 2014-02-28 → 2014-02-05 20:00 (-23d) | 2014-03-18 → 2014-03-13 18:00 (-5d) | 2.75d → 5.5d |  |  | 48 → 66 | baseline start 2014-03-17 → none; baseline finish 2014-03-28 → none |
| 69 | Refinación de Diagrama de Casos de Uso | 2014-02-28 → 2014-02-05 20:00 (-23d) | 2014-03-10 → 2014-02-26 18:00 (-12d) |  |  |  |  | baseline start 2014-03-17 → none; baseline finish 2014-03-20 → none |
| 70 | Refinación de Diagrama de Clases | 2014-03-10 → 2014-02-26 18:00 (-12d) | 2014-03-14 → 2014-02-27 20:00 (-15d) |  |  |  |  | baseline start 2014-03-21 → none; baseline finish 2014-03-24 → none |

| ID | Task | Start | Finish | Duration | Total float | Predecessors | Other |
| --- | --- | --- | --- | --- | --- | --- | --- |
| 71 | Refinación del Modelo de Datos | 2014-03-14 → 2014-02-27 20:00 (-15d) | 2014-03-17 → 2014-03-11 20:00 (-6d) |  |  |  | baseline start 2014-03-24 → none; baseline finish 2014-03-25 → none |
| 72 | Descripción de casos de uso mas importantes | 2014-03-17 → 2014-03-11 20:00 (-6d) | 2014-03-18 → 2014-03-13 18:00 (-5d) |  |  |  | baseline start 2014-03-25 → none; baseline finish 2014-03-28 → none |
| 73 | **Implementación** | 2014-03-20 → 2014-03-13 18:00 (-7d) | 2014-03-24 → 2014-03-19 18:00 (-5d) | 1d → 2d |  |  | baseline start 2014-03-28 → none; baseline finish 2014-04-03 → none |
| 74 | Definición de interfaces de comunicación entre plataformas | 2014-03-20 → 2014-03-13 18:00 (-7d) | 2014-03-24 → 2014-03-19 18:00 (-5d) |  |  |  | baseline start 2014-03-28 → none; baseline finish 2014-04-03 → none |
| 75 | **Gestión del Proyecto** | 2014-02-03 → 2014-03-19 18:00 (+44d) | 2014-02-04 → 2014-03-19 20:00 (+43d) | 0.75d → 0.5d |  | 56 → 73 | baseline start 2014-03-10 → none; baseline finish 2014-03-11 → none |
| 76 | Actualización de planes de prevención y contigencia para nuevos Riesgos | 2014-03-24 → 2014-03-19 18:00 (-5d) | 2014-03-24 → 2014-03-19 20:00 (-5d) |  |  |  | baseline start 2014-04-03 → none; baseline finish 2014-04-04 → none |
| 77 | **Gestión de Configuración** | 2014-05-12 → 2014-03-19 20:00 (-54d) | 2014-05-12 → 2014-03-19 21:00 (-54d) |  |  | 102 → 75 | baseline start 2014-05-22 → none; baseline finish 2014-05-23 → none |
| 78 | Revisión de versionado de documentos modificados | 2014-05-12 → 2014-03-19 20:00 (-54d) | 2014-05-12 → 2014-03-19 21:00 (-54d) |  |  | 106 → none | baseline start 2014-05-22 → none; baseline finish 2014-05-23 → none |
| 79 | Arquitectura del ciclo de vida | 2014-03-28 → 2014-03-19 21:00 (-9d) | 2014-03-28 → 2014-03-19 21:00 (-9d) |  |  |  | baseline start 2014-04-07 → none; baseline finish 2014-04-07 → none |
| 80 | **CONSTRUCCIÓN** | 2014-03-28 → 2014-03-20 17:00 (-8d) | 2014-09-11 → 2014-08-14 19:00 (-28d) | 37.25d → 63.5d |  |  | baseline start 2014-04-07 → none; baseline finish 2014-09-19 → none |
| 81 | **Iteración C1** | 2014-03-28 → 2014-03-20 17:00 (-8d) | 2014-04-14 → 2014-04-03 21:00 (-11d) | 4d → 7d |  |  | baseline start 2014-04-07 → none; baseline finish 2014-04-25 → none |
| 82 | **Análisis/Diseño** | 2014-03-28 → 2014-03-20 17:00 (-8d) | 2014-04-01 → 2014-03-25 21:00 (-7d) | 1d → 2d |  |  | baseline start 2014-04-07 → none; baseline finish 2014-04-11 → none |
| 83 | Refinación de Diagramas de Actividad | 2014-03-28 → 2014-03-20 17:00 (-8d) | 2014-03-31 → 2014-03-20 21:00 (-11d) |  |  |  | baseline start 2014-04-07 → none; baseline finish 2014-04-08 → none |
| 84 | Refinación de Diagramas de Secuencia | 2014-03-31 → 2014-03-25 17:00 (-6d) | 2014-04-01 → 2014-03-25 21:00 (-7d) |  |  |  | baseline start 2014-04-08 → none; baseline finish 2014-04-11 → none |
| 85 | **Implementación** | 2014-04-01 → 2014-03-26 17:00 (-6d) | 2014-04-10 → 2014-04-02 20:00 (-8d) | 1.88d → 3.75d |  |  | baseline start 2014-04-11 → none; baseline finish 2014-04-18 → none |
| 86 | Construcción de Base de Datos | 2014-04-01 → 2014-03-26 17:00 (-6d) | 2014-04-04 → 2014-03-27 21:00 (-8d) |  |  |  | baseline start 2014-04-11 → none; baseline finish 2014-04-15 → none |
| 87 | Definición de Interfaz de Usuario | 2014-04-07 → 2014-04-01 17:00 (-6d) | 2014-04-10 → 2014-04-02 20:00 (-8d) |  |  |  | baseline start 2014-04-15 → none; baseline finish 2014-04-18 → none |
| 88 | **Gestión del Proyecto** | 2014-04-10 → 2014-04-02 20:00 (-8d) | 2014-04-14 → 2014-04-03 20:00 (-11d) |  |  |  | baseline start 2014-04-21 → none; baseline finish 2014-04-24 → none |
| 89 | Actualización de Riesgos | 2014-04-10 → 2014-04-02 20:00 (-8d) | 2014-04-10 → 2014-04-02 21:00 (-8d) |  |  |  | baseline start 2014-04-21 → none; baseline finish 2014-04-21 → none |
| 90 | Revisión de planificacion (posible replanificación) | 2014-04-10 → 2014-04-03 17:00 (-7d) | 2014-04-11 → 2014-04-03 20:00 (-8d) |  |  |  | baseline start 2014-04-21 → none; baseline finish 2014-04-21 → none |
| 91 | **Gestión de Configuración** | 2014-02-06 → 2014-04-03 20:00 (+56d) | 2014-02-06 → 2014-04-03 21:00 (+56d) | 0.12d → 0.25d |  | 75 → 88 | baseline start 2014-03-11 → none; baseline finish 2014-03-13 → none |
| 92 | Versionado de prototipos | 2014-04-14 → 2014-04-03 20:00 (-11d) | 2014-04-14 → 2014-04-03 21:00 (-11d) |  |  |  | baseline start 2014-04-24 → none; baseline finish 2014-04-25 → none |
| 93 | Revisión de versionado de documentos modificados | 2014-02-06 → 2014-04-03 20:00 (+56d) | 2014-02-06 → 2014-04-03 21:00 (+56d) |  |  |  | resources Fernando Raviola; Lucas Ferrero → Oscar Salomón; Lucas Ferrero; baseline start 2014-03-11 → none; baseline finish 2014-03-13 → none |
| 94 | **Iteración C2** | 2014-04-14 → 2014-04-08 17:00 (-6d) | 2014-05-12 → 2014-04-29 21:00 (-13d) | 6.25d → 10d |  |  | baseline start 2014-04-25 → none; baseline finish 2014-05-23 → none |
| 95 | **Análisis/Diseño** | 2014-04-14 → 2014-04-08 17:00 (-6d) | 2014-04-21 → 2014-04-15 18:00 (-6d) | 1.62d → 3.25d |  |  | baseline start 2014-04-25 → none; baseline finish 2014-05-02 → none |
| 96 | Definición inicial del Modelo de componentes | 2014-04-14 → 2014-04-08 17:00 (-6d) | 2014-04-18 → 2014-04-10 18:00 (-8d) |  |  |  | baseline start 2014-04-25 → none; baseline finish 2014-04-29 → none |
| 97 | Refinación de Diagramas de clases (agregado de operaciones) | 2014-04-21 → 2014-04-10 18:00 (-11d) | 2014-04-21 → 2014-04-15 18:00 (-6d) |  |  |  | baseline start 2014-04-29 → none; baseline finish 2014-05-02 → none |
| 98 | **Implementación** | 2014-04-22 → 2014-04-15 18:00 (-7d) | 2014-05-05 → 2014-04-23 21:00 (-12d) | 3.12d → 4.75d |  |  | baseline start 2014-05-02 → none; baseline finish 2014-05-16 → none |
| 99 | Codificación de Interfaz de usuario (FrontEnd) | 2014-04-22 → 2014-04-15 18:00 (-7d) | 2014-05-05 → 2014-04-23 20:00 (-12d) | 25h → 18h | 0d → 0.25d |  | baseline start 2014-05-02 → none; baseline finish 2014-05-16 → none |
| 100 | Codificación de Interfaz de usuario (BackEnd) | 2014-04-22 → 2014-04-15 18:00 (-7d) | 2014-05-05 → 2014-04-23 21:00 (-12d) | 22h → 19h | 0.38d → 0d |  | baseline start 2014-05-02 → none; baseline finish 2014-05-13 → none |
| 101 | Codificación de Interfaz de usuario (Android) | 2014-04-22 → 2014-04-15 18:00 (-7d) | 2014-05-05 → 2014-04-23 21:00 (-12d) | 23h → 19h | 0.25d → 0d |  | baseline start 2014-05-02 → none; baseline finish 2014-05-15 → none |
| 102 | **Gestión del Proyecto** | 2014-05-06 → 2014-04-24 17:00 (-12d) | 2014-05-12 → 2014-04-29 19:00 (-13d) | 1.25d → 1.5d |  |  | baseline start 2014-05-16 → none; baseline finish 2014-05-22 → none |
| 103 | Actualización de Riesgos | 2014-05-06 → 2014-04-24 17:00 (-12d) | 2014-05-08 → 2014-04-24 20:00 (-14d) |  |  |  | baseline start 2014-05-16 → none; baseline finish 2014-05-16 → none |
| 104 | Revisión de planificacion (posible replanificación) | 2014-05-08 → 2014-04-24 20:00 (-14d) | 2014-05-09 → 2014-04-29 19:00 (-10d) |  |  |  | baseline start 2014-05-19 → none; baseline finish 2014-05-19 → none |
| 105 | **Gestión de Configuración** | 2014-04-14 → 2014-04-29 19:00 (+15d) | 2014-04-14 → 2014-04-29 21:00 (+15d) | 0.12d → 0.5d |  | 88 → 102 | baseline start 2014-04-24 → none; baseline finish 2014-04-25 → none |
| 106 | Versionado de interfaz de usuario | 2014-05-12 → 2014-04-29 19:00 (-13d) | 2014-05-12 → 2014-04-29 20:00 (-13d) |  |  |  | baseline start 2014-05-22 → none; baseline finish 2014-05-22 → none |
| 107 | Revisión de versionado de documentos modificados | 2014-04-14 → 2014-04-29 20:00 (+15d) | 2014-04-14 → 2014-04-29 21:00 (+15d) |  |  | none → 106 | resources Lucas Ferrero; Oscar Salomón → Fernando Raviola; Lucas Ferrero; Oscar Salomón; baseline start 2014-04-24 → none; baseline finish 2014-04-25 → none |
| 108 | **Iteración C3** | 2014-05-12 → 2014-04-30 17:00 (-12d) | 2014-06-03 → 2014-05-14 21:00 (-20d) | 4.88d → 7d |  |  | baseline start 2014-05-23 → none; baseline finish 2014-06-13 → none |
| 109 | **Análisis/Diseño** | 2014-05-12 → 2014-04-30 17:00 (-12d) | 2014-05-13 → 2014-04-30 20:00 (-13d) | 0.38d → 0.75d |  |  | baseline start 2014-05-23 → none; baseline finish 2014-05-23 → none |
| 110 | Refinación del Modelo de componentes | 2014-05-12 → 2014-04-30 17:00 (-12d) | 2014-05-13 → 2014-04-30 20:00 (-13d) |  |  |  | baseline start 2014-05-23 → none; baseline finish 2014-05-23 → none |
| 111 | **Implementación** | 2014-05-15 → 2014-04-30 20:00 (-15d) | 2014-05-30 → 2014-05-13 21:00 (-17d) | 3.5d → 5.25d |  |  | baseline start 2014-05-23 → none; baseline finish 2014-06-09 → none |
| 112 | Codificacion de logeo de usuario (FrontEnd) | 2014-05-15 → 2014-04-30 20:00 (-15d) | 2014-05-27 → 2014-05-13 21:00 (-14d) | 24h → 21h | 0.5d → 0d |  | baseline start 2014-05-23 → none; baseline finish 2014-06-06 → none |
| 113 | Codificación de seguridad [Roles y Usuario] (BackEnd) | 2014-05-15 → 2014-04-30 20:00 (-15d) | 2014-05-27 → 2014-05-13 20:00 (-14d) | 24h → 20h | 0.5d → 0.25d |  | baseline start 2014-05-23 → none; baseline finish 2014-06-06 → none |
| 114 | Codificación de Local Storage (Android) | 2014-05-15 → 2014-04-30 20:00 (-15d) | 2014-05-30 → 2014-05-13 20:00 (-17d) | 28h → 20h | 0d → 0.25d |  | baseline start 2014-05-23 → none; baseline finish 2014-06-09 → none |
| 115 | **Gestión del Proyecto** | 2014-05-30 → 2014-05-14 17:00 (-16d) | 2014-06-02 → 2014-05-14 20:00 (-19d) | 0.88d → 0.75d |  |  | baseline start 2014-06-09 → none; baseline finish 2014-06-13 → none |
| 116 | Actualización de Riesgos | 2014-05-30 → 2014-05-14 17:00 (-16d) | 2014-05-30 → 2014-05-14 20:00 (-16d) |  |  |  | baseline start 2014-06-09 → none; baseline finish 2014-06-10 → none |
| 117 | Revisión de planificacion (posible replanificación) | 2014-05-30 → 2014-05-14 17:00 (-16d) | 2014-05-30 → 2014-05-14 20:00 (-16d) |  |  |  | resources Fernando Raviola; Oscar Salomón → Oscar Salomón; Fernando Raviola; baseline start 2014-06-09 → none; baseline finish 2014-06-10 → none |
| 118 | **Gestión de Configuración** | 2014-06-03 → 2014-05-14 20:00 (-20d) | 2014-06-03 → 2014-05-14 21:00 (-20d) | 0.12d → 0.25d |  |  | baseline start 2014-06-13 → none; baseline finish 2014-06-13 → none |
| 119 | Versionado de todos los proyectos | 2014-06-03 → 2014-05-14 20:00 (-20d) | 2014-06-03 → 2014-05-14 21:00 (-20d) |  |  |  | baseline start 2014-06-13 → none; baseline finish 2014-06-13 → none |
| 120 | Revisión de versionado de documentos modificados | 2014-06-03 → 2014-05-14 20:00 (-20d) | 2014-06-03 → 2014-05-14 21:00 (-20d) |  |  |  | resources Fernando Raviola; Lucas Ferrero → Lucas Ferrero; Fernando Raviola; baseline start 2014-06-13 → none; baseline finish 2014-06-13 → none |
| 121 | **Iteración C4** | 2014-06-03 → 2014-05-15 17:00 (-19d) | 2014-06-30 → 2014-06-04 20:00 (-26d) | 6.12d → 8.75d |  |  | baseline start 2014-06-13 → none; baseline finish 2014-07-11 → none |
| 122 | **Análisis/Diseño** | 2014-06-03 → 2014-05-15 17:00 (-19d) | 2014-06-06 → 2014-05-15 21:00 (-22d) | 0.5d → 1d |  |  | baseline start 2014-06-13 → none; baseline finish 2014-06-16 → none |
| 123 | Refinación del Modelo de Datos | 2014-06-03 → 2014-05-15 17:00 (-19d) | 2014-06-06 → 2014-05-15 21:00 (-22d) |  |  |  | baseline start 2014-06-13 → none; baseline finish 2014-06-16 → none |
| 124 | **Implementación** | 2014-06-06 → 2014-05-20 17:00 (-17d) | 2014-06-27 → 2014-06-03 21:00 (-24d) | 4.75d → 7d |  |  | baseline start 2014-06-16 → none; baseline finish 2014-07-07 → none |
| 125 | Codificación de Gestión de reservas online (FrontEnd) | 2014-06-06 → 2014-05-20 17:00 (-17d) | 2014-06-26 → 2014-06-03 21:00 (-23d) | 36h → 28h | 0.25d → 0d |  | baseline start 2014-06-16 → none; baseline finish 2014-07-07 → none |
| 126 | Codificación de ABM principales (BackEnd) | 2014-06-06 → 2014-05-20 17:00 (-17d) | 2014-06-27 → 2014-06-03 19:00 (-24d) | 38h → 26h | 0d → 0.5d |  | baseline start 2014-06-16 → none; baseline finish 2014-07-07 → none |
| 127 | Codificación de ABM principales (Android) | 2014-06-06 → 2014-05-20 17:00 (-17d) | 2014-06-23 → 2014-06-03 21:00 (-20d) | 32h → 28h | 0.75d → 0d |  | baseline start 2014-06-16 → none; baseline finish 2014-07-04 → none |
| 128 | **Gestión del Proyecto** | 2014-06-27 → 2014-06-04 17:00 (-23d) | 2014-06-30 → 2014-06-04 19:00 (-26d) | 0.75d → 0.5d |  |  | baseline start 2014-07-07 → none; baseline finish 2014-07-10 → none |
| 129 | Actualización de Riesgos | 2014-06-27 → 2014-06-04 17:00 (-23d) | 2014-06-27 → 2014-06-04 19:00 (-23d) |  |  |  | baseline start 2014-07-07 → none; baseline finish 2014-07-08 → none |
| 130 | Revisión de planificacion (posible replanificación) | 2014-06-27 → 2014-06-04 17:00 (-23d) | 2014-06-27 → 2014-06-04 18:00 (-23d) |  | 0.12d → 0.25d |  | baseline start 2014-07-07 → none; baseline finish 2014-07-07 → none |
| 131 | **Gestión de Configuración** | 2014-06-30 → 2014-06-04 19:00 (-26d) | 2014-06-30 → 2014-06-04 20:00 (-26d) | 0.12d → 0.25d |  |  | baseline start 2014-07-11 → none; baseline finish 2014-07-11 → none |
| 132 | Versionado de todos los proyectos | 2014-06-30 → 2014-06-04 19:00 (-26d) | 2014-06-30 → 2014-06-04 20:00 (-26d) |  |  |  | baseline start 2014-07-11 → none; baseline finish 2014-07-11 → none |
| 133 | Revisión de versionado de documentos modificados | 2014-06-30 → 2014-06-04 19:00 (-26d) | 2014-06-30 → 2014-06-04 20:00 (-26d) |  |  |  | resources Fernando Raviola; Oscar Salomón → Oscar Salomón; Fernando Raviola; baseline start 2014-07-11 → none; baseline finish 2014-07-11 → none |
| 134 | **Iteración C5** | 2014-07-01 → 2014-06-04 20:00 (-27d) | 2014-08-05 → 2014-07-10 20:00 (-26d) | 8.12d → 16d |  |  | baseline start 2014-07-11 → none; baseline finish 2014-08-15 → none |
| 135 | **Análisis/Diseño** | 2014-07-01 → 2014-06-04 20:00 (-27d) | 2014-07-04 → 2014-06-10 18:00 (-24d) | 0.75d → 1.5d |  |  | baseline start 2014-07-11 → none; baseline finish 2014-07-14 → none |
| 136 | Revisión de Diagramas y Modelos de Análisis/Diseño | 2014-07-01 → 2014-06-04 20:00 (-27d) | 2014-07-04 → 2014-06-10 18:00 (-24d) |  |  |  | baseline start 2014-07-11 → none; baseline finish 2014-07-14 → none |
| 137 | **Implementación** | 2014-07-04 → 2014-06-10 18:00 (-24d) | 2014-07-28 → 2014-07-03 19:00 (-25d) | 5.25d → 11.25d |  |  | baseline start 2014-07-14 → none; baseline finish 2014-08-07 → none |
| 138 | Codificación de Calculos de tiempos de espera (FrontEnd) | 2014-07-04 → 2014-06-10 18:00 (-24d) | 2014-07-28 → 2014-07-02 21:00 (-26d) | 42h → 43h | 0d → 0.5d |  | baseline start 2014-07-14 → none; baseline finish 2014-08-07 → none |
| 139 | Codificación de Funciones básicas (BackEnd) | 2014-07-04 → 2014-06-10 18:00 (-24d) | 2014-07-28 → 2014-07-02 21:00 (-26d) | 41h → 43h | 0.12d → 0.5d |  | baseline start 2014-07-14 → none; baseline finish 2014-08-05 → none |
| 140 | Codificación de visualizador de ordenes (Android) | 2014-07-04 → 2014-06-10 18:00 (-24d) | 2014-07-24 → 2014-07-03 19:00 (-21d) | 35h → 45h | 0.88d → 0d |  | baseline start 2014-07-14 → none; baseline finish 2014-08-04 → none |

| ID | Task | Start | Finish | Duration | Total float | Other |
| --- | --- | --- | --- | --- | --- | --- |
| 141 | **Pruebas** | 2014-07-28 → 2014-07-03 19:00 (-25d) | 2014-08-01 → 2014-07-09 21:00 (-23d) | 1.25d → 2.5d |  | baseline start 2014-08-07 → none; baseline finish 2014-08-12 → none |
| 142 | Pruebas de Funcionalidad (para las 3 aplicaciones) | 2014-07-28 → 2014-07-03 19:00 (-25d) | 2014-08-01 → 2014-07-09 21:00 (-23d) |  |  | baseline start 2014-08-07 → none; baseline finish 2014-08-12 → none |
| 143 | **Gestión del Proyecto** | 2014-08-01 → 2014-07-10 17:00 (-22d) | 2014-08-05 → 2014-07-10 19:00 (-26d) | 0.75d → 0.5d |  | baseline start 2014-08-12 → none; baseline finish 2014-08-15 → none |
| 144 | Actualización de Riesgos | 2014-08-01 → 2014-07-10 17:00 (-22d) | 2014-08-04 → 2014-07-10 19:00 (-25d) |  |  | baseline start 2014-08-12 → none; baseline finish 2014-08-14 → none |
| 145 | Revisión de planificacion (posible replanificación) | 2014-08-01 → 2014-07-10 17:00 (-22d) | 2014-08-04 → 2014-07-10 18:00 (-25d) |  | 0.12d → 0.25d | resources Fernando Raviola; Lucas Ferrero → Lucas Ferrero; Fernando Raviola; baseline start 2014-08-12 → none; baseline finish 2014-08-12 → none |
| 146 | **Gestión de Configuración** | 2014-08-05 → 2014-07-10 19:00 (-26d) | 2014-08-05 → 2014-07-10 20:00 (-26d) | 0.12d → 0.25d |  | baseline start 2014-08-15 → none; baseline finish 2014-08-15 → none |
| 147 | Versionado de todos los proyectos | 2014-08-05 → 2014-07-10 19:00 (-26d) | 2014-08-05 → 2014-07-10 20:00 (-26d) |  |  | baseline start 2014-08-15 → none; baseline finish 2014-08-15 → none |
| 148 | Revisión de versionado de documentos modificados | 2014-08-05 → 2014-07-10 19:00 (-26d) | 2014-08-05 → 2014-07-10 20:00 (-26d) |  |  | resources Lucas Ferrero; Oscar Salomón → Oscar Salomón; Lucas Ferrero; baseline start 2014-08-15 → none; baseline finish 2014-08-15 → none |
| 149 | **Iteración C6** | 2014-08-07 → 2014-07-10 20:00 (-28d) | 2014-09-11 → 2014-08-14 19:00 (-28d) | 7.88d → 14.75d |  | baseline start 2014-08-15 → none; baseline finish 2014-09-19 → none |
| 150 | **Análisis/Diseño** | 2014-08-07 → 2014-07-10 20:00 (-28d) | 2014-08-11 → 2014-07-16 20:00 (-26d) | 1d → 2d |  | baseline start 2014-08-15 → none; baseline finish 2014-08-21 → none |
| 151 | Revisión de Diagramas y Modelos de Análisis/Diseño | 2014-08-07 → 2014-07-10 20:00 (-28d) | 2014-08-11 → 2014-07-16 20:00 (-26d) |  |  | baseline start 2014-08-15 → none; baseline finish 2014-08-21 → none |
| 152 | **Implementación** | 2014-08-11 → 2014-07-16 20:00 (-26d) | 2014-09-01 → 2014-08-07 18:00 (-25d) | 4.75d → 9.5d |  | baseline start 2014-08-21 → none; baseline finish 2014-09-11 → none |
| 153 | Codificación de Calculos de tiempos de espera (FrontEnd) | 2014-08-11 → 2014-07-16 20:00 (-26d) | 2014-09-01 → 2014-08-07 18:00 (-25d) |  |  | baseline start 2014-08-21 → none; baseline finish 2014-09-11 → none |
| 154 | Codificación de visualizador de Ordenes (BackEnd) | 2014-08-11 → 2014-07-16 20:00 (-26d) | 2014-09-01 → 2014-08-06 20:00 (-26d) |  | 0.25d → 0.5d | baseline start 2014-08-21 → none; baseline finish 2014-09-09 → none |
| 155 | Codificación de personalización gráfica (Android) | 2014-08-11 → 2014-07-16 20:00 (-26d) | 2014-09-01 → 2014-08-07 18:00 (-25d) |  |  | baseline start 2014-08-21 → none; baseline finish 2014-09-11 → none |
| 156 | **Pruebas** | 2014-09-01 → 2014-08-07 18:00 (-25d) | 2014-09-05 → 2014-08-13 20:00 (-23d) | 1.25d → 2.5d |  | baseline start 2014-09-11 → none; baseline finish 2014-09-16 → none |
| 157 | Pruebas de comunicación de interfaces y pruebas de funcionalidad | 2014-09-01 → 2014-08-07 18:00 (-25d) | 2014-09-05 → 2014-08-13 20:00 (-23d) |  |  | baseline start 2014-09-11 → none; baseline finish 2014-09-16 → none |
| 158 | **Gestión del Proyecto** | 2014-09-08 → 2014-08-13 20:00 (-26d) | 2014-09-09 → 2014-08-13 21:00 (-27d) | 0.62d → 0.25d |  | baseline start 2014-09-16 → none; baseline finish 2014-09-19 → none |
| 159 | Actualización de Riesgos | 2014-09-08 → 2014-08-13 20:00 (-26d) | 2014-09-08 → 2014-08-13 21:00 (-26d) |  |  | baseline start 2014-09-16 → none; baseline finish 2014-09-16 → none |
| 160 | Revisión de planificacion (posible replanificación) | 2014-09-08 → 2014-08-13 20:00 (-26d) | 2014-09-08 → 2014-08-13 21:00 (-26d) |  |  | baseline start 2014-09-16 → none; baseline finish 2014-09-16 → none |
| 161 | **Gestión de Configuración** | 2014-09-09 → 2014-08-14 17:00 (-26d) | 2014-09-11 → 2014-08-14 19:00 (-28d) | 0.25d → 0.5d |  | baseline start 2014-09-19 → none; baseline finish 2014-09-19 → none |
| 162 | Versionado de todos los proyectos | 2014-09-09 → 2014-08-14 17:00 (-26d) | 2014-09-11 → 2014-08-14 19:00 (-28d) |  |  | baseline start 2014-09-19 → none; baseline finish 2014-09-19 → none |
| 163 | Revisión de versionado de documentos modificados | 2014-09-09 → 2014-08-14 17:00 (-26d) | 2014-09-11 → 2014-08-14 19:00 (-28d) |  |  | resources Fernando Raviola; Lucas Ferrero → Lucas Ferrero; Fernando Raviola; baseline start 2014-09-19 → none; baseline finish 2014-09-19 → none |
| 164 | Capacidad Operacional Inicial | 2014-09-11 → 2014-08-14 19:00 (-28d) | 2014-09-11 → 2014-08-14 19:00 (-28d) |  |  | baseline start 2014-09-19 → none; baseline finish 2014-09-19 → none |
| 165 | **TRANSICIÓN** | 2014-09-11 → 2014-08-14 19:00 (-28d) | 2014-10-17 → 2014-09-23 18:00 (-24d) | 8.38d → 15.75d |  | baseline start 2014-09-22 → none; baseline finish 2014-10-28 → none |
| 166 | **Iteración T1** | 2014-09-11 → 2014-08-14 19:00 (-28d) | 2014-10-17 → 2014-09-23 18:00 (-24d) | 8.38d → 15.75d |  | baseline start 2014-09-22 → none; baseline finish 2014-10-28 → none |
| 167 | **Implementación** | 2014-09-11 → 2014-08-14 19:00 (-28d) | 2014-09-22 → 2014-08-27 19:00 (-26d) | 2.5d → 5d |  | baseline start 2014-09-22 → none; baseline finish 2014-10-02 → none |
| 168 | Elaboracion de documentación para usuarios y videos tutoriales | 2014-09-11 → 2014-08-14 19:00 (-28d) | 2014-09-22 → 2014-08-27 19:00 (-26d) |  |  | baseline start 2014-09-22 → none; baseline finish 2014-10-02 → none |
| 169 | **Despliegue** | 2014-09-22 → 2014-08-27 19:00 (-26d) | 2014-10-06 → 2014-09-10 19:00 (-26d) | 3d → 6d |  | baseline start 2014-10-02 → none; baseline finish 2014-10-14 → none |
| 170 | Modelo de despliegue | 2014-09-22 → 2014-08-27 19:00 (-26d) | 2014-09-26 → 2014-09-02 21:00 (-24d) |  |  | baseline start 2014-10-02 → none; baseline finish 2014-10-07 → none |
| 171 | Integración y puesta a punto del sistema | 2014-09-26 → 2014-09-03 17:00 (-23d) | 2014-10-06 → 2014-09-10 19:00 (-26d) |  |  | baseline start 2014-10-07 → none; baseline finish 2014-10-14 → none |
| 172 | **Gestión del Proyecto** | 2014-10-06 → 2014-09-10 19:00 (-26d) | 2014-10-17 → 2014-09-18 20:00 (-29d) | 2.62d → 4.25d |  | baseline start 2014-10-16 → none; baseline finish 2014-10-27 → none |
| 173 | Actualización de Riesgos | 2014-10-06 → 2014-09-10 19:00 (-26d) | 2014-10-06 → 2014-09-10 20:00 (-26d) |  |  | baseline start 2014-10-16 → none; baseline finish 2014-10-16 → none |
| 174 | Revisión de planificacion (posible replanificación) | 2014-10-06 → 2014-09-10 20:00 (-26d) | 2014-10-06 → 2014-09-10 21:00 (-26d) |  |  | baseline start 2014-10-16 → none; baseline finish 2014-10-16 → none |
| 175 | Análisis de resultados del proyecto | 2014-10-06 → 2014-09-11 17:00 (-25d) | 2014-10-14 → 2014-09-18 20:00 (-26d) |  |  | baseline start 2014-10-17 → none; baseline finish 2014-10-24 → none |
| 176 | **Gestión de Configuración** | 2014-10-17 → 2014-09-18 20:00 (-29d) | 2014-10-17 → 2014-09-23 18:00 (-24d) | 0.25d → 0.5d |  | baseline start 2014-10-27 → none; baseline finish 2014-10-28 → none |
| 177 | Versionado de todos los proyectos | 2014-10-17 → 2014-09-18 20:00 (-29d) | 2014-10-17 → 2014-09-23 18:00 (-24d) |  |  | baseline start 2014-10-27 → none; baseline finish 2014-10-28 → none |
| 178 | Revisión de versionado de documentos modificados | 2014-10-17 → 2014-09-18 20:00 (-29d) | 2014-10-17 → 2014-09-23 18:00 (-24d) |  |  | baseline start 2014-10-27 → none; baseline finish 2014-10-28 → none |
| 179 | Lanzamiento de producto | 2014-10-17 → 2014-09-23 18:00 (-24d) | 2014-10-17 → 2014-09-23 18:00 (-24d) |  |  | baseline start 2014-10-28 → none; baseline finish 2014-10-28 → none |
| 180 | Fin de Proyecto | 2014-10-17 → 2014-09-23 18:00 (-24d) | 2014-10-17 → 2014-09-23 18:00 (-24d) |  |  | baseline start 2014-10-28 → none; baseline finish 2014-10-28 → none |

## Version 5 (data date 2013-07-29, saved 2014-03-12, file Linea Base.mpp)

Note of the change: Creacion de todos los reportes

Last finish stays 2014-09-23.

Added:

| ID | Task | Duration | Start | Finish | Constraint |
| --- | --- | --- | --- | --- | --- |
| 181 | **Informe de avance mensual** | 58d | 2013-08-28 09:00 | 2014-08-27 13:00 |  |
| 182 | Informe de avance mensual 1 | 4h | 2013-08-28 09:00 | 2013-08-28 13:00 | start no earlier than 2013-08-28 09:00 |
| 183 | Informe de avance mensual 2 | 4h | 2013-09-25 09:00 | 2013-09-25 13:00 | start no earlier than 2013-09-25 09:00 |
| 184 | Informe de avance mensual 3 | 4h | 2013-10-30 09:00 | 2013-10-30 13:00 | start no earlier than 2013-10-30 09:00 |
| 185 | Informe de avance mensual 4 | 4h | 2013-11-27 09:00 | 2013-11-27 13:00 | start no earlier than 2013-11-27 09:00 |
| 186 | Informe de avance mensual 5 | 4h | 2013-12-25 09:00 | 2013-12-25 13:00 | start no earlier than 2013-12-25 09:00 |
| 187 | Informe de avance mensual 6 | 4h | 2014-01-29 09:00 | 2014-01-29 13:00 | start no earlier than 2014-01-29 09:00 |
| 188 | Informe de avance mensual 7 | 4h | 2014-02-26 09:00 | 2014-02-26 13:00 | start no earlier than 2014-02-26 09:00 |
| 189 | Informe de avance mensual 8 | 4h | 2014-03-26 09:00 | 2014-03-26 13:00 | start no earlier than 2014-03-26 09:00 |
| 190 | Informe de avance mensual 9 | 4h | 2014-04-30 09:00 | 2014-04-30 13:00 | start no earlier than 2014-04-30 09:00 |
| 191 | Informe de avance mensual 10 | 4h | 2014-05-28 09:00 | 2014-05-28 13:00 | start no earlier than 2014-05-28 09:00 |
| 192 | Informe de avance mensual 11 | 4h | 2014-06-25 09:00 | 2014-06-25 13:00 | start no earlier than 2014-06-25 09:00 |
| 193 | Informe de avance mensual 12 | 4h | 2014-07-30 09:00 | 2014-07-30 13:00 | start no earlier than 2014-07-30 09:00 |
| 194 | Informe de avance mensual 13 | 4h | 2014-08-27 09:00 | 2014-08-27 13:00 | start no earlier than 2014-08-27 09:00 |

Changed:

| ID | Task | Duration | Total float | Other |
| --- | --- | --- | --- | --- |
| 1 | **RestApp** | 138.25d → 69.12d |  | baseline start none → 2013-07-30 17:00; baseline finish none → 2014-09-23 18:00 |
| 2 | **INICIO** | 21d → 10.5d |  | baseline start none → 2013-07-30 17:00; baseline finish none → 2013-09-25 21:00 |
| 3 | **Iteración I1** | 21d → 10.5d |  | baseline start none → 2013-07-30 17:00; baseline finish none → 2013-09-25 21:00 |
| 4 | **Modelo de Negocio** | 2.5d → 1.25d |  | baseline start none → 2013-07-30 17:00; baseline finish none → 2013-08-01 19:00 |
| 5 | Analisis del dominio del problema |  |  | baseline start none → 2013-07-30 17:00; baseline finish none → 2013-07-30 21:00 |
| 6 | Confección de entrevista |  |  | baseline start none → 2013-07-31 17:00; baseline finish none → 2013-07-31 19:00 |
| 7 | Realización de entrevista |  |  | baseline start none → 2013-07-31 19:00; baseline finish none → 2013-07-31 21:00 |
| 8 | Analisis de Entrevista |  |  | baseline start none → 2013-08-01 17:00; baseline finish none → 2013-08-01 19:00 |
| 9 | **Requerimientos** | 4.5d → 2.25d |  | baseline start none → 2013-08-01 19:00; baseline finish none → 2013-08-13 21:00 |
| 10 | Definición de caracteristicas y limitaciones |  |  | baseline start none → 2013-08-01 19:00; baseline finish none → 2013-08-07 19:00 |
| 11 | Definición de Requerimientos Funcionales y No Funcionales |  |  | baseline start none → 2013-08-07 19:00; baseline finish none → 2013-08-13 21:00 |
| 12 | **Análisis/Diseño** | 2d → 1d |  | baseline start none → 2013-08-14 17:00; baseline finish none → 2013-08-15 21:00 |
| 13 | Definición inicial del Modelo de Casos de Usos |  |  | baseline start none → 2013-08-14 17:00; baseline finish none → 2013-08-15 21:00 |
| 14 | **Gestión del Proyecto** | 9d → 4.5d |  | baseline start none → 2013-08-20 17:00; baseline finish none → 2013-09-18 21:00 |
| 15 | Estudio de prefactibilidad |  |  | baseline start none → 2013-08-20 17:00; baseline finish none → 2013-08-27 21:00 |
| 16 | Planificación |  |  | baseline start none → 2013-08-28 17:00; baseline finish none → 2013-08-29 21:00 |
| 17 | Gestión de riesgos (definición) |  |  | baseline start none → 2013-09-03 17:00; baseline finish none → 2013-09-04 21:00 |
| 18 | Gestión de configuración (definición) |  |  | baseline start none → 2013-09-05 17:00; baseline finish none → 2013-09-17 21:00 |
| 19 | Presentación Inicial | 1d → 0.5d |  | baseline start none → 2013-09-18 17:00; baseline finish none → 2013-09-18 21:00 |
| 20 | **Gestión de configuración** | 2d → 1d |  | baseline start none → 2013-09-19 17:00; baseline finish none → 2013-09-24 21:00 |
| 21 | Preparación del ambiente de versionado |  |  | baseline start none → 2013-09-19 17:00; baseline finish none → 2013-09-24 21:00 |
| 22 | **Ambiente** | 1d → 0.5d |  | baseline start none → 2013-09-25 17:00; baseline finish none → 2013-09-25 21:00 |
| 23 | Identificación y evaluación de herramientas |  |  | baseline start none → 2013-09-25 17:00; baseline finish none → 2013-09-25 21:00 |
| 24 | Objetivos del ciclo de vida |  |  | baseline start none → 2013-09-25 21:00; baseline finish none → 2013-09-25 21:00 |
| 25 | **ELABORACIÓN** | 38d → 19d |  | baseline start none → 2013-09-26 17:00; baseline finish none → 2014-03-19 21:00 |
| 26 | **Iteración E1** | 14.25d → 7.12d |  | baseline start none → 2013-09-26 17:00; baseline finish none → 2013-11-06 18:00 |
| 27 | **Modelo de Negocio** | 1.75d → 0.88d |  | baseline start none → 2013-09-26 17:00; baseline finish none → 2013-10-01 20:00 |
| 28 | Entendimiento del Modelo de Negocio |  |  | baseline start none → 2013-09-26 17:00; baseline finish none → 2013-10-01 20:00 |
| 29 | **Requerimientos** | 3d → 1.5d |  | baseline start none → 2013-10-01 20:00; baseline finish none → 2013-10-08 20:00 |
| 30 | Definicón de nuevos requerimientos |  |  | baseline start none → 2013-10-01 20:00; baseline finish none → 2013-10-02 18:00 |
| 31 | Documentación de requerimientos según estandar |  |  | baseline start none → 2013-10-02 18:00; baseline finish none → 2013-10-03 19:00 |
| 32 | Jerarquización de requerimientos |  |  | baseline start none → 2013-10-03 19:00; baseline finish none → 2013-10-08 20:00 |
| 33 | **Análisis/Diseño** | 3d → 1.5d |  | baseline start none → 2013-10-08 20:00; baseline finish none → 2013-10-15 20:00 |
| 34 | Refinación de Modelo de Casos de Usos |  |  | baseline start none → 2013-10-08 20:00; baseline finish none → 2013-10-09 18:00 |
| 35 | Definición preliminar de Diagrama de clases |  |  | baseline start none → 2013-10-09 18:00; baseline finish none → 2013-10-15 20:00 |
| 36 | **Implementación** | 5d → 2.5d |  | baseline start none → 2013-10-15 20:00; baseline finish none → 2013-10-31 20:00 |
| 37 | Desarrollo prototipos independientes de prueba |  |  | baseline start none → 2013-10-15 20:00; baseline finish none → 2013-10-31 20:00 |
| 38 | **Gestión del Proyecto** | 0.5d → 0.25d |  | baseline start none → 2013-10-31 20:00; baseline finish none → 2013-11-05 18:00 |
| 39 | Actualización y priorización de Riesgos |  |  | baseline start none → 2013-10-31 20:00; baseline finish none → 2013-10-31 21:00 |
| 40 | Refinación del Plan de Proyecto |  |  | baseline start none → 2013-11-05 17:00; baseline finish none → 2013-11-05 18:00 |
| 41 | **Gestión de Configuración** | 0.25d → 0.12d |  | baseline start none → 2013-11-05 18:00; baseline finish none → 2013-11-05 19:00 |
| 42 | Revisión de versionado de documentos modificados |  |  | baseline start none → 2013-11-05 18:00; baseline finish none → 2013-11-05 19:00 |
| 43 | **Ambiente** | 0.75d → 0.38d |  | baseline start none → 2013-11-05 19:00; baseline finish none → 2013-11-06 18:00 |
| 44 | Identificación de Tecnología |  |  | baseline start none → 2013-11-05 19:00; baseline finish none → 2013-11-06 18:00 |
| 45 | **Iteración E2** | 14.75d → 7.38d |  | baseline start none → 2013-11-06 18:00; baseline finish none → 2014-02-04 21:00 |
| 46 | **Modelo de Negocio** | 1.25d → 0.62d |  | baseline start none → 2013-11-06 18:00; baseline finish none → 2013-11-07 19:00 |
| 47 | Refinación del Modelo de Negocio |  |  | baseline start none → 2013-11-06 18:00; baseline finish none → 2013-11-07 19:00 |
| 48 | **Requerimientos** | 1d → 0.5d |  | baseline start none → 2013-11-07 19:00; baseline finish none → 2013-11-12 19:00 |
| 49 | Validación de requerimientos |  | 0.25d → 0.12d | baseline start none → 2013-11-07 19:00; baseline finish none → 2013-11-12 18:00 |
| 50 | Mapeo de Requerimientos a Casos de Uso |  |  | baseline start none → 2013-11-07 19:00; baseline finish none → 2013-11-12 19:00 |
| 51 | **Análisis/Diseño** | 9d → 4.5d |  | baseline start none → 2013-11-12 19:00; baseline finish none → 2013-12-10 19:00 |
| 52 | Definición Inicial de diagrama de Clases |  |  | baseline start none → 2013-11-12 19:00; baseline finish none → 2013-11-14 21:00 |
| 53 | Definición inicial del Modelo de Datos |  |  | baseline start none → 2013-11-19 17:00; baseline finish none → 2013-11-20 21:00 |
| 54 | Definición inicial de Diagrama de Actividades |  |  | baseline start none → 2013-11-21 17:00; baseline finish none → 2013-11-26 21:00 |
| 55 | Definición inicial de Diagramas de Secuencia |  |  | baseline start none → 2013-11-27 17:00; baseline finish none → 2013-12-10 19:00 |
| 56 | **Implementación** | 1.5d → 0.75d |  | baseline start none → 2013-12-10 19:00; baseline finish none → 2013-12-11 21:00 |
| 57 | Mejoramientos de prototipos |  |  | baseline start none → 2013-12-10 19:00; baseline finish none → 2013-12-11 21:00 |
| 58 | **Gestión del Proyecto** | 0.5d → 0.25d |  | baseline start none → 2013-12-12 17:00; baseline finish none → 2013-12-12 19:00 |
| 59 | Validación del Plan de proyecto |  |  | baseline start none → 2013-12-12 17:00; baseline finish none → 2013-12-12 19:00 |
| 60 | **Gestión de Configuración** | 0.25d → 0.12d |  | baseline start none → 2013-12-12 19:00; baseline finish none → 2013-12-12 20:00 |
| 61 | Versionado de los prototipos |  |  | baseline start none → 2013-12-12 19:00; baseline finish none → 2013-12-12 20:00 |
| 62 | Revisión de versionado de documentos modificados |  |  | baseline start none → 2013-12-12 19:00; baseline finish none → 2013-12-12 20:00 |
| 63 | **Ambiente** | 1.25d → 0.62d |  | baseline start none → 2013-12-12 20:00; baseline finish none → 2014-02-04 21:00 |
| 64 | Preparación del ambiente de desarrollo |  |  | baseline start none → 2013-12-12 20:00; baseline finish none → 2014-02-04 21:00 |
| 65 | **Iteración E3** | 9d → 4.5d |  | baseline start none → 2014-02-05 17:00; baseline finish none → 2014-03-19 21:00 |
| 66 | **Requerimientos** | 0.75d → 0.38d |  | baseline start none → 2014-02-05 17:00; baseline finish none → 2014-02-05 20:00 |
| 67 | Validacion de Mapeo de Requerimientos a Casos de Uso |  |  | baseline start none → 2014-02-05 17:00; baseline finish none → 2014-02-05 20:00 |
| 68 | **Análisis/Diseño** | 5.5d → 2.75d |  | baseline start none → 2014-02-05 20:00; baseline finish none → 2014-03-13 18:00 |
| 69 | Refinación de Diagrama de Casos de Uso |  |  | baseline start none → 2014-02-05 20:00; baseline finish none → 2014-02-26 18:00 |
| 70 | Refinación de Diagrama de Clases |  |  | baseline start none → 2014-02-26 18:00; baseline finish none → 2014-02-27 20:00 |

| ID | Task | Duration | Total float | Other |
| --- | --- | --- | --- | --- |
| 71 | Refinación del Modelo de Datos |  |  | baseline start none → 2014-02-27 20:00; baseline finish none → 2014-03-11 20:00 |
| 72 | Descripción de casos de uso mas importantes |  |  | baseline start none → 2014-03-11 20:00; baseline finish none → 2014-03-13 18:00 |
| 73 | **Implementación** | 2d → 1d |  | baseline start none → 2014-03-13 18:00; baseline finish none → 2014-03-19 18:00 |
| 74 | Definición de interfaces de comunicación entre plataformas |  |  | baseline start none → 2014-03-13 18:00; baseline finish none → 2014-03-19 18:00 |
| 75 | **Gestión del Proyecto** | 0.5d → 0.25d |  | baseline start none → 2014-03-19 18:00; baseline finish none → 2014-03-19 20:00 |
| 76 | Actualización de planes de prevención y contigencia para nuevos Riesgos |  |  | baseline start none → 2014-03-19 18:00; baseline finish none → 2014-03-19 20:00 |
| 77 | **Gestión de Configuración** | 0.25d → 0.12d |  | baseline start none → 2014-03-19 20:00; baseline finish none → 2014-03-19 21:00 |
| 78 | Revisión de versionado de documentos modificados |  |  | baseline start none → 2014-03-19 20:00; baseline finish none → 2014-03-19 21:00 |
| 79 | Arquitectura del ciclo de vida |  |  | baseline start none → 2014-03-19 21:00; baseline finish none → 2014-03-19 21:00 |
| 80 | **CONSTRUCCIÓN** | 63.5d → 31.75d |  | baseline start none → 2014-03-20 17:00; baseline finish none → 2014-08-14 19:00 |
| 81 | **Iteración C1** | 7d → 3.5d |  | baseline start none → 2014-03-20 17:00; baseline finish none → 2014-04-03 21:00 |
| 82 | **Análisis/Diseño** | 2d → 1d |  | baseline start none → 2014-03-20 17:00; baseline finish none → 2014-03-25 21:00 |
| 83 | Refinación de Diagramas de Actividad |  |  | baseline start none → 2014-03-20 17:00; baseline finish none → 2014-03-20 21:00 |
| 84 | Refinación de Diagramas de Secuencia |  |  | baseline start none → 2014-03-25 17:00; baseline finish none → 2014-03-25 21:00 |
| 85 | **Implementación** | 3.75d → 1.88d |  | baseline start none → 2014-03-26 17:00; baseline finish none → 2014-04-02 20:00 |
| 86 | Construcción de Base de Datos |  |  | baseline start none → 2014-03-26 17:00; baseline finish none → 2014-03-27 21:00 |
| 87 | Definición de Interfaz de Usuario |  |  | baseline start none → 2014-04-01 17:00; baseline finish none → 2014-04-02 20:00 |
| 88 | **Gestión del Proyecto** | 1d → 0.5d |  | baseline start none → 2014-04-02 20:00; baseline finish none → 2014-04-03 20:00 |
| 89 | Actualización de Riesgos |  |  | baseline start none → 2014-04-02 20:00; baseline finish none → 2014-04-02 21:00 |
| 90 | Revisión de planificacion (posible replanificación) |  |  | baseline start none → 2014-04-03 17:00; baseline finish none → 2014-04-03 20:00 |
| 91 | **Gestión de Configuración** | 0.25d → 0.12d |  | baseline start none → 2014-04-03 20:00; baseline finish none → 2014-04-03 21:00 |
| 92 | Versionado de prototipos |  |  | baseline start none → 2014-04-03 20:00; baseline finish none → 2014-04-03 21:00 |
| 93 | Revisión de versionado de documentos modificados |  |  | baseline start none → 2014-04-03 20:00; baseline finish none → 2014-04-03 21:00 |
| 94 | **Iteración C2** | 10d → 5d |  | baseline start none → 2014-04-08 17:00; baseline finish none → 2014-04-29 21:00 |
| 95 | **Análisis/Diseño** | 3.25d → 1.62d |  | baseline start none → 2014-04-08 17:00; baseline finish none → 2014-04-15 18:00 |
| 96 | Definición inicial del Modelo de componentes |  |  | baseline start none → 2014-04-08 17:00; baseline finish none → 2014-04-10 18:00 |
| 97 | Refinación de Diagramas de clases (agregado de operaciones) |  |  | baseline start none → 2014-04-10 18:00; baseline finish none → 2014-04-15 18:00 |
| 98 | **Implementación** | 4.75d → 2.38d |  | baseline start none → 2014-04-15 18:00; baseline finish none → 2014-04-23 21:00 |
| 99 | Codificación de Interfaz de usuario (FrontEnd) |  | 0.25d → 0.12d | baseline start none → 2014-04-15 18:00; baseline finish none → 2014-04-23 20:00 |
| 100 | Codificación de Interfaz de usuario (BackEnd) |  |  | baseline start none → 2014-04-15 18:00; baseline finish none → 2014-04-23 21:00 |
| 101 | Codificación de Interfaz de usuario (Android) |  |  | baseline start none → 2014-04-15 18:00; baseline finish none → 2014-04-23 21:00 |
| 102 | **Gestión del Proyecto** | 1.5d → 0.75d |  | baseline start none → 2014-04-24 17:00; baseline finish none → 2014-04-29 19:00 |
| 103 | Actualización de Riesgos |  |  | baseline start none → 2014-04-24 17:00; baseline finish none → 2014-04-24 20:00 |
| 104 | Revisión de planificacion (posible replanificación) |  |  | baseline start none → 2014-04-24 20:00; baseline finish none → 2014-04-29 19:00 |
| 105 | **Gestión de Configuración** | 0.5d → 0.25d |  | baseline start none → 2014-04-29 19:00; baseline finish none → 2014-04-29 21:00 |
| 106 | Versionado de interfaz de usuario |  |  | baseline start none → 2014-04-29 19:00; baseline finish none → 2014-04-29 20:00 |
| 107 | Revisión de versionado de documentos modificados |  |  | baseline start none → 2014-04-29 20:00; baseline finish none → 2014-04-29 21:00 |
| 108 | **Iteración C3** | 7d → 3.5d |  | baseline start none → 2014-04-30 17:00; baseline finish none → 2014-05-14 21:00 |
| 109 | **Análisis/Diseño** | 0.75d → 0.38d |  | baseline start none → 2014-04-30 17:00; baseline finish none → 2014-04-30 20:00 |
| 110 | Refinación del Modelo de componentes |  |  | baseline start none → 2014-04-30 17:00; baseline finish none → 2014-04-30 20:00 |
| 111 | **Implementación** | 5.25d → 2.62d |  | baseline start none → 2014-04-30 20:00; baseline finish none → 2014-05-13 21:00 |
| 112 | Codificacion de logeo de usuario (FrontEnd) |  |  | baseline start none → 2014-04-30 20:00; baseline finish none → 2014-05-13 21:00 |
| 113 | Codificación de seguridad [Roles y Usuario] (BackEnd) |  | 0.25d → 0.12d | baseline start none → 2014-04-30 20:00; baseline finish none → 2014-05-13 20:00 |
| 114 | Codificación de Local Storage (Android) |  | 0.25d → 0.12d | baseline start none → 2014-04-30 20:00; baseline finish none → 2014-05-13 20:00 |
| 115 | **Gestión del Proyecto** | 0.75d → 0.38d |  | baseline start none → 2014-05-14 17:00; baseline finish none → 2014-05-14 20:00 |
| 116 | Actualización de Riesgos |  |  | baseline start none → 2014-05-14 17:00; baseline finish none → 2014-05-14 20:00 |
| 117 | Revisión de planificacion (posible replanificación) |  |  | baseline start none → 2014-05-14 17:00; baseline finish none → 2014-05-14 20:00 |
| 118 | **Gestión de Configuración** | 0.25d → 0.12d |  | baseline start none → 2014-05-14 20:00; baseline finish none → 2014-05-14 21:00 |
| 119 | Versionado de todos los proyectos |  |  | baseline start none → 2014-05-14 20:00; baseline finish none → 2014-05-14 21:00 |
| 120 | Revisión de versionado de documentos modificados |  |  | baseline start none → 2014-05-14 20:00; baseline finish none → 2014-05-14 21:00 |
| 121 | **Iteración C4** | 8.75d → 4.38d |  | baseline start none → 2014-05-15 17:00; baseline finish none → 2014-06-04 20:00 |
| 122 | **Análisis/Diseño** | 1d → 0.5d |  | baseline start none → 2014-05-15 17:00; baseline finish none → 2014-05-15 21:00 |
| 123 | Refinación del Modelo de Datos |  |  | baseline start none → 2014-05-15 17:00; baseline finish none → 2014-05-15 21:00 |
| 124 | **Implementación** | 7d → 3.5d |  | baseline start none → 2014-05-20 17:00; baseline finish none → 2014-06-03 21:00 |
| 125 | Codificación de Gestión de reservas online (FrontEnd) |  |  | baseline start none → 2014-05-20 17:00; baseline finish none → 2014-06-03 21:00 |
| 126 | Codificación de ABM principales (BackEnd) |  | 0.5d → 0.25d | baseline start none → 2014-05-20 17:00; baseline finish none → 2014-06-03 19:00 |
| 127 | Codificación de ABM principales (Android) |  |  | baseline start none → 2014-05-20 17:00; baseline finish none → 2014-06-03 21:00 |
| 128 | **Gestión del Proyecto** | 0.5d → 0.25d |  | baseline start none → 2014-06-04 17:00; baseline finish none → 2014-06-04 19:00 |
| 129 | Actualización de Riesgos |  |  | baseline start none → 2014-06-04 17:00; baseline finish none → 2014-06-04 19:00 |
| 130 | Revisión de planificacion (posible replanificación) |  | 0.25d → 0.12d | baseline start none → 2014-06-04 17:00; baseline finish none → 2014-06-04 18:00 |
| 131 | **Gestión de Configuración** | 0.25d → 0.12d |  | baseline start none → 2014-06-04 19:00; baseline finish none → 2014-06-04 20:00 |
| 132 | Versionado de todos los proyectos |  |  | baseline start none → 2014-06-04 19:00; baseline finish none → 2014-06-04 20:00 |
| 133 | Revisión de versionado de documentos modificados |  |  | baseline start none → 2014-06-04 19:00; baseline finish none → 2014-06-04 20:00 |
| 134 | **Iteración C5** | 16d → 8d |  | baseline start none → 2014-06-04 20:00; baseline finish none → 2014-07-10 20:00 |
| 135 | **Análisis/Diseño** | 1.5d → 0.75d |  | baseline start none → 2014-06-04 20:00; baseline finish none → 2014-06-10 18:00 |
| 136 | Revisión de Diagramas y Modelos de Análisis/Diseño |  |  | baseline start none → 2014-06-04 20:00; baseline finish none → 2014-06-10 18:00 |
| 137 | **Implementación** | 11.25d → 5.62d |  | baseline start none → 2014-06-10 18:00; baseline finish none → 2014-07-03 19:00 |
| 138 | Codificación de Calculos de tiempos de espera (FrontEnd) |  | 0.5d → 0.25d | baseline start none → 2014-06-10 18:00; baseline finish none → 2014-07-02 21:00 |
| 139 | Codificación de Funciones básicas (BackEnd) |  | 0.5d → 0.25d | baseline start none → 2014-06-10 18:00; baseline finish none → 2014-07-02 21:00 |
| 140 | Codificación de visualizador de ordenes (Android) |  |  | baseline start none → 2014-06-10 18:00; baseline finish none → 2014-07-03 19:00 |

| ID | Task | Duration | Total float | Other |
| --- | --- | --- | --- | --- |
| 141 | **Pruebas** | 2.5d → 1.25d |  | baseline start none → 2014-07-03 19:00; baseline finish none → 2014-07-09 21:00 |
| 142 | Pruebas de Funcionalidad (para las 3 aplicaciones) |  |  | baseline start none → 2014-07-03 19:00; baseline finish none → 2014-07-09 21:00 |
| 143 | **Gestión del Proyecto** | 0.5d → 0.25d |  | baseline start none → 2014-07-10 17:00; baseline finish none → 2014-07-10 19:00 |
| 144 | Actualización de Riesgos |  |  | baseline start none → 2014-07-10 17:00; baseline finish none → 2014-07-10 19:00 |
| 145 | Revisión de planificacion (posible replanificación) |  | 0.25d → 0.12d | baseline start none → 2014-07-10 17:00; baseline finish none → 2014-07-10 18:00 |
| 146 | **Gestión de Configuración** | 0.25d → 0.12d |  | baseline start none → 2014-07-10 19:00; baseline finish none → 2014-07-10 20:00 |
| 147 | Versionado de todos los proyectos |  |  | baseline start none → 2014-07-10 19:00; baseline finish none → 2014-07-10 20:00 |
| 148 | Revisión de versionado de documentos modificados |  |  | baseline start none → 2014-07-10 19:00; baseline finish none → 2014-07-10 20:00 |
| 149 | **Iteración C6** | 14.75d → 7.38d |  | baseline start none → 2014-07-10 20:00; baseline finish none → 2014-08-14 19:00 |
| 150 | **Análisis/Diseño** | 2d → 1d |  | baseline start none → 2014-07-10 20:00; baseline finish none → 2014-07-16 20:00 |
| 151 | Revisión de Diagramas y Modelos de Análisis/Diseño |  |  | baseline start none → 2014-07-10 20:00; baseline finish none → 2014-07-16 20:00 |
| 152 | **Implementación** | 9.5d → 4.75d |  | baseline start none → 2014-07-16 20:00; baseline finish none → 2014-08-07 18:00 |
| 153 | Codificación de Calculos de tiempos de espera (FrontEnd) |  |  | baseline start none → 2014-07-16 20:00; baseline finish none → 2014-08-07 18:00 |
| 154 | Codificación de visualizador de Ordenes (BackEnd) |  | 0.5d → 0.25d | baseline start none → 2014-07-16 20:00; baseline finish none → 2014-08-06 20:00 |
| 155 | Codificación de personalización gráfica (Android) |  |  | baseline start none → 2014-07-16 20:00; baseline finish none → 2014-08-07 18:00 |
| 156 | **Pruebas** | 2.5d → 1.25d |  | baseline start none → 2014-08-07 18:00; baseline finish none → 2014-08-13 20:00 |
| 157 | Pruebas de comunicación de interfaces y pruebas de funcionalidad |  |  | baseline start none → 2014-08-07 18:00; baseline finish none → 2014-08-13 20:00 |
| 158 | **Gestión del Proyecto** | 0.25d → 0.12d |  | baseline start none → 2014-08-13 20:00; baseline finish none → 2014-08-13 21:00 |
| 159 | Actualización de Riesgos |  |  | baseline start none → 2014-08-13 20:00; baseline finish none → 2014-08-13 21:00 |
| 160 | Revisión de planificacion (posible replanificación) |  |  | baseline start none → 2014-08-13 20:00; baseline finish none → 2014-08-13 21:00 |
| 161 | **Gestión de Configuración** | 0.5d → 0.25d |  | baseline start none → 2014-08-14 17:00; baseline finish none → 2014-08-14 19:00 |
| 162 | Versionado de todos los proyectos |  |  | baseline start none → 2014-08-14 17:00; baseline finish none → 2014-08-14 19:00 |
| 163 | Revisión de versionado de documentos modificados |  |  | baseline start none → 2014-08-14 17:00; baseline finish none → 2014-08-14 19:00 |
| 164 | Capacidad Operacional Inicial |  |  | baseline start none → 2014-08-14 19:00; baseline finish none → 2014-08-14 19:00 |
| 165 | **TRANSICIÓN** | 15.75d → 7.88d |  | baseline start none → 2014-08-14 19:00; baseline finish none → 2014-09-23 18:00 |
| 166 | **Iteración T1** | 15.75d → 7.88d |  | baseline start none → 2014-08-14 19:00; baseline finish none → 2014-09-23 18:00 |
| 167 | **Implementación** | 5d → 2.5d |  | baseline start none → 2014-08-14 19:00; baseline finish none → 2014-08-27 19:00 |
| 168 | Elaboracion de documentación para usuarios y videos tutoriales |  |  | baseline start none → 2014-08-14 19:00; baseline finish none → 2014-08-27 19:00 |
| 169 | **Despliegue** | 6d → 3d |  | baseline start none → 2014-08-27 19:00; baseline finish none → 2014-09-10 19:00 |
| 170 | Modelo de despliegue |  |  | baseline start none → 2014-08-27 19:00; baseline finish none → 2014-09-02 21:00 |
| 171 | Integración y puesta a punto del sistema |  |  | baseline start none → 2014-09-03 17:00; baseline finish none → 2014-09-10 19:00 |
| 172 | **Gestión del Proyecto** | 4.25d → 2.12d |  | baseline start none → 2014-09-10 19:00; baseline finish none → 2014-09-18 20:00 |
| 173 | Actualización de Riesgos |  |  | baseline start none → 2014-09-10 19:00; baseline finish none → 2014-09-10 20:00 |
| 174 | Revisión de planificacion (posible replanificación) |  |  | baseline start none → 2014-09-10 20:00; baseline finish none → 2014-09-10 21:00 |
| 175 | Análisis de resultados del proyecto |  |  | baseline start none → 2014-09-11 17:00; baseline finish none → 2014-09-18 20:00 |
| 176 | **Gestión de Configuración** | 0.5d → 0.25d |  | baseline start none → 2014-09-18 20:00; baseline finish none → 2014-09-23 18:00 |
| 177 | Versionado de todos los proyectos |  |  | baseline start none → 2014-09-18 20:00; baseline finish none → 2014-09-23 18:00 |
| 178 | Revisión de versionado de documentos modificados |  |  | baseline start none → 2014-09-18 20:00; baseline finish none → 2014-09-23 18:00 |
| 179 | Lanzamiento de producto |  |  | baseline start none → 2014-09-23 18:00; baseline finish none → 2014-09-23 18:00 |
| 180 | Fin de Proyecto |  |  | baseline start none → 2014-09-23 18:00; baseline finish none → 2014-09-23 18:00 |

## Version 6 (data date 2013-07-29, saved 2014-03-12, file Informe1.mpp)

Note of the change: Creacion de todos los reportes

Last finish 2014-09-23 → 2014-09-18 (-5d). Complete tasks 0 → 10.

Changed:

| ID | Task | Start | Finish | Duration | Complete | Total float |
| --- | --- | --- | --- | --- | --- | --- |
| 1 | **RestApp** | 2013-07-30 17:00 A | 2014-09-23 18:00 → 2014-09-18 20:57 (-5d) | 69.12d → 68.99d | 0% → 6% |  |
| 2 | **INICIO** | 2013-07-30 17:00 A | 2013-09-25 21:00 → 2013-09-25 19:57 | 10.5d → 10.37d | 0% → 61% |  |
| 3 | **Iteración I1** | 2013-07-30 17:00 A | 2013-09-25 21:00 → 2013-09-25 19:57 | 10.5d → 10.37d | 0% → 61% |  |
| 4 | **Modelo de Negocio** | 2013-07-30 17:00 A | 2013-08-01 19:00 → 2013-08-01 17:57 A | 1.25d → 1.12d | 0% → 100% | 0d → none |
| 5 | Analisis del dominio del problema | 2013-07-30 17:00 A | 2013-07-30 21:00 → 2013-07-30 20:30 A | 4h → 3.5h | 0% → 100% | 0d → none |
| 6 | Confección de entrevista | 2013-07-31 17:00 → 2013-07-30 20:30 A (-1d) | 2013-07-31 19:00 → 2013-07-31 18:30 A |  | 0% → 100% | 0d → none |
| 7 | Realización de entrevista | 2013-07-31 19:00 → 2013-07-31 18:30 A | 2013-07-31 21:00 → 2013-07-31 19:57 A | 2h → 1.45h | 0% → 100% | 0d → none |
| 8 | Analisis de Entrevista | 2013-08-01 17:00 → 2013-07-31 19:57 A (-1d) | 2013-08-01 19:00 → 2013-08-01 17:57 A |  | 0% → 100% | 0d → none |
| 9 | **Requerimientos** | 2013-08-01 19:00 → 2013-08-01 17:57 A | 2013-08-13 21:00 → 2013-08-08 20:57 A (-5d) | 2.25d → 1.88d | 0% → 100% | 0d → none |
| 10 | Definición de caracteristicas y limitaciones | 2013-08-01 19:00 → 2013-08-01 17:57 A | 2013-08-07 19:00 → 2013-08-06 20:27 A (-1d) | 8h → 6.5h | 0% → 100% | 0d → none |
| 11 | Definición de Requerimientos Funcionales y No Funcionales | 2013-08-07 19:00 → 2013-08-06 20:27 A (-1d) | 2013-08-13 21:00 → 2013-08-08 20:57 A (-5d) | 10h → 8.5h | 0% → 100% | 0d → none |
| 12 | **Análisis/Diseño** | 2013-08-14 17:00 → 2013-08-08 20:57 A (-6d) | 2013-08-15 21:00 → 2013-08-13 20:57 A (-2d) | 1d → 0.5d | 0% → 100% | 0d → none |
| 13 | Definición inicial del Modelo de Casos de Usos | 2013-08-14 17:00 → 2013-08-08 20:57 A (-6d) | 2013-08-15 21:00 → 2013-08-13 20:57 A (-2d) | 8h → 4h | 0% → 100% | 0d → none |
| 14 | **Gestión del Proyecto** | 2013-08-20 17:00 → 2013-08-13 20:57 A (-7d) | 2013-09-18 21:00 → 2013-09-18 19:57 | 4.5d → 5.38d | 0% → 53% |  |
| 15 | Estudio de prefactibilidad | 2013-08-20 17:00 → 2013-08-13 20:57 A (-7d) | 2013-08-27 21:00 → 2013-08-15 17:57 A (-12d) | 8h → 5h | 0% → 100% | 0d → none |
| 16 | Planificación | 2013-08-28 17:00 → 2013-08-15 17:57 A (-13d) | 2013-08-29 21:00 → 2013-08-29 19:57 A | 8h → 18h | 0% → 100% | 0d → none |
| 17 | Gestión de riesgos (definición) | 2013-09-03 17:00 → 2013-08-29 19:57 (-5d) | 2013-09-04 21:00 → 2013-09-04 19:57 |  |  |  |
| 18 | Gestión de configuración (definición) | 2013-09-05 17:00 → 2013-09-04 19:57 (-1d) | 2013-09-17 21:00 → 2013-09-17 19:57 |  |  |  |
| 19 | Presentación Inicial | 2013-09-18 17:00 → 2013-09-17 19:57 (-1d) | 2013-09-18 21:00 → 2013-09-18 19:57 |  |  |  |
| 20 | **Gestión de configuración** | 2013-09-19 17:00 → 2013-09-18 19:57 (-1d) | 2013-09-24 21:00 → 2013-09-24 19:57 |  |  |  |
| 21 | Preparación del ambiente de versionado | 2013-09-19 17:00 → 2013-09-18 19:57 (-1d) | 2013-09-24 21:00 → 2013-09-24 19:57 |  |  |  |
| 22 | **Ambiente** | 2013-09-25 17:00 → 2013-09-24 19:57 (-1d) | 2013-09-25 21:00 → 2013-09-25 19:57 |  |  |  |
| 23 | Identificación y evaluación de herramientas | 2013-09-25 17:00 → 2013-09-24 19:57 (-1d) | 2013-09-25 21:00 → 2013-09-25 19:57 |  |  |  |
| 24 | Objetivos del ciclo de vida | 2013-09-25 21:00 → 2013-09-25 19:57 | 2013-09-25 21:00 → 2013-09-25 19:57 |  |  |  |
| 25 | **ELABORACIÓN** | 2013-09-26 17:00 → 2013-09-25 19:57 (-1d) | 2014-03-19 21:00 → 2014-03-19 19:57 |  |  |  |
| 26 | **Iteración E1** | 2013-09-26 17:00 → 2013-09-25 19:57 (-1d) | 2013-11-06 18:00 → 2013-11-05 20:57 (-1d) |  |  |  |
| 27 | **Modelo de Negocio** | 2013-09-26 17:00 → 2013-09-25 19:57 (-1d) | 2013-10-01 20:00 → 2013-10-01 18:57 |  |  |  |
| 28 | Entendimiento del Modelo de Negocio | 2013-09-26 17:00 → 2013-09-25 19:57 (-1d) | 2013-10-01 20:00 → 2013-10-01 18:57 |  |  |  |
| 29 | **Requerimientos** | 2013-10-01 20:00 → 2013-10-01 18:57 | 2013-10-08 20:00 → 2013-10-08 18:57 |  |  |  |
| 30 | Definicón de nuevos requerimientos | 2013-10-01 20:00 → 2013-10-01 18:57 | 2013-10-02 18:00 → 2013-10-01 20:57 (-1d) |  |  |  |
| 31 | Documentación de requerimientos según estandar | 2013-10-02 18:00 → 2013-10-01 20:57 (-1d) | 2013-10-03 19:00 → 2013-10-03 17:57 |  |  |  |
| 32 | Jerarquización de requerimientos | 2013-10-03 19:00 → 2013-10-03 17:57 | 2013-10-08 20:00 → 2013-10-08 18:57 |  |  |  |
| 33 | **Análisis/Diseño** | 2013-10-08 20:00 → 2013-10-08 18:57 | 2013-10-15 20:00 → 2013-10-15 18:57 |  |  |  |
| 34 | Refinación de Modelo de Casos de Usos | 2013-10-08 20:00 → 2013-10-08 18:57 | 2013-10-09 18:00 → 2013-10-08 20:57 (-1d) |  |  |  |
| 35 | Definición preliminar de Diagrama de clases | 2013-10-09 18:00 → 2013-10-08 20:57 (-1d) | 2013-10-15 20:00 → 2013-10-15 18:57 |  |  |  |
| 36 | **Implementación** | 2013-10-15 20:00 → 2013-10-15 18:57 | 2013-10-31 20:00 → 2013-10-31 18:57 |  |  |  |
| 37 | Desarrollo prototipos independientes de prueba | 2013-10-15 20:00 → 2013-10-15 18:57 | 2013-10-31 20:00 → 2013-10-31 18:57 |  |  |  |
| 38 | **Gestión del Proyecto** | 2013-10-31 20:00 → 2013-10-31 18:57 | 2013-11-05 18:00 → 2013-10-31 20:57 (-5d) |  |  |  |
| 39 | Actualización y priorización de Riesgos | 2013-10-31 20:00 → 2013-10-31 18:57 | 2013-10-31 21:00 → 2013-10-31 19:57 |  |  |  |
| 40 | Refinación del Plan de Proyecto | 2013-11-05 17:00 → 2013-10-31 19:57 (-5d) | 2013-11-05 18:00 → 2013-10-31 20:57 (-5d) |  |  |  |
| 41 | **Gestión de Configuración** | 2013-11-05 18:00 → 2013-10-31 20:57 (-5d) | 2013-11-05 19:00 → 2013-11-05 17:57 |  |  |  |
| 42 | Revisión de versionado de documentos modificados | 2013-11-05 18:00 → 2013-10-31 20:57 (-5d) | 2013-11-05 19:00 → 2013-11-05 17:57 |  |  |  |
| 43 | **Ambiente** | 2013-11-05 19:00 → 2013-11-05 17:57 | 2013-11-06 18:00 → 2013-11-05 20:57 (-1d) |  |  |  |
| 44 | Identificación de Tecnología | 2013-11-05 19:00 → 2013-11-05 17:57 | 2013-11-06 18:00 → 2013-11-05 20:57 (-1d) |  |  |  |
| 45 | **Iteración E2** | 2013-11-06 18:00 → 2013-11-05 20:57 (-1d) | 2014-02-04 21:00 → 2014-02-04 19:57 |  |  |  |
| 46 | **Modelo de Negocio** | 2013-11-06 18:00 → 2013-11-05 20:57 (-1d) | 2013-11-07 19:00 → 2013-11-07 17:57 |  |  |  |
| 47 | Refinación del Modelo de Negocio | 2013-11-06 18:00 → 2013-11-05 20:57 (-1d) | 2013-11-07 19:00 → 2013-11-07 17:57 |  |  |  |
| 48 | **Requerimientos** | 2013-11-07 19:00 → 2013-11-07 17:57 | 2013-11-12 19:00 → 2013-11-12 17:57 |  |  |  |
| 49 | Validación de requerimientos | 2013-11-07 19:00 → 2013-11-07 17:57 | 2013-11-12 18:00 → 2013-11-07 20:57 (-5d) |  |  |  |
| 50 | Mapeo de Requerimientos a Casos de Uso | 2013-11-07 19:00 → 2013-11-07 17:57 | 2013-11-12 19:00 → 2013-11-12 17:57 |  |  |  |
| 51 | **Análisis/Diseño** | 2013-11-12 19:00 → 2013-11-12 17:57 | 2013-12-10 19:00 → 2013-12-10 17:57 |  |  |  |
| 52 | Definición Inicial de diagrama de Clases | 2013-11-12 19:00 → 2013-11-12 17:57 | 2013-11-14 21:00 → 2013-11-14 19:57 |  |  |  |
| 53 | Definición inicial del Modelo de Datos | 2013-11-19 17:00 → 2013-11-14 19:57 (-5d) | 2013-11-20 21:00 → 2013-11-20 19:57 |  |  |  |
| 54 | Definición inicial de Diagrama de Actividades | 2013-11-21 17:00 → 2013-11-20 19:57 (-1d) | 2013-11-26 21:00 → 2013-11-26 19:57 |  |  |  |
| 55 | Definición inicial de Diagramas de Secuencia | 2013-11-27 17:00 → 2013-11-26 19:57 (-1d) | 2013-12-10 19:00 → 2013-12-10 17:57 |  |  |  |
| 56 | **Implementación** | 2013-12-10 19:00 → 2013-12-10 17:57 | 2013-12-11 21:00 → 2013-12-11 19:57 |  |  |  |
| 57 | Mejoramientos de prototipos | 2013-12-10 19:00 → 2013-12-10 17:57 | 2013-12-11 21:00 → 2013-12-11 19:57 |  |  |  |
| 58 | **Gestión del Proyecto** | 2013-12-12 17:00 → 2013-12-11 19:57 (-1d) | 2013-12-12 19:00 → 2013-12-12 17:57 |  |  |  |
| 59 | Validación del Plan de proyecto | 2013-12-12 17:00 → 2013-12-11 19:57 (-1d) | 2013-12-12 19:00 → 2013-12-12 17:57 |  |  |  |
| 60 | **Gestión de Configuración** | 2013-12-12 19:00 → 2013-12-12 17:57 | 2013-12-12 20:00 → 2013-12-12 18:57 |  |  |  |
| 61 | Versionado de los prototipos | 2013-12-12 19:00 → 2013-12-12 17:57 | 2013-12-12 20:00 → 2013-12-12 18:57 |  |  |  |
| 62 | Revisión de versionado de documentos modificados | 2013-12-12 19:00 → 2013-12-12 17:57 | 2013-12-12 20:00 → 2013-12-12 18:57 |  |  |  |
| 63 | **Ambiente** | 2013-12-12 20:00 → 2013-12-12 18:57 | 2014-02-04 21:00 → 2014-02-04 19:57 |  |  |  |
| 64 | Preparación del ambiente de desarrollo | 2013-12-12 20:00 → 2013-12-12 18:57 | 2014-02-04 21:00 → 2014-02-04 19:57 |  |  |  |
| 65 | **Iteración E3** | 2014-02-05 17:00 → 2014-02-04 19:57 (-1d) | 2014-03-19 21:00 → 2014-03-19 19:57 |  |  |  |
| 66 | **Requerimientos** | 2014-02-05 17:00 → 2014-02-04 19:57 (-1d) | 2014-02-05 20:00 → 2014-02-05 18:57 |  |  |  |
| 67 | Validacion de Mapeo de Requerimientos a Casos de Uso | 2014-02-05 17:00 → 2014-02-04 19:57 (-1d) | 2014-02-05 20:00 → 2014-02-05 18:57 |  |  |  |
| 68 | **Análisis/Diseño** | 2014-02-05 20:00 → 2014-02-05 18:57 | 2014-03-13 18:00 → 2014-03-12 20:57 (-1d) |  |  |  |
| 69 | Refinación de Diagrama de Casos de Uso | 2014-02-05 20:00 → 2014-02-05 18:57 | 2014-02-26 18:00 → 2014-02-06 20:57 (-20d) |  |  |  |
| 70 | Refinación de Diagrama de Clases | 2014-02-26 18:00 → 2014-02-06 20:57 (-20d) | 2014-02-27 20:00 → 2014-02-27 18:57 |  |  |  |

| ID | Task | Start | Finish |
| --- | --- | --- | --- |
| 71 | Refinación del Modelo de Datos | 2014-02-27 20:00 → 2014-02-27 18:57 | 2014-03-11 20:00 → 2014-03-11 18:57 |
| 72 | Descripción de casos de uso mas importantes | 2014-03-11 20:00 → 2014-03-11 18:57 | 2014-03-13 18:00 → 2014-03-12 20:57 (-1d) |
| 73 | **Implementación** | 2014-03-13 18:00 → 2014-03-12 20:57 (-1d) | 2014-03-19 18:00 → 2014-03-18 20:57 (-1d) |
| 74 | Definición de interfaces de comunicación entre plataformas | 2014-03-13 18:00 → 2014-03-12 20:57 (-1d) | 2014-03-19 18:00 → 2014-03-18 20:57 (-1d) |
| 75 | **Gestión del Proyecto** | 2014-03-19 18:00 → 2014-03-18 20:57 (-1d) | 2014-03-19 20:00 → 2014-03-19 18:57 |
| 76 | Actualización de planes de prevención y contigencia para nuevos Riesgos | 2014-03-19 18:00 → 2014-03-18 20:57 (-1d) | 2014-03-19 20:00 → 2014-03-19 18:57 |
| 77 | **Gestión de Configuración** | 2014-03-19 20:00 → 2014-03-19 18:57 | 2014-03-19 21:00 → 2014-03-19 19:57 |
| 78 | Revisión de versionado de documentos modificados | 2014-03-19 20:00 → 2014-03-19 18:57 | 2014-03-19 21:00 → 2014-03-19 19:57 |
| 79 | Arquitectura del ciclo de vida | 2014-03-19 21:00 → 2014-03-19 19:57 | 2014-03-19 21:00 → 2014-03-19 19:57 |
| 80 | **CONSTRUCCIÓN** | 2014-03-20 17:00 → 2014-03-19 19:57 (-1d) | 2014-08-14 19:00 → 2014-08-14 17:57 |
| 81 | **Iteración C1** | 2014-03-20 17:00 → 2014-03-19 19:57 (-1d) | 2014-04-03 21:00 → 2014-04-03 19:57 |
| 82 | **Análisis/Diseño** | 2014-03-20 17:00 → 2014-03-19 19:57 (-1d) | 2014-03-25 21:00 → 2014-03-25 19:57 |
| 83 | Refinación de Diagramas de Actividad | 2014-03-20 17:00 → 2014-03-19 19:57 (-1d) | 2014-03-20 21:00 → 2014-03-20 19:57 |
| 84 | Refinación de Diagramas de Secuencia | 2014-03-25 17:00 → 2014-03-20 19:57 (-5d) | 2014-03-25 21:00 → 2014-03-25 19:57 |
| 85 | **Implementación** | 2014-03-26 17:00 → 2014-03-25 19:57 (-1d) | 2014-04-02 20:00 → 2014-04-02 18:57 |
| 86 | Construcción de Base de Datos | 2014-03-26 17:00 → 2014-03-25 19:57 (-1d) | 2014-03-27 21:00 → 2014-03-27 19:57 |
| 87 | Definición de Interfaz de Usuario | 2014-04-01 17:00 → 2014-03-27 19:57 (-5d) | 2014-04-02 20:00 → 2014-04-02 18:57 |
| 88 | **Gestión del Proyecto** | 2014-04-02 20:00 → 2014-04-02 18:57 | 2014-04-03 20:00 → 2014-04-03 18:57 |
| 89 | Actualización de Riesgos | 2014-04-02 20:00 → 2014-04-02 18:57 | 2014-04-02 21:00 → 2014-04-02 19:57 |
| 90 | Revisión de planificacion (posible replanificación) | 2014-04-03 17:00 → 2014-04-02 19:57 (-1d) | 2014-04-03 20:00 → 2014-04-03 18:57 |
| 91 | **Gestión de Configuración** | 2014-04-03 20:00 → 2014-04-03 18:57 | 2014-04-03 21:00 → 2014-04-03 19:57 |
| 92 | Versionado de prototipos | 2014-04-03 20:00 → 2014-04-03 18:57 | 2014-04-03 21:00 → 2014-04-03 19:57 |
| 93 | Revisión de versionado de documentos modificados | 2014-04-03 20:00 → 2014-04-03 18:57 | 2014-04-03 21:00 → 2014-04-03 19:57 |
| 94 | **Iteración C2** | 2014-04-08 17:00 → 2014-04-03 19:57 (-5d) | 2014-04-29 21:00 → 2014-04-29 19:57 |
| 95 | **Análisis/Diseño** | 2014-04-08 17:00 → 2014-04-03 19:57 (-5d) | 2014-04-15 18:00 → 2014-04-10 20:57 (-5d) |
| 96 | Definición inicial del Modelo de componentes | 2014-04-08 17:00 → 2014-04-03 19:57 (-5d) | 2014-04-10 18:00 → 2014-04-09 20:57 (-1d) |
| 97 | Refinación de Diagramas de clases (agregado de operaciones) | 2014-04-10 18:00 → 2014-04-09 20:57 (-1d) | 2014-04-15 18:00 → 2014-04-10 20:57 (-5d) |
| 98 | **Implementación** | 2014-04-15 18:00 → 2014-04-10 20:57 (-5d) | 2014-04-23 21:00 → 2014-04-23 19:57 |
| 99 | Codificación de Interfaz de usuario (FrontEnd) | 2014-04-15 18:00 → 2014-04-10 20:57 (-5d) | 2014-04-23 20:00 → 2014-04-23 18:57 |
| 100 | Codificación de Interfaz de usuario (BackEnd) | 2014-04-15 18:00 → 2014-04-10 20:57 (-5d) | 2014-04-23 21:00 → 2014-04-23 19:57 |
| 101 | Codificación de Interfaz de usuario (Android) | 2014-04-15 18:00 → 2014-04-10 20:57 (-5d) | 2014-04-23 21:00 → 2014-04-23 19:57 |
| 102 | **Gestión del Proyecto** | 2014-04-24 17:00 → 2014-04-23 19:57 (-1d) | 2014-04-29 19:00 → 2014-04-29 17:57 |
| 103 | Actualización de Riesgos | 2014-04-24 17:00 → 2014-04-23 19:57 (-1d) | 2014-04-24 20:00 → 2014-04-24 18:57 |
| 104 | Revisión de planificacion (posible replanificación) | 2014-04-24 20:00 → 2014-04-24 18:57 | 2014-04-29 19:00 → 2014-04-29 17:57 |
| 105 | **Gestión de Configuración** | 2014-04-29 19:00 → 2014-04-29 17:57 | 2014-04-29 21:00 → 2014-04-29 19:57 |
| 106 | Versionado de interfaz de usuario | 2014-04-29 19:00 → 2014-04-29 17:57 | 2014-04-29 20:00 → 2014-04-29 18:57 |
| 107 | Revisión de versionado de documentos modificados | 2014-04-29 20:00 → 2014-04-29 18:57 | 2014-04-29 21:00 → 2014-04-29 19:57 |
| 108 | **Iteración C3** | 2014-04-30 17:00 → 2014-04-29 19:57 (-1d) | 2014-05-14 21:00 → 2014-05-14 19:57 |
| 109 | **Análisis/Diseño** | 2014-04-30 17:00 → 2014-04-29 19:57 (-1d) | 2014-04-30 20:00 → 2014-04-30 18:57 |
| 110 | Refinación del Modelo de componentes | 2014-04-30 17:00 → 2014-04-29 19:57 (-1d) | 2014-04-30 20:00 → 2014-04-30 18:57 |
| 111 | **Implementación** | 2014-04-30 20:00 → 2014-04-30 18:57 | 2014-05-13 21:00 → 2014-05-13 19:57 |
| 112 | Codificacion de logeo de usuario (FrontEnd) | 2014-04-30 20:00 → 2014-04-30 18:57 | 2014-05-13 21:00 → 2014-05-13 19:57 |
| 113 | Codificación de seguridad [Roles y Usuario] (BackEnd) | 2014-04-30 20:00 → 2014-04-30 18:57 | 2014-05-13 20:00 → 2014-05-13 18:57 |
| 114 | Codificación de Local Storage (Android) | 2014-04-30 20:00 → 2014-04-30 18:57 | 2014-05-13 20:00 → 2014-05-13 18:57 |
| 115 | **Gestión del Proyecto** | 2014-05-14 17:00 → 2014-05-13 19:57 (-1d) | 2014-05-14 20:00 → 2014-05-14 18:57 |
| 116 | Actualización de Riesgos | 2014-05-14 17:00 → 2014-05-13 19:57 (-1d) | 2014-05-14 20:00 → 2014-05-14 18:57 |
| 117 | Revisión de planificacion (posible replanificación) | 2014-05-14 17:00 → 2014-05-13 19:57 (-1d) | 2014-05-14 20:00 → 2014-05-14 18:57 |
| 118 | **Gestión de Configuración** | 2014-05-14 20:00 → 2014-05-14 18:57 | 2014-05-14 21:00 → 2014-05-14 19:57 |
| 119 | Versionado de todos los proyectos | 2014-05-14 20:00 → 2014-05-14 18:57 | 2014-05-14 21:00 → 2014-05-14 19:57 |
| 120 | Revisión de versionado de documentos modificados | 2014-05-14 20:00 → 2014-05-14 18:57 | 2014-05-14 21:00 → 2014-05-14 19:57 |
| 121 | **Iteración C4** | 2014-05-15 17:00 → 2014-05-14 19:57 (-1d) | 2014-06-04 20:00 → 2014-06-04 18:57 |
| 122 | **Análisis/Diseño** | 2014-05-15 17:00 → 2014-05-14 19:57 (-1d) | 2014-05-15 21:00 → 2014-05-15 19:57 |
| 123 | Refinación del Modelo de Datos | 2014-05-15 17:00 → 2014-05-14 19:57 (-1d) | 2014-05-15 21:00 → 2014-05-15 19:57 |
| 124 | **Implementación** | 2014-05-20 17:00 → 2014-05-15 19:57 (-5d) | 2014-06-03 21:00 → 2014-06-03 19:57 |
| 125 | Codificación de Gestión de reservas online (FrontEnd) | 2014-05-20 17:00 → 2014-05-15 19:57 (-5d) | 2014-06-03 21:00 → 2014-06-03 19:57 |
| 126 | Codificación de ABM principales (BackEnd) | 2014-05-20 17:00 → 2014-05-15 19:57 (-5d) | 2014-06-03 19:00 → 2014-06-03 17:57 |
| 127 | Codificación de ABM principales (Android) | 2014-05-20 17:00 → 2014-05-15 19:57 (-5d) | 2014-06-03 21:00 → 2014-06-03 19:57 |
| 128 | **Gestión del Proyecto** | 2014-06-04 17:00 → 2014-06-03 19:57 (-1d) | 2014-06-04 19:00 → 2014-06-04 17:57 |
| 129 | Actualización de Riesgos | 2014-06-04 17:00 → 2014-06-03 19:57 (-1d) | 2014-06-04 19:00 → 2014-06-04 17:57 |
| 130 | Revisión de planificacion (posible replanificación) | 2014-06-04 17:00 → 2014-06-03 19:57 (-1d) | 2014-06-04 18:00 → 2014-06-03 20:57 (-1d) |
| 131 | **Gestión de Configuración** | 2014-06-04 19:00 → 2014-06-04 17:57 | 2014-06-04 20:00 → 2014-06-04 18:57 |
| 132 | Versionado de todos los proyectos | 2014-06-04 19:00 → 2014-06-04 17:57 | 2014-06-04 20:00 → 2014-06-04 18:57 |
| 133 | Revisión de versionado de documentos modificados | 2014-06-04 19:00 → 2014-06-04 17:57 | 2014-06-04 20:00 → 2014-06-04 18:57 |
| 134 | **Iteración C5** | 2014-06-04 20:00 → 2014-06-04 18:57 | 2014-07-10 20:00 → 2014-07-10 18:57 |
| 135 | **Análisis/Diseño** | 2014-06-04 20:00 → 2014-06-04 18:57 | 2014-06-10 18:00 → 2014-06-05 20:57 (-5d) |
| 136 | Revisión de Diagramas y Modelos de Análisis/Diseño | 2014-06-04 20:00 → 2014-06-04 18:57 | 2014-06-10 18:00 → 2014-06-05 20:57 (-5d) |
| 137 | **Implementación** | 2014-06-10 18:00 → 2014-06-05 20:57 (-5d) | 2014-07-03 19:00 → 2014-07-03 17:57 |
| 138 | Codificación de Calculos de tiempos de espera (FrontEnd) | 2014-06-10 18:00 → 2014-06-05 20:57 (-5d) | 2014-07-02 21:00 → 2014-07-02 19:57 |
| 139 | Codificación de Funciones básicas (BackEnd) | 2014-06-10 18:00 → 2014-06-05 20:57 (-5d) | 2014-07-02 21:00 → 2014-07-02 19:57 |
| 140 | Codificación de visualizador de ordenes (Android) | 2014-06-10 18:00 → 2014-06-05 20:57 (-5d) | 2014-07-03 19:00 → 2014-07-03 17:57 |

| ID | Task | Start | Finish | Complete |
| --- | --- | --- | --- | --- |
| 141 | **Pruebas** | 2014-07-03 19:00 → 2014-07-03 17:57 | 2014-07-09 21:00 → 2014-07-09 19:57 |  |
| 142 | Pruebas de Funcionalidad (para las 3 aplicaciones) | 2014-07-03 19:00 → 2014-07-03 17:57 | 2014-07-09 21:00 → 2014-07-09 19:57 |  |
| 143 | **Gestión del Proyecto** | 2014-07-10 17:00 → 2014-07-09 19:57 (-1d) | 2014-07-10 19:00 → 2014-07-10 17:57 |  |
| 144 | Actualización de Riesgos | 2014-07-10 17:00 → 2014-07-09 19:57 (-1d) | 2014-07-10 19:00 → 2014-07-10 17:57 |  |
| 145 | Revisión de planificacion (posible replanificación) | 2014-07-10 17:00 → 2014-07-09 19:57 (-1d) | 2014-07-10 18:00 → 2014-07-09 20:57 (-1d) |  |
| 146 | **Gestión de Configuración** | 2014-07-10 19:00 → 2014-07-10 17:57 | 2014-07-10 20:00 → 2014-07-10 18:57 |  |
| 147 | Versionado de todos los proyectos | 2014-07-10 19:00 → 2014-07-10 17:57 | 2014-07-10 20:00 → 2014-07-10 18:57 |  |
| 148 | Revisión de versionado de documentos modificados | 2014-07-10 19:00 → 2014-07-10 17:57 | 2014-07-10 20:00 → 2014-07-10 18:57 |  |
| 149 | **Iteración C6** | 2014-07-10 20:00 → 2014-07-10 18:57 | 2014-08-14 19:00 → 2014-08-14 17:57 |  |
| 150 | **Análisis/Diseño** | 2014-07-10 20:00 → 2014-07-10 18:57 | 2014-07-16 20:00 → 2014-07-16 18:57 |  |
| 151 | Revisión de Diagramas y Modelos de Análisis/Diseño | 2014-07-10 20:00 → 2014-07-10 18:57 | 2014-07-16 20:00 → 2014-07-16 18:57 |  |
| 152 | **Implementación** | 2014-07-16 20:00 → 2014-07-16 18:57 | 2014-08-07 18:00 → 2014-08-06 20:57 (-1d) |  |
| 153 | Codificación de Calculos de tiempos de espera (FrontEnd) | 2014-07-16 20:00 → 2014-07-16 18:57 | 2014-08-07 18:00 → 2014-08-06 20:57 (-1d) |  |
| 154 | Codificación de visualizador de Ordenes (BackEnd) | 2014-07-16 20:00 → 2014-07-16 18:57 | 2014-08-06 20:00 → 2014-08-06 18:57 |  |
| 155 | Codificación de personalización gráfica (Android) | 2014-07-16 20:00 → 2014-07-16 18:57 | 2014-08-07 18:00 → 2014-08-06 20:57 (-1d) |  |
| 156 | **Pruebas** | 2014-08-07 18:00 → 2014-08-06 20:57 (-1d) | 2014-08-13 20:00 → 2014-08-13 18:57 |  |
| 157 | Pruebas de comunicación de interfaces y pruebas de funcionalidad | 2014-08-07 18:00 → 2014-08-06 20:57 (-1d) | 2014-08-13 20:00 → 2014-08-13 18:57 |  |
| 158 | **Gestión del Proyecto** | 2014-08-13 20:00 → 2014-08-13 18:57 | 2014-08-13 21:00 → 2014-08-13 19:57 |  |
| 159 | Actualización de Riesgos | 2014-08-13 20:00 → 2014-08-13 18:57 | 2014-08-13 21:00 → 2014-08-13 19:57 |  |
| 160 | Revisión de planificacion (posible replanificación) | 2014-08-13 20:00 → 2014-08-13 18:57 | 2014-08-13 21:00 → 2014-08-13 19:57 |  |
| 161 | **Gestión de Configuración** | 2014-08-14 17:00 → 2014-08-13 19:57 (-1d) | 2014-08-14 19:00 → 2014-08-14 17:57 |  |
| 162 | Versionado de todos los proyectos | 2014-08-14 17:00 → 2014-08-13 19:57 (-1d) | 2014-08-14 19:00 → 2014-08-14 17:57 |  |
| 163 | Revisión de versionado de documentos modificados | 2014-08-14 17:00 → 2014-08-13 19:57 (-1d) | 2014-08-14 19:00 → 2014-08-14 17:57 |  |
| 164 | Capacidad Operacional Inicial | 2014-08-14 19:00 → 2014-08-14 17:57 | 2014-08-14 19:00 → 2014-08-14 17:57 |  |
| 165 | **TRANSICIÓN** | 2014-08-14 19:00 → 2014-08-14 17:57 | 2014-09-23 18:00 → 2014-09-18 20:57 (-5d) |  |
| 166 | **Iteración T1** | 2014-08-14 19:00 → 2014-08-14 17:57 | 2014-09-23 18:00 → 2014-09-18 20:57 (-5d) |  |
| 167 | **Implementación** | 2014-08-14 19:00 → 2014-08-14 17:57 | 2014-08-27 19:00 → 2014-08-27 17:57 |  |
| 168 | Elaboracion de documentación para usuarios y videos tutoriales | 2014-08-14 19:00 → 2014-08-14 17:57 | 2014-08-27 19:00 → 2014-08-27 17:57 |  |
| 169 | **Despliegue** | 2014-08-27 19:00 → 2014-08-27 17:57 | 2014-09-10 19:00 → 2014-09-10 17:57 |  |
| 170 | Modelo de despliegue | 2014-08-27 19:00 → 2014-08-27 17:57 | 2014-09-02 21:00 → 2014-09-02 19:57 |  |
| 171 | Integración y puesta a punto del sistema | 2014-09-03 17:00 → 2014-09-02 19:57 (-1d) | 2014-09-10 19:00 → 2014-09-10 17:57 |  |
| 172 | **Gestión del Proyecto** | 2014-09-10 19:00 → 2014-09-10 17:57 | 2014-09-18 20:00 → 2014-09-18 18:57 |  |
| 173 | Actualización de Riesgos | 2014-09-10 19:00 → 2014-09-10 17:57 | 2014-09-10 20:00 → 2014-09-10 18:57 |  |
| 174 | Revisión de planificacion (posible replanificación) | 2014-09-10 20:00 → 2014-09-10 18:57 | 2014-09-10 21:00 → 2014-09-10 19:57 |  |
| 175 | Análisis de resultados del proyecto | 2014-09-11 17:00 → 2014-09-10 19:57 (-1d) | 2014-09-18 20:00 → 2014-09-18 18:57 |  |
| 176 | **Gestión de Configuración** | 2014-09-18 20:00 → 2014-09-18 18:57 | 2014-09-23 18:00 → 2014-09-18 20:57 (-5d) |  |
| 177 | Versionado de todos los proyectos | 2014-09-18 20:00 → 2014-09-18 18:57 | 2014-09-23 18:00 → 2014-09-18 20:57 (-5d) |  |
| 178 | Revisión de versionado de documentos modificados | 2014-09-18 20:00 → 2014-09-18 18:57 | 2014-09-23 18:00 → 2014-09-18 20:57 (-5d) |  |
| 179 | Lanzamiento de producto | 2014-09-23 18:00 → 2014-09-18 20:57 (-5d) | 2014-09-23 18:00 → 2014-09-18 20:57 (-5d) |  |
| 180 | Fin de Proyecto | 2014-09-23 18:00 → 2014-09-18 20:57 (-5d) | 2014-09-23 18:00 → 2014-09-18 20:57 (-5d) |  |
| 181 | **Informe de avance mensual** | 2013-08-28 09:00 A |  | 0% → 8% |
| 182 | Informe de avance mensual 1 | 2013-08-28 09:00 A | 2013-08-28 13:00 A | 0% → 100% |

## Version 7 (data date 2013-07-29, saved 2014-03-12, file Informe2.mpp)

Note of the change: Creacion de todos los reportes

Last finish 2014-09-18 → 2014-09-24 (+6d). Complete tasks 10 → 15.

Changed:

| ID | Task | Start | Finish | Duration | Complete | Total float |
| --- | --- | --- | --- | --- | --- | --- |
| 1 | **RestApp** |  | 2014-09-18 20:57 → 2014-09-24 20:57 (+6d) | 68.99d → 69.99d | 6% → 10% |  |
| 2 | **INICIO** |  | 2013-09-25 19:57 → 2013-10-01 19:57 (+6d) | 10.37d → 11.37d | 61% → 96% |  |
| 3 | **Iteración I1** |  | 2013-09-25 19:57 → 2013-10-01 19:57 (+6d) | 10.37d → 11.37d | 61% → 96% |  |
| 14 | **Gestión del Proyecto** |  | 2013-09-18 19:57 → 2013-09-24 17:57 A (+6d) | 5.38d → 6.12d | 53% → 100% | 0d → none |
| 17 | Gestión de riesgos (definición) | 2013-08-29 19:57 A | 2013-09-04 19:57 → 2013-09-05 17:57 A (+1d) | 8h → 10h | 0% → 100% | 0d → none |
| 18 | Gestión de configuración (definición) | 2013-09-04 19:57 → 2013-09-05 17:57 A (+1d) | 2013-09-17 19:57 → 2013-09-18 19:57 A (+1d) | 8h → 10h | 0% → 100% | 0d → none |
| 19 | Presentación Inicial | 2013-09-17 19:57 → 2013-09-18 19:57 A (+1d) | 2013-09-18 19:57 → 2013-09-24 17:57 A (+6d) | 0.5d → 6h | 0% → 100% | 0d → none |
| 20 | **Gestión de configuración** | 2013-09-18 19:57 → 2013-09-24 17:57 A (+6d) | 2013-09-24 19:57 → 2013-09-26 19:57 A (+2d) | 1d → 1.25d | 0% → 100% | 0d → none |
| 21 | Preparación del ambiente de versionado | 2013-09-18 19:57 → 2013-09-24 17:57 A (+6d) | 2013-09-24 19:57 → 2013-09-26 19:57 A (+2d) | 8h → 10h | 0% → 100% | 0d → none |
| 22 | **Ambiente** | 2013-09-24 19:57 → 2013-09-26 19:57 (+2d) | 2013-09-25 19:57 → 2013-10-01 19:57 (+6d) |  |  |  |
| 23 | Identificación y evaluación de herramientas | 2013-09-24 19:57 → 2013-09-26 19:57 (+2d) | 2013-09-25 19:57 → 2013-10-01 19:57 (+6d) |  |  |  |
| 24 | Objetivos del ciclo de vida | 2013-09-25 19:57 → 2013-10-01 19:57 (+6d) | 2013-09-25 19:57 → 2013-10-01 19:57 (+6d) |  |  |  |
| 25 | **ELABORACIÓN** | 2013-09-25 19:57 → 2013-10-01 19:57 (+6d) | 2014-03-19 19:57 → 2014-03-25 19:57 (+6d) |  |  |  |
| 26 | **Iteración E1** | 2013-09-25 19:57 → 2013-10-01 19:57 (+6d) | 2013-11-05 20:57 → 2013-11-07 20:57 (+2d) |  |  |  |
| 27 | **Modelo de Negocio** | 2013-09-25 19:57 → 2013-10-01 19:57 (+6d) | 2013-10-01 18:57 → 2013-10-03 18:57 (+2d) |  |  |  |
| 28 | Entendimiento del Modelo de Negocio | 2013-09-25 19:57 → 2013-10-01 19:57 (+6d) | 2013-10-01 18:57 → 2013-10-03 18:57 (+2d) |  |  |  |
| 29 | **Requerimientos** | 2013-10-01 18:57 → 2013-10-03 18:57 (+2d) | 2013-10-08 18:57 → 2013-10-10 18:57 (+2d) |  |  |  |
| 30 | Definicón de nuevos requerimientos | 2013-10-01 18:57 → 2013-10-03 18:57 (+2d) | 2013-10-01 20:57 → 2013-10-03 20:57 (+2d) |  |  |  |
| 31 | Documentación de requerimientos según estandar | 2013-10-01 20:57 → 2013-10-03 20:57 (+2d) | 2013-10-03 17:57 → 2013-10-09 17:57 (+6d) |  |  |  |
| 32 | Jerarquización de requerimientos | 2013-10-03 17:57 → 2013-10-09 17:57 (+6d) | 2013-10-08 18:57 → 2013-10-10 18:57 (+2d) |  |  |  |
| 33 | **Análisis/Diseño** | 2013-10-08 18:57 → 2013-10-10 18:57 (+2d) | 2013-10-15 18:57 → 2013-10-17 18:57 (+2d) |  |  |  |
| 34 | Refinación de Modelo de Casos de Usos | 2013-10-08 18:57 → 2013-10-10 18:57 (+2d) | 2013-10-08 20:57 → 2013-10-10 20:57 (+2d) |  |  |  |
| 35 | Definición preliminar de Diagrama de clases | 2013-10-08 20:57 → 2013-10-10 20:57 (+2d) | 2013-10-15 18:57 → 2013-10-17 18:57 (+2d) |  |  |  |
| 36 | **Implementación** | 2013-10-15 18:57 → 2013-10-17 18:57 (+2d) | 2013-10-31 18:57 → 2013-11-06 18:57 (+6d) |  |  |  |
| 37 | Desarrollo prototipos independientes de prueba | 2013-10-15 18:57 → 2013-10-17 18:57 (+2d) | 2013-10-31 18:57 → 2013-11-06 18:57 (+6d) |  |  |  |
| 38 | **Gestión del Proyecto** | 2013-10-31 18:57 → 2013-11-06 18:57 (+6d) | 2013-10-31 20:57 → 2013-11-06 20:57 (+6d) |  |  |  |
| 39 | Actualización y priorización de Riesgos | 2013-10-31 18:57 → 2013-11-06 18:57 (+6d) | 2013-10-31 19:57 → 2013-11-06 19:57 (+6d) |  |  |  |
| 40 | Refinación del Plan de Proyecto | 2013-10-31 19:57 → 2013-11-06 19:57 (+6d) | 2013-10-31 20:57 → 2013-11-06 20:57 (+6d) |  |  |  |
| 41 | **Gestión de Configuración** | 2013-10-31 20:57 → 2013-11-06 20:57 (+6d) | 2013-11-05 17:57 → 2013-11-07 17:57 (+2d) |  |  |  |
| 42 | Revisión de versionado de documentos modificados | 2013-10-31 20:57 → 2013-11-06 20:57 (+6d) | 2013-11-05 17:57 → 2013-11-07 17:57 (+2d) |  |  |  |
| 43 | **Ambiente** | 2013-11-05 17:57 → 2013-11-07 17:57 (+2d) | 2013-11-05 20:57 → 2013-11-07 20:57 (+2d) |  |  |  |
| 44 | Identificación de Tecnología | 2013-11-05 17:57 → 2013-11-07 17:57 (+2d) | 2013-11-05 20:57 → 2013-11-07 20:57 (+2d) |  |  |  |
| 45 | **Iteración E2** | 2013-11-05 20:57 → 2013-11-07 20:57 (+2d) | 2014-02-04 19:57 → 2014-02-06 19:57 (+2d) |  |  |  |
| 46 | **Modelo de Negocio** | 2013-11-05 20:57 → 2013-11-07 20:57 (+2d) | 2013-11-07 17:57 → 2013-11-13 17:57 (+6d) |  |  |  |
| 47 | Refinación del Modelo de Negocio | 2013-11-05 20:57 → 2013-11-07 20:57 (+2d) | 2013-11-07 17:57 → 2013-11-13 17:57 (+6d) |  |  |  |
| 48 | **Requerimientos** | 2013-11-07 17:57 → 2013-11-13 17:57 (+6d) | 2013-11-12 17:57 → 2013-11-14 17:57 (+2d) |  |  |  |
| 49 | Validación de requerimientos | 2013-11-07 17:57 → 2013-11-13 17:57 (+6d) | 2013-11-07 20:57 → 2013-11-13 20:57 (+6d) |  |  |  |
| 50 | Mapeo de Requerimientos a Casos de Uso | 2013-11-07 17:57 → 2013-11-13 17:57 (+6d) | 2013-11-12 17:57 → 2013-11-14 17:57 (+2d) |  |  |  |
| 51 | **Análisis/Diseño** | 2013-11-12 17:57 → 2013-11-14 17:57 (+2d) | 2013-12-10 17:57 → 2013-12-12 17:57 (+2d) |  |  |  |
| 52 | Definición Inicial de diagrama de Clases | 2013-11-12 17:57 → 2013-11-14 17:57 (+2d) | 2013-11-14 19:57 → 2013-11-20 19:57 (+6d) |  |  |  |
| 53 | Definición inicial del Modelo de Datos | 2013-11-14 19:57 → 2013-11-20 19:57 (+6d) | 2013-11-20 19:57 → 2013-11-26 19:57 (+6d) |  |  |  |
| 54 | Definición inicial de Diagrama de Actividades | 2013-11-20 19:57 → 2013-11-26 19:57 (+6d) | 2013-11-26 19:57 → 2013-11-28 19:57 (+2d) |  |  |  |
| 55 | Definición inicial de Diagramas de Secuencia | 2013-11-26 19:57 → 2013-11-28 19:57 (+2d) | 2013-12-10 17:57 → 2013-12-12 17:57 (+2d) |  |  |  |
| 56 | **Implementación** | 2013-12-10 17:57 → 2013-12-12 17:57 (+2d) | 2013-12-11 19:57 → 2014-02-04 19:57 (+55d) |  |  |  |
| 57 | Mejoramientos de prototipos | 2013-12-10 17:57 → 2013-12-12 17:57 (+2d) | 2013-12-11 19:57 → 2014-02-04 19:57 (+55d) |  |  |  |
| 58 | **Gestión del Proyecto** | 2013-12-11 19:57 → 2014-02-04 19:57 (+55d) | 2013-12-12 17:57 → 2014-02-05 17:57 (+55d) |  |  |  |
| 59 | Validación del Plan de proyecto | 2013-12-11 19:57 → 2014-02-04 19:57 (+55d) | 2013-12-12 17:57 → 2014-02-05 17:57 (+55d) |  |  |  |
| 60 | **Gestión de Configuración** | 2013-12-12 17:57 → 2014-02-05 17:57 (+55d) | 2013-12-12 18:57 → 2014-02-05 18:57 (+55d) |  |  |  |
| 61 | Versionado de los prototipos | 2013-12-12 17:57 → 2014-02-05 17:57 (+55d) | 2013-12-12 18:57 → 2014-02-05 18:57 (+55d) |  |  |  |
| 62 | Revisión de versionado de documentos modificados | 2013-12-12 17:57 → 2014-02-05 17:57 (+55d) | 2013-12-12 18:57 → 2014-02-05 18:57 (+55d) |  |  |  |
| 63 | **Ambiente** | 2013-12-12 18:57 → 2014-02-05 18:57 (+55d) | 2014-02-04 19:57 → 2014-02-06 19:57 (+2d) |  |  |  |
| 64 | Preparación del ambiente de desarrollo | 2013-12-12 18:57 → 2014-02-05 18:57 (+55d) | 2014-02-04 19:57 → 2014-02-06 19:57 (+2d) |  |  |  |
| 65 | **Iteración E3** | 2014-02-04 19:57 → 2014-02-06 19:57 (+2d) | 2014-03-19 19:57 → 2014-03-25 19:57 (+6d) |  |  |  |
| 66 | **Requerimientos** | 2014-02-04 19:57 → 2014-02-06 19:57 (+2d) | 2014-02-05 18:57 → 2014-02-26 18:57 (+21d) |  |  |  |
| 67 | Validacion de Mapeo de Requerimientos a Casos de Uso | 2014-02-04 19:57 → 2014-02-06 19:57 (+2d) | 2014-02-05 18:57 → 2014-02-26 18:57 (+21d) |  |  |  |
| 68 | **Análisis/Diseño** | 2014-02-05 18:57 → 2014-02-26 18:57 (+21d) | 2014-03-12 20:57 → 2014-03-18 20:57 (+6d) |  |  |  |
| 69 | Refinación de Diagrama de Casos de Uso | 2014-02-05 18:57 → 2014-02-26 18:57 (+21d) | 2014-02-06 20:57 → 2014-02-27 20:57 (+21d) |  |  |  |
| 70 | Refinación de Diagrama de Clases | 2014-02-06 20:57 → 2014-02-27 20:57 (+21d) | 2014-02-27 18:57 → 2014-03-12 18:57 (+13d) |  |  |  |
| 71 | Refinación del Modelo de Datos | 2014-02-27 18:57 → 2014-03-12 18:57 (+13d) | 2014-03-11 18:57 → 2014-03-13 18:57 (+2d) |  |  |  |
| 72 | Descripción de casos de uso mas importantes | 2014-03-11 18:57 → 2014-03-13 18:57 (+2d) | 2014-03-12 20:57 → 2014-03-18 20:57 (+6d) |  |  |  |
| 73 | **Implementación** | 2014-03-12 20:57 → 2014-03-18 20:57 (+6d) | 2014-03-18 20:57 → 2014-03-20 20:57 (+2d) |  |  |  |
| 74 | Definición de interfaces de comunicación entre plataformas | 2014-03-12 20:57 → 2014-03-18 20:57 (+6d) | 2014-03-18 20:57 → 2014-03-20 20:57 (+2d) |  |  |  |
| 75 | **Gestión del Proyecto** | 2014-03-18 20:57 → 2014-03-20 20:57 (+2d) | 2014-03-19 18:57 → 2014-03-25 18:57 (+6d) |  |  |  |
| 76 | Actualización de planes de prevención y contigencia para nuevos Riesgos | 2014-03-18 20:57 → 2014-03-20 20:57 (+2d) | 2014-03-19 18:57 → 2014-03-25 18:57 (+6d) |  |  |  |
| 77 | **Gestión de Configuración** | 2014-03-19 18:57 → 2014-03-25 18:57 (+6d) | 2014-03-19 19:57 → 2014-03-25 19:57 (+6d) |  |  |  |
| 78 | Revisión de versionado de documentos modificados | 2014-03-19 18:57 → 2014-03-25 18:57 (+6d) | 2014-03-19 19:57 → 2014-03-25 19:57 (+6d) |  |  |  |
| 79 | Arquitectura del ciclo de vida | 2014-03-19 19:57 → 2014-03-25 19:57 (+6d) | 2014-03-19 19:57 → 2014-03-25 19:57 (+6d) |  |  |  |
| 80 | **CONSTRUCCIÓN** | 2014-03-19 19:57 → 2014-03-25 19:57 (+6d) | 2014-08-14 17:57 → 2014-08-20 17:57 (+6d) |  |  |  |
| 81 | **Iteración C1** | 2014-03-19 19:57 → 2014-03-25 19:57 (+6d) | 2014-04-03 19:57 → 2014-04-09 19:57 (+6d) |  |  |  |
| 82 | **Análisis/Diseño** | 2014-03-19 19:57 → 2014-03-25 19:57 (+6d) | 2014-03-25 19:57 → 2014-03-27 19:57 (+2d) |  |  |  |

| ID | Task | Start | Finish |
| --- | --- | --- | --- |
| 83 | Refinación de Diagramas de Actividad | 2014-03-19 19:57 → 2014-03-25 19:57 (+6d) | 2014-03-20 19:57 → 2014-03-26 19:57 (+6d) |
| 84 | Refinación de Diagramas de Secuencia | 2014-03-20 19:57 → 2014-03-26 19:57 (+6d) | 2014-03-25 19:57 → 2014-03-27 19:57 (+2d) |
| 85 | **Implementación** | 2014-03-25 19:57 → 2014-03-27 19:57 (+2d) | 2014-04-02 18:57 → 2014-04-08 18:57 (+6d) |
| 86 | Construcción de Base de Datos | 2014-03-25 19:57 → 2014-03-27 19:57 (+2d) | 2014-03-27 19:57 → 2014-04-02 19:57 (+6d) |
| 87 | Definición de Interfaz de Usuario | 2014-03-27 19:57 → 2014-04-02 19:57 (+6d) | 2014-04-02 18:57 → 2014-04-08 18:57 (+6d) |
| 88 | **Gestión del Proyecto** | 2014-04-02 18:57 → 2014-04-08 18:57 (+6d) | 2014-04-03 18:57 → 2014-04-09 18:57 (+6d) |
| 89 | Actualización de Riesgos | 2014-04-02 18:57 → 2014-04-08 18:57 (+6d) | 2014-04-02 19:57 → 2014-04-08 19:57 (+6d) |
| 90 | Revisión de planificacion (posible replanificación) | 2014-04-02 19:57 → 2014-04-08 19:57 (+6d) | 2014-04-03 18:57 → 2014-04-09 18:57 (+6d) |
| 91 | **Gestión de Configuración** | 2014-04-03 18:57 → 2014-04-09 18:57 (+6d) | 2014-04-03 19:57 → 2014-04-09 19:57 (+6d) |
| 92 | Versionado de prototipos | 2014-04-03 18:57 → 2014-04-09 18:57 (+6d) | 2014-04-03 19:57 → 2014-04-09 19:57 (+6d) |
| 93 | Revisión de versionado de documentos modificados | 2014-04-03 18:57 → 2014-04-09 18:57 (+6d) | 2014-04-03 19:57 → 2014-04-09 19:57 (+6d) |
| 94 | **Iteración C2** | 2014-04-03 19:57 → 2014-04-09 19:57 (+6d) | 2014-04-29 19:57 → 2014-05-01 19:57 (+2d) |
| 95 | **Análisis/Diseño** | 2014-04-03 19:57 → 2014-04-09 19:57 (+6d) | 2014-04-10 20:57 → 2014-04-16 20:57 (+6d) |
| 96 | Definición inicial del Modelo de componentes | 2014-04-03 19:57 → 2014-04-09 19:57 (+6d) | 2014-04-09 20:57 → 2014-04-15 20:57 (+6d) |
| 97 | Refinación de Diagramas de clases (agregado de operaciones) | 2014-04-09 20:57 → 2014-04-15 20:57 (+6d) | 2014-04-10 20:57 → 2014-04-16 20:57 (+6d) |
| 98 | **Implementación** | 2014-04-10 20:57 → 2014-04-16 20:57 (+6d) | 2014-04-23 19:57 → 2014-04-29 19:57 (+6d) |
| 99 | Codificación de Interfaz de usuario (FrontEnd) | 2014-04-10 20:57 → 2014-04-16 20:57 (+6d) | 2014-04-23 18:57 → 2014-04-29 18:57 (+6d) |
| 100 | Codificación de Interfaz de usuario (BackEnd) | 2014-04-10 20:57 → 2014-04-16 20:57 (+6d) | 2014-04-23 19:57 → 2014-04-29 19:57 (+6d) |
| 101 | Codificación de Interfaz de usuario (Android) | 2014-04-10 20:57 → 2014-04-16 20:57 (+6d) | 2014-04-23 19:57 → 2014-04-29 19:57 (+6d) |
| 102 | **Gestión del Proyecto** | 2014-04-23 19:57 → 2014-04-29 19:57 (+6d) | 2014-04-29 17:57 → 2014-05-01 17:57 (+2d) |
| 103 | Actualización de Riesgos | 2014-04-23 19:57 → 2014-04-29 19:57 (+6d) | 2014-04-24 18:57 → 2014-04-30 18:57 (+6d) |
| 104 | Revisión de planificacion (posible replanificación) | 2014-04-24 18:57 → 2014-04-30 18:57 (+6d) | 2014-04-29 17:57 → 2014-05-01 17:57 (+2d) |
| 105 | **Gestión de Configuración** | 2014-04-29 17:57 → 2014-05-01 17:57 (+2d) | 2014-04-29 19:57 → 2014-05-01 19:57 (+2d) |
| 106 | Versionado de interfaz de usuario | 2014-04-29 17:57 → 2014-05-01 17:57 (+2d) | 2014-04-29 18:57 → 2014-05-01 18:57 (+2d) |
| 107 | Revisión de versionado de documentos modificados | 2014-04-29 18:57 → 2014-05-01 18:57 (+2d) | 2014-04-29 19:57 → 2014-05-01 19:57 (+2d) |
| 108 | **Iteración C3** | 2014-04-29 19:57 → 2014-05-01 19:57 (+2d) | 2014-05-14 19:57 → 2014-05-20 19:57 (+6d) |
| 109 | **Análisis/Diseño** | 2014-04-29 19:57 → 2014-05-01 19:57 (+2d) | 2014-04-30 18:57 → 2014-05-06 18:57 (+6d) |
| 110 | Refinación del Modelo de componentes | 2014-04-29 19:57 → 2014-05-01 19:57 (+2d) | 2014-04-30 18:57 → 2014-05-06 18:57 (+6d) |
| 111 | **Implementación** | 2014-04-30 18:57 → 2014-05-06 18:57 (+6d) | 2014-05-13 19:57 → 2014-05-15 19:57 (+2d) |
| 112 | Codificacion de logeo de usuario (FrontEnd) | 2014-04-30 18:57 → 2014-05-06 18:57 (+6d) | 2014-05-13 19:57 → 2014-05-15 19:57 (+2d) |
| 113 | Codificación de seguridad [Roles y Usuario] (BackEnd) | 2014-04-30 18:57 → 2014-05-06 18:57 (+6d) | 2014-05-13 18:57 → 2014-05-15 18:57 (+2d) |
| 114 | Codificación de Local Storage (Android) | 2014-04-30 18:57 → 2014-05-06 18:57 (+6d) | 2014-05-13 18:57 → 2014-05-15 18:57 (+2d) |
| 115 | **Gestión del Proyecto** | 2014-05-13 19:57 → 2014-05-15 19:57 (+2d) | 2014-05-14 18:57 → 2014-05-20 18:57 (+6d) |
| 116 | Actualización de Riesgos | 2014-05-13 19:57 → 2014-05-15 19:57 (+2d) | 2014-05-14 18:57 → 2014-05-20 18:57 (+6d) |
| 117 | Revisión de planificacion (posible replanificación) | 2014-05-13 19:57 → 2014-05-15 19:57 (+2d) | 2014-05-14 18:57 → 2014-05-20 18:57 (+6d) |
| 118 | **Gestión de Configuración** | 2014-05-14 18:57 → 2014-05-20 18:57 (+6d) | 2014-05-14 19:57 → 2014-05-20 19:57 (+6d) |
| 119 | Versionado de todos los proyectos | 2014-05-14 18:57 → 2014-05-20 18:57 (+6d) | 2014-05-14 19:57 → 2014-05-20 19:57 (+6d) |
| 120 | Revisión de versionado de documentos modificados | 2014-05-14 18:57 → 2014-05-20 18:57 (+6d) | 2014-05-14 19:57 → 2014-05-20 19:57 (+6d) |
| 121 | **Iteración C4** | 2014-05-14 19:57 → 2014-05-20 19:57 (+6d) | 2014-06-04 18:57 → 2014-06-10 18:57 (+6d) |
| 122 | **Análisis/Diseño** | 2014-05-14 19:57 → 2014-05-20 19:57 (+6d) | 2014-05-15 19:57 → 2014-05-21 19:57 (+6d) |
| 123 | Refinación del Modelo de Datos | 2014-05-14 19:57 → 2014-05-20 19:57 (+6d) | 2014-05-15 19:57 → 2014-05-21 19:57 (+6d) |
| 124 | **Implementación** | 2014-05-15 19:57 → 2014-05-21 19:57 (+6d) | 2014-06-03 19:57 → 2014-06-05 19:57 (+2d) |
| 125 | Codificación de Gestión de reservas online (FrontEnd) | 2014-05-15 19:57 → 2014-05-21 19:57 (+6d) | 2014-06-03 19:57 → 2014-06-05 19:57 (+2d) |
| 126 | Codificación de ABM principales (BackEnd) | 2014-05-15 19:57 → 2014-05-21 19:57 (+6d) | 2014-06-03 17:57 → 2014-06-05 17:57 (+2d) |
| 127 | Codificación de ABM principales (Android) | 2014-05-15 19:57 → 2014-05-21 19:57 (+6d) | 2014-06-03 19:57 → 2014-06-05 19:57 (+2d) |
| 128 | **Gestión del Proyecto** | 2014-06-03 19:57 → 2014-06-05 19:57 (+2d) | 2014-06-04 17:57 → 2014-06-10 17:57 (+6d) |
| 129 | Actualización de Riesgos | 2014-06-03 19:57 → 2014-06-05 19:57 (+2d) | 2014-06-04 17:57 → 2014-06-10 17:57 (+6d) |
| 130 | Revisión de planificacion (posible replanificación) | 2014-06-03 19:57 → 2014-06-05 19:57 (+2d) | 2014-06-03 20:57 → 2014-06-05 20:57 (+2d) |
| 131 | **Gestión de Configuración** | 2014-06-04 17:57 → 2014-06-10 17:57 (+6d) | 2014-06-04 18:57 → 2014-06-10 18:57 (+6d) |
| 132 | Versionado de todos los proyectos | 2014-06-04 17:57 → 2014-06-10 17:57 (+6d) | 2014-06-04 18:57 → 2014-06-10 18:57 (+6d) |
| 133 | Revisión de versionado de documentos modificados | 2014-06-04 17:57 → 2014-06-10 17:57 (+6d) | 2014-06-04 18:57 → 2014-06-10 18:57 (+6d) |
| 134 | **Iteración C5** | 2014-06-04 18:57 → 2014-06-10 18:57 (+6d) | 2014-07-10 18:57 → 2014-07-16 18:57 (+6d) |
| 135 | **Análisis/Diseño** | 2014-06-04 18:57 → 2014-06-10 18:57 (+6d) | 2014-06-05 20:57 → 2014-06-11 20:57 (+6d) |
| 136 | Revisión de Diagramas y Modelos de Análisis/Diseño | 2014-06-04 18:57 → 2014-06-10 18:57 (+6d) | 2014-06-05 20:57 → 2014-06-11 20:57 (+6d) |
| 137 | **Implementación** | 2014-06-05 20:57 → 2014-06-11 20:57 (+6d) | 2014-07-03 17:57 → 2014-07-09 17:57 (+6d) |
| 138 | Codificación de Calculos de tiempos de espera (FrontEnd) | 2014-06-05 20:57 → 2014-06-11 20:57 (+6d) | 2014-07-02 19:57 → 2014-07-08 19:57 (+6d) |
| 139 | Codificación de Funciones básicas (BackEnd) | 2014-06-05 20:57 → 2014-06-11 20:57 (+6d) | 2014-07-02 19:57 → 2014-07-08 19:57 (+6d) |
| 140 | Codificación de visualizador de ordenes (Android) | 2014-06-05 20:57 → 2014-06-11 20:57 (+6d) | 2014-07-03 17:57 → 2014-07-09 17:57 (+6d) |
| 141 | **Pruebas** | 2014-07-03 17:57 → 2014-07-09 17:57 (+6d) | 2014-07-09 19:57 → 2014-07-15 19:57 (+6d) |
| 142 | Pruebas de Funcionalidad (para las 3 aplicaciones) | 2014-07-03 17:57 → 2014-07-09 17:57 (+6d) | 2014-07-09 19:57 → 2014-07-15 19:57 (+6d) |
| 143 | **Gestión del Proyecto** | 2014-07-09 19:57 → 2014-07-15 19:57 (+6d) | 2014-07-10 17:57 → 2014-07-16 17:57 (+6d) |
| 144 | Actualización de Riesgos | 2014-07-09 19:57 → 2014-07-15 19:57 (+6d) | 2014-07-10 17:57 → 2014-07-16 17:57 (+6d) |
| 145 | Revisión de planificacion (posible replanificación) | 2014-07-09 19:57 → 2014-07-15 19:57 (+6d) | 2014-07-09 20:57 → 2014-07-15 20:57 (+6d) |
| 146 | **Gestión de Configuración** | 2014-07-10 17:57 → 2014-07-16 17:57 (+6d) | 2014-07-10 18:57 → 2014-07-16 18:57 (+6d) |
| 147 | Versionado de todos los proyectos | 2014-07-10 17:57 → 2014-07-16 17:57 (+6d) | 2014-07-10 18:57 → 2014-07-16 18:57 (+6d) |
| 148 | Revisión de versionado de documentos modificados | 2014-07-10 17:57 → 2014-07-16 17:57 (+6d) | 2014-07-10 18:57 → 2014-07-16 18:57 (+6d) |
| 149 | **Iteración C6** | 2014-07-10 18:57 → 2014-07-16 18:57 (+6d) | 2014-08-14 17:57 → 2014-08-20 17:57 (+6d) |
| 150 | **Análisis/Diseño** | 2014-07-10 18:57 → 2014-07-16 18:57 (+6d) | 2014-07-16 18:57 → 2014-07-22 18:57 (+6d) |
| 151 | Revisión de Diagramas y Modelos de Análisis/Diseño | 2014-07-10 18:57 → 2014-07-16 18:57 (+6d) | 2014-07-16 18:57 → 2014-07-22 18:57 (+6d) |
| 152 | **Implementación** | 2014-07-16 18:57 → 2014-07-22 18:57 (+6d) | 2014-08-06 20:57 → 2014-08-12 20:57 (+6d) |

| ID | Task | Start | Finish | Complete |
| --- | --- | --- | --- | --- |
| 153 | Codificación de Calculos de tiempos de espera (FrontEnd) | 2014-07-16 18:57 → 2014-07-22 18:57 (+6d) | 2014-08-06 20:57 → 2014-08-12 20:57 (+6d) |  |
| 154 | Codificación de visualizador de Ordenes (BackEnd) | 2014-07-16 18:57 → 2014-07-22 18:57 (+6d) | 2014-08-06 18:57 → 2014-08-12 18:57 (+6d) |  |
| 155 | Codificación de personalización gráfica (Android) | 2014-07-16 18:57 → 2014-07-22 18:57 (+6d) | 2014-08-06 20:57 → 2014-08-12 20:57 (+6d) |  |
| 156 | **Pruebas** | 2014-08-06 20:57 → 2014-08-12 20:57 (+6d) | 2014-08-13 18:57 → 2014-08-19 18:57 (+6d) |  |
| 157 | Pruebas de comunicación de interfaces y pruebas de funcionalidad | 2014-08-06 20:57 → 2014-08-12 20:57 (+6d) | 2014-08-13 18:57 → 2014-08-19 18:57 (+6d) |  |
| 158 | **Gestión del Proyecto** | 2014-08-13 18:57 → 2014-08-19 18:57 (+6d) | 2014-08-13 19:57 → 2014-08-19 19:57 (+6d) |  |
| 159 | Actualización de Riesgos | 2014-08-13 18:57 → 2014-08-19 18:57 (+6d) | 2014-08-13 19:57 → 2014-08-19 19:57 (+6d) |  |
| 160 | Revisión de planificacion (posible replanificación) | 2014-08-13 18:57 → 2014-08-19 18:57 (+6d) | 2014-08-13 19:57 → 2014-08-19 19:57 (+6d) |  |
| 161 | **Gestión de Configuración** | 2014-08-13 19:57 → 2014-08-19 19:57 (+6d) | 2014-08-14 17:57 → 2014-08-20 17:57 (+6d) |  |
| 162 | Versionado de todos los proyectos | 2014-08-13 19:57 → 2014-08-19 19:57 (+6d) | 2014-08-14 17:57 → 2014-08-20 17:57 (+6d) |  |
| 163 | Revisión de versionado de documentos modificados | 2014-08-13 19:57 → 2014-08-19 19:57 (+6d) | 2014-08-14 17:57 → 2014-08-20 17:57 (+6d) |  |
| 164 | Capacidad Operacional Inicial | 2014-08-14 17:57 → 2014-08-20 17:57 (+6d) | 2014-08-14 17:57 → 2014-08-20 17:57 (+6d) |  |
| 165 | **TRANSICIÓN** | 2014-08-14 17:57 → 2014-08-20 17:57 (+6d) | 2014-09-18 20:57 → 2014-09-24 20:57 (+6d) |  |
| 166 | **Iteración T1** | 2014-08-14 17:57 → 2014-08-20 17:57 (+6d) | 2014-09-18 20:57 → 2014-09-24 20:57 (+6d) |  |
| 167 | **Implementación** | 2014-08-14 17:57 → 2014-08-20 17:57 (+6d) | 2014-08-27 17:57 → 2014-09-02 17:57 (+6d) |  |
| 168 | Elaboracion de documentación para usuarios y videos tutoriales | 2014-08-14 17:57 → 2014-08-20 17:57 (+6d) | 2014-08-27 17:57 → 2014-09-02 17:57 (+6d) |  |
| 169 | **Despliegue** | 2014-08-27 17:57 → 2014-09-02 17:57 (+6d) | 2014-09-10 17:57 → 2014-09-16 17:57 (+6d) |  |
| 170 | Modelo de despliegue | 2014-08-27 17:57 → 2014-09-02 17:57 (+6d) | 2014-09-02 19:57 → 2014-09-04 19:57 (+2d) |  |
| 171 | Integración y puesta a punto del sistema | 2014-09-02 19:57 → 2014-09-04 19:57 (+2d) | 2014-09-10 17:57 → 2014-09-16 17:57 (+6d) |  |
| 172 | **Gestión del Proyecto** | 2014-09-10 17:57 → 2014-09-16 17:57 (+6d) | 2014-09-18 18:57 → 2014-09-24 18:57 (+6d) |  |
| 173 | Actualización de Riesgos | 2014-09-10 17:57 → 2014-09-16 17:57 (+6d) | 2014-09-10 18:57 → 2014-09-16 18:57 (+6d) |  |
| 174 | Revisión de planificacion (posible replanificación) | 2014-09-10 18:57 → 2014-09-16 18:57 (+6d) | 2014-09-10 19:57 → 2014-09-16 19:57 (+6d) |  |
| 175 | Análisis de resultados del proyecto | 2014-09-10 19:57 → 2014-09-16 19:57 (+6d) | 2014-09-18 18:57 → 2014-09-24 18:57 (+6d) |  |
| 176 | **Gestión de Configuración** | 2014-09-18 18:57 → 2014-09-24 18:57 (+6d) | 2014-09-18 20:57 → 2014-09-24 20:57 (+6d) |  |
| 177 | Versionado de todos los proyectos | 2014-09-18 18:57 → 2014-09-24 18:57 (+6d) | 2014-09-18 20:57 → 2014-09-24 20:57 (+6d) |  |
| 178 | Revisión de versionado de documentos modificados | 2014-09-18 18:57 → 2014-09-24 18:57 (+6d) | 2014-09-18 20:57 → 2014-09-24 20:57 (+6d) |  |
| 179 | Lanzamiento de producto | 2014-09-18 20:57 → 2014-09-24 20:57 (+6d) | 2014-09-18 20:57 → 2014-09-24 20:57 (+6d) |  |
| 180 | Fin de Proyecto | 2014-09-18 20:57 → 2014-09-24 20:57 (+6d) | 2014-09-18 20:57 → 2014-09-24 20:57 (+6d) |  |
| 181 | **Informe de avance mensual** |  |  | 8% → 15% |
| 183 | Informe de avance mensual 2 | 2013-09-25 09:00 A | 2013-09-25 13:00 A | 0% → 100% |

## Version 8 (data date 2013-07-29, saved 2014-03-12, file Informe3.mpp)

Note of the change: Informe 3

Last finish 2014-09-24 → 2014-09-30 (+6d). Complete tasks 15 → 24.

Changed:

| ID | Task | Start | Finish | Duration | Complete | Total float |
| --- | --- | --- | --- | --- | --- | --- |
| 1 | **RestApp** |  | 2014-09-24 20:57 → 2014-09-30 20:27 (+6d) | 69.99d → 70.93d | 10% → 15% |  |
| 2 | **INICIO** |  | 2013-10-01 19:57 A |  | 96% → 100% | 0d → none |
| 3 | **Iteración I1** |  | 2013-10-01 19:57 A |  | 96% → 100% | 0d → none |
| 22 | **Ambiente** | 2013-09-26 19:57 A | 2013-10-01 19:57 A |  | 0% → 100% | 0d → none |
| 23 | Identificación y evaluación de herramientas | 2013-09-26 19:57 A | 2013-10-01 19:57 A |  | 0% → 100% | 0d → none |
| 24 | Objetivos del ciclo de vida | 2013-10-01 19:57 A | 2013-10-01 19:57 A |  | 0% → 100% | 0d → none |
| 25 | **ELABORACIÓN** | 2013-10-01 19:57 A | 2014-03-25 19:57 → 2014-03-27 19:27 (+2d) | 19d → 19.94d | 0% → 24% |  |
| 26 | **Iteración E1** | 2013-10-01 19:57 A | 2013-11-07 20:57 → 2013-11-13 20:27 (+6d) | 7.12d → 8.06d | 0% → 60% |  |
| 27 | **Modelo de Negocio** | 2013-10-01 19:57 A | 2013-10-03 18:57 → 2013-10-03 19:57 A | 0.88d → 1d | 0% → 100% | 0d → none |
| 28 | Entendimiento del Modelo de Negocio | 2013-10-01 19:57 A | 2013-10-03 18:57 → 2013-10-03 19:57 A | 7h → 8h | 0% → 100% | 0d → none |
| 29 | **Requerimientos** | 2013-10-03 18:57 → 2013-10-03 19:57 A | 2013-10-10 18:57 → 2013-10-15 19:57 A (+5d) | 1.5d → 2d | 0% → 100% | 0d → none |
| 30 | Definicón de nuevos requerimientos | 2013-10-03 18:57 → 2013-10-03 19:57 A | 2013-10-03 20:57 → 2013-10-08 18:57 A (+5d) | 2h → 3h | 0% → 100% | 0d → none |
| 31 | Documentación de requerimientos según estandar | 2013-10-03 20:57 → 2013-10-08 18:57 A (+5d) | 2013-10-09 17:57 → 2013-10-10 18:57 A (+1d) | 5h → 8h | 0% → 100% | 0d → none |
| 32 | Jerarquización de requerimientos | 2013-10-09 17:57 → 2013-10-10 18:57 A (+1d) | 2013-10-10 18:57 → 2013-10-15 19:57 A (+5d) |  | 0% → 100% | 0d → none |
| 33 | **Análisis/Diseño** | 2013-10-10 18:57 → 2013-10-15 19:57 A (+5d) | 2013-10-17 18:57 → 2013-10-30 18:27 A (+13d) | 1.5d → 1.81d | 0% → 100% | 0d → none |
| 34 | Refinación de Modelo de Casos de Usos | 2013-10-10 18:57 → 2013-10-15 19:57 A (+5d) | 2013-10-10 20:57 → 2013-10-16 18:57 A (+6d) | 2h → 3h | 0% → 100% | 0d → none |
| 35 | Definición preliminar de Diagrama de clases | 2013-10-10 20:57 → 2013-10-16 18:57 A (+6d) | 2013-10-17 18:57 → 2013-10-30 18:27 A (+13d) | 10h → 11.5h | 0% → 100% | 0d → none |
| 36 | **Implementación** | 2013-10-17 18:57 → 2013-10-30 18:27 (+13d) | 2013-11-06 18:57 → 2013-11-12 18:27 (+6d) |  |  |  |
| 37 | Desarrollo prototipos independientes de prueba | 2013-10-17 18:57 → 2013-10-30 18:27 (+13d) | 2013-11-06 18:57 → 2013-11-12 18:27 (+6d) |  |  |  |
| 38 | **Gestión del Proyecto** | 2013-11-06 18:57 → 2013-11-12 18:27 (+6d) | 2013-11-06 20:57 → 2013-11-12 20:27 (+6d) |  |  |  |
| 39 | Actualización y priorización de Riesgos | 2013-11-06 18:57 → 2013-11-12 18:27 (+6d) | 2013-11-06 19:57 → 2013-11-12 19:27 (+6d) |  |  |  |
| 40 | Refinación del Plan de Proyecto | 2013-11-06 19:57 → 2013-11-12 19:27 (+6d) | 2013-11-06 20:57 → 2013-11-12 20:27 (+6d) |  |  |  |
| 41 | **Gestión de Configuración** | 2013-11-06 20:57 → 2013-11-12 20:27 (+6d) | 2013-11-07 17:57 → 2013-11-13 17:27 (+6d) |  |  |  |
| 42 | Revisión de versionado de documentos modificados | 2013-11-06 20:57 → 2013-11-12 20:27 (+6d) | 2013-11-07 17:57 → 2013-11-13 17:27 (+6d) |  |  |  |
| 43 | **Ambiente** | 2013-11-07 17:57 → 2013-11-13 17:27 (+6d) | 2013-11-07 20:57 → 2013-11-13 20:27 (+6d) |  |  |  |
| 44 | Identificación de Tecnología | 2013-11-07 17:57 → 2013-11-13 17:27 (+6d) | 2013-11-07 20:57 → 2013-11-13 20:27 (+6d) |  |  |  |
| 45 | **Iteración E2** | 2013-11-07 20:57 → 2013-11-13 20:27 (+6d) | 2014-02-06 19:57 → 2014-02-27 19:27 (+21d) |  |  |  |
| 46 | **Modelo de Negocio** | 2013-11-07 20:57 → 2013-11-13 20:27 (+6d) | 2013-11-13 17:57 → 2013-11-19 17:27 (+6d) |  |  |  |
| 47 | Refinación del Modelo de Negocio | 2013-11-07 20:57 → 2013-11-13 20:27 (+6d) | 2013-11-13 17:57 → 2013-11-19 17:27 (+6d) |  |  |  |
| 48 | **Requerimientos** | 2013-11-13 17:57 → 2013-11-19 17:27 (+6d) | 2013-11-14 17:57 → 2013-11-20 17:27 (+6d) |  |  |  |
| 49 | Validación de requerimientos | 2013-11-13 17:57 → 2013-11-19 17:27 (+6d) | 2013-11-13 20:57 → 2013-11-19 20:27 (+6d) |  |  |  |
| 50 | Mapeo de Requerimientos a Casos de Uso | 2013-11-13 17:57 → 2013-11-19 17:27 (+6d) | 2013-11-14 17:57 → 2013-11-20 17:27 (+6d) |  |  |  |
| 51 | **Análisis/Diseño** | 2013-11-14 17:57 → 2013-11-20 17:27 (+6d) | 2013-12-12 17:57 → 2014-02-05 17:27 (+55d) |  |  |  |
| 52 | Definición Inicial de diagrama de Clases | 2013-11-14 17:57 → 2013-11-20 17:27 (+6d) | 2013-11-20 19:57 → 2013-11-26 19:27 (+6d) |  |  |  |
| 53 | Definición inicial del Modelo de Datos | 2013-11-20 19:57 → 2013-11-26 19:27 (+6d) | 2013-11-26 19:57 → 2013-11-28 19:27 (+2d) |  |  |  |
| 54 | Definición inicial de Diagrama de Actividades | 2013-11-26 19:57 → 2013-11-28 19:27 (+2d) | 2013-11-28 19:57 → 2013-12-11 19:27 (+13d) |  |  |  |
| 55 | Definición inicial de Diagramas de Secuencia | 2013-11-28 19:57 → 2013-12-11 19:27 (+13d) | 2013-12-12 17:57 → 2014-02-05 17:27 (+55d) |  |  |  |
| 56 | **Implementación** | 2013-12-12 17:57 → 2014-02-05 17:27 (+55d) | 2014-02-04 19:57 → 2014-02-06 19:27 (+2d) |  |  |  |
| 57 | Mejoramientos de prototipos | 2013-12-12 17:57 → 2014-02-05 17:27 (+55d) | 2014-02-04 19:57 → 2014-02-06 19:27 (+2d) |  |  |  |
| 58 | **Gestión del Proyecto** | 2014-02-04 19:57 → 2014-02-06 19:27 (+2d) | 2014-02-05 17:57 → 2014-02-26 17:27 (+21d) |  |  |  |
| 59 | Validación del Plan de proyecto | 2014-02-04 19:57 → 2014-02-06 19:27 (+2d) | 2014-02-05 17:57 → 2014-02-26 17:27 (+21d) |  |  |  |
| 60 | **Gestión de Configuración** | 2014-02-05 17:57 → 2014-02-26 17:27 (+21d) | 2014-02-05 18:57 → 2014-02-26 18:27 (+21d) |  |  |  |
| 61 | Versionado de los prototipos | 2014-02-05 17:57 → 2014-02-26 17:27 (+21d) | 2014-02-05 18:57 → 2014-02-26 18:27 (+21d) |  |  |  |
| 62 | Revisión de versionado de documentos modificados | 2014-02-05 17:57 → 2014-02-26 17:27 (+21d) | 2014-02-05 18:57 → 2014-02-26 18:27 (+21d) |  |  |  |
| 63 | **Ambiente** | 2014-02-05 18:57 → 2014-02-26 18:27 (+21d) | 2014-02-06 19:57 → 2014-02-27 19:27 (+21d) |  |  |  |
| 64 | Preparación del ambiente de desarrollo | 2014-02-05 18:57 → 2014-02-26 18:27 (+21d) | 2014-02-06 19:57 → 2014-02-27 19:27 (+21d) |  |  |  |
| 65 | **Iteración E3** | 2014-02-06 19:57 → 2014-02-27 19:27 (+21d) | 2014-03-25 19:57 → 2014-03-27 19:27 (+2d) |  |  |  |
| 66 | **Requerimientos** | 2014-02-06 19:57 → 2014-02-27 19:27 (+21d) | 2014-02-26 18:57 → 2014-03-11 18:27 (+13d) |  |  |  |
| 67 | Validacion de Mapeo de Requerimientos a Casos de Uso | 2014-02-06 19:57 → 2014-02-27 19:27 (+21d) | 2014-02-26 18:57 → 2014-03-11 18:27 (+13d) |  |  |  |
| 68 | **Análisis/Diseño** | 2014-02-26 18:57 → 2014-03-11 18:27 (+13d) | 2014-03-18 20:57 → 2014-03-20 20:27 (+2d) |  |  |  |
| 69 | Refinación de Diagrama de Casos de Uso | 2014-02-26 18:57 → 2014-03-11 18:27 (+13d) | 2014-02-27 20:57 → 2014-03-12 20:27 (+13d) |  |  |  |
| 70 | Refinación de Diagrama de Clases | 2014-02-27 20:57 → 2014-03-12 20:27 (+13d) | 2014-03-12 18:57 → 2014-03-18 18:27 (+6d) |  |  |  |
| 71 | Refinación del Modelo de Datos | 2014-03-12 18:57 → 2014-03-18 18:27 (+6d) | 2014-03-13 18:57 → 2014-03-19 18:27 (+6d) |  |  |  |
| 72 | Descripción de casos de uso mas importantes | 2014-03-13 18:57 → 2014-03-19 18:27 (+6d) | 2014-03-18 20:57 → 2014-03-20 20:27 (+2d) |  |  |  |
| 73 | **Implementación** | 2014-03-18 20:57 → 2014-03-20 20:27 (+2d) | 2014-03-20 20:57 → 2014-03-26 20:27 (+6d) |  |  |  |
| 74 | Definición de interfaces de comunicación entre plataformas | 2014-03-18 20:57 → 2014-03-20 20:27 (+2d) | 2014-03-20 20:57 → 2014-03-26 20:27 (+6d) |  |  |  |
| 75 | **Gestión del Proyecto** | 2014-03-20 20:57 → 2014-03-26 20:27 (+6d) | 2014-03-25 18:57 → 2014-03-27 18:27 (+2d) |  |  |  |
| 76 | Actualización de planes de prevención y contigencia para nuevos Riesgos | 2014-03-20 20:57 → 2014-03-26 20:27 (+6d) | 2014-03-25 18:57 → 2014-03-27 18:27 (+2d) |  |  |  |
| 77 | **Gestión de Configuración** | 2014-03-25 18:57 → 2014-03-27 18:27 (+2d) | 2014-03-25 19:57 → 2014-03-27 19:27 (+2d) |  |  |  |
| 78 | Revisión de versionado de documentos modificados | 2014-03-25 18:57 → 2014-03-27 18:27 (+2d) | 2014-03-25 19:57 → 2014-03-27 19:27 (+2d) |  |  |  |
| 79 | Arquitectura del ciclo de vida | 2014-03-25 19:57 → 2014-03-27 19:27 (+2d) | 2014-03-25 19:57 → 2014-03-27 19:27 (+2d) |  |  |  |
| 80 | **CONSTRUCCIÓN** | 2014-03-25 19:57 → 2014-03-27 19:27 (+2d) | 2014-08-20 17:57 → 2014-08-26 17:27 (+6d) |  |  |  |
| 81 | **Iteración C1** | 2014-03-25 19:57 → 2014-03-27 19:27 (+2d) | 2014-04-09 19:57 → 2014-04-15 19:27 (+6d) |  |  |  |
| 82 | **Análisis/Diseño** | 2014-03-25 19:57 → 2014-03-27 19:27 (+2d) | 2014-03-27 19:57 → 2014-04-02 19:27 (+6d) |  |  |  |
| 83 | Refinación de Diagramas de Actividad | 2014-03-25 19:57 → 2014-03-27 19:27 (+2d) | 2014-03-26 19:57 → 2014-04-01 19:27 (+6d) |  |  |  |
| 84 | Refinación de Diagramas de Secuencia | 2014-03-26 19:57 → 2014-04-01 19:27 (+6d) | 2014-03-27 19:57 → 2014-04-02 19:27 (+6d) |  |  |  |
| 85 | **Implementación** | 2014-03-27 19:57 → 2014-04-02 19:27 (+6d) | 2014-04-08 18:57 → 2014-04-10 18:27 (+2d) |  |  |  |
| 86 | Construcción de Base de Datos | 2014-03-27 19:57 → 2014-04-02 19:27 (+6d) | 2014-04-02 19:57 → 2014-04-08 19:27 (+6d) |  |  |  |
| 87 | Definición de Interfaz de Usuario | 2014-04-02 19:57 → 2014-04-08 19:27 (+6d) | 2014-04-08 18:57 → 2014-04-10 18:27 (+2d) |  |  |  |
| 88 | **Gestión del Proyecto** | 2014-04-08 18:57 → 2014-04-10 18:27 (+2d) | 2014-04-09 18:57 → 2014-04-15 18:27 (+6d) |  |  |  |

| ID | Task | Start | Finish |
| --- | --- | --- | --- |
| 89 | Actualización de Riesgos | 2014-04-08 18:57 → 2014-04-10 18:27 (+2d) | 2014-04-08 19:57 → 2014-04-10 19:27 (+2d) |
| 90 | Revisión de planificacion (posible replanificación) | 2014-04-08 19:57 → 2014-04-10 19:27 (+2d) | 2014-04-09 18:57 → 2014-04-15 18:27 (+6d) |
| 91 | **Gestión de Configuración** | 2014-04-09 18:57 → 2014-04-15 18:27 (+6d) | 2014-04-09 19:57 → 2014-04-15 19:27 (+6d) |
| 92 | Versionado de prototipos | 2014-04-09 18:57 → 2014-04-15 18:27 (+6d) | 2014-04-09 19:57 → 2014-04-15 19:27 (+6d) |
| 93 | Revisión de versionado de documentos modificados | 2014-04-09 18:57 → 2014-04-15 18:27 (+6d) | 2014-04-09 19:57 → 2014-04-15 19:27 (+6d) |
| 94 | **Iteración C2** | 2014-04-09 19:57 → 2014-04-15 19:27 (+6d) | 2014-05-01 19:57 → 2014-05-07 19:27 (+6d) |
| 95 | **Análisis/Diseño** | 2014-04-09 19:57 → 2014-04-15 19:27 (+6d) | 2014-04-16 20:57 → 2014-04-22 20:27 (+6d) |
| 96 | Definición inicial del Modelo de componentes | 2014-04-09 19:57 → 2014-04-15 19:27 (+6d) | 2014-04-15 20:57 → 2014-04-17 20:27 (+2d) |
| 97 | Refinación de Diagramas de clases (agregado de operaciones) | 2014-04-15 20:57 → 2014-04-17 20:27 (+2d) | 2014-04-16 20:57 → 2014-04-22 20:27 (+6d) |
| 98 | **Implementación** | 2014-04-16 20:57 → 2014-04-22 20:27 (+6d) | 2014-04-29 19:57 → 2014-05-01 19:27 (+2d) |
| 99 | Codificación de Interfaz de usuario (FrontEnd) | 2014-04-16 20:57 → 2014-04-22 20:27 (+6d) | 2014-04-29 18:57 → 2014-05-01 18:27 (+2d) |
| 100 | Codificación de Interfaz de usuario (BackEnd) | 2014-04-16 20:57 → 2014-04-22 20:27 (+6d) | 2014-04-29 19:57 → 2014-05-01 19:27 (+2d) |
| 101 | Codificación de Interfaz de usuario (Android) | 2014-04-16 20:57 → 2014-04-22 20:27 (+6d) | 2014-04-29 19:57 → 2014-05-01 19:27 (+2d) |
| 102 | **Gestión del Proyecto** | 2014-04-29 19:57 → 2014-05-01 19:27 (+2d) | 2014-05-01 17:57 → 2014-05-07 17:27 (+6d) |
| 103 | Actualización de Riesgos | 2014-04-29 19:57 → 2014-05-01 19:27 (+2d) | 2014-04-30 18:57 → 2014-05-06 18:27 (+6d) |
| 104 | Revisión de planificacion (posible replanificación) | 2014-04-30 18:57 → 2014-05-06 18:27 (+6d) | 2014-05-01 17:57 → 2014-05-07 17:27 (+6d) |
| 105 | **Gestión de Configuración** | 2014-05-01 17:57 → 2014-05-07 17:27 (+6d) | 2014-05-01 19:57 → 2014-05-07 19:27 (+6d) |
| 106 | Versionado de interfaz de usuario | 2014-05-01 17:57 → 2014-05-07 17:27 (+6d) | 2014-05-01 18:57 → 2014-05-07 18:27 (+6d) |
| 107 | Revisión de versionado de documentos modificados | 2014-05-01 18:57 → 2014-05-07 18:27 (+6d) | 2014-05-01 19:57 → 2014-05-07 19:27 (+6d) |
| 108 | **Iteración C3** | 2014-05-01 19:57 → 2014-05-07 19:27 (+6d) | 2014-05-20 19:57 → 2014-05-22 19:27 (+2d) |
| 109 | **Análisis/Diseño** | 2014-05-01 19:57 → 2014-05-07 19:27 (+6d) | 2014-05-06 18:57 → 2014-05-08 18:27 (+2d) |
| 110 | Refinación del Modelo de componentes | 2014-05-01 19:57 → 2014-05-07 19:27 (+6d) | 2014-05-06 18:57 → 2014-05-08 18:27 (+2d) |
| 111 | **Implementación** | 2014-05-06 18:57 → 2014-05-08 18:27 (+2d) | 2014-05-15 19:57 → 2014-05-21 19:27 (+6d) |
| 112 | Codificacion de logeo de usuario (FrontEnd) | 2014-05-06 18:57 → 2014-05-08 18:27 (+2d) | 2014-05-15 19:57 → 2014-05-21 19:27 (+6d) |
| 113 | Codificación de seguridad [Roles y Usuario] (BackEnd) | 2014-05-06 18:57 → 2014-05-08 18:27 (+2d) | 2014-05-15 18:57 → 2014-05-21 18:27 (+6d) |
| 114 | Codificación de Local Storage (Android) | 2014-05-06 18:57 → 2014-05-08 18:27 (+2d) | 2014-05-15 18:57 → 2014-05-21 18:27 (+6d) |
| 115 | **Gestión del Proyecto** | 2014-05-15 19:57 → 2014-05-21 19:27 (+6d) | 2014-05-20 18:57 → 2014-05-22 18:27 (+2d) |
| 116 | Actualización de Riesgos | 2014-05-15 19:57 → 2014-05-21 19:27 (+6d) | 2014-05-20 18:57 → 2014-05-22 18:27 (+2d) |
| 117 | Revisión de planificacion (posible replanificación) | 2014-05-15 19:57 → 2014-05-21 19:27 (+6d) | 2014-05-20 18:57 → 2014-05-22 18:27 (+2d) |
| 118 | **Gestión de Configuración** | 2014-05-20 18:57 → 2014-05-22 18:27 (+2d) | 2014-05-20 19:57 → 2014-05-22 19:27 (+2d) |
| 119 | Versionado de todos los proyectos | 2014-05-20 18:57 → 2014-05-22 18:27 (+2d) | 2014-05-20 19:57 → 2014-05-22 19:27 (+2d) |
| 120 | Revisión de versionado de documentos modificados | 2014-05-20 18:57 → 2014-05-22 18:27 (+2d) | 2014-05-20 19:57 → 2014-05-22 19:27 (+2d) |
| 121 | **Iteración C4** | 2014-05-20 19:57 → 2014-05-22 19:27 (+2d) | 2014-06-10 18:57 → 2014-06-12 18:27 (+2d) |
| 122 | **Análisis/Diseño** | 2014-05-20 19:57 → 2014-05-22 19:27 (+2d) | 2014-05-21 19:57 → 2014-05-27 19:27 (+6d) |
| 123 | Refinación del Modelo de Datos | 2014-05-20 19:57 → 2014-05-22 19:27 (+2d) | 2014-05-21 19:57 → 2014-05-27 19:27 (+6d) |
| 124 | **Implementación** | 2014-05-21 19:57 → 2014-05-27 19:27 (+6d) | 2014-06-05 19:57 → 2014-06-11 19:27 (+6d) |
| 125 | Codificación de Gestión de reservas online (FrontEnd) | 2014-05-21 19:57 → 2014-05-27 19:27 (+6d) | 2014-06-05 19:57 → 2014-06-11 19:27 (+6d) |
| 126 | Codificación de ABM principales (BackEnd) | 2014-05-21 19:57 → 2014-05-27 19:27 (+6d) | 2014-06-05 17:57 → 2014-06-11 17:27 (+6d) |
| 127 | Codificación de ABM principales (Android) | 2014-05-21 19:57 → 2014-05-27 19:27 (+6d) | 2014-06-05 19:57 → 2014-06-11 19:27 (+6d) |
| 128 | **Gestión del Proyecto** | 2014-06-05 19:57 → 2014-06-11 19:27 (+6d) | 2014-06-10 17:57 → 2014-06-12 17:27 (+2d) |
| 129 | Actualización de Riesgos | 2014-06-05 19:57 → 2014-06-11 19:27 (+6d) | 2014-06-10 17:57 → 2014-06-12 17:27 (+2d) |
| 130 | Revisión de planificacion (posible replanificación) | 2014-06-05 19:57 → 2014-06-11 19:27 (+6d) | 2014-06-05 20:57 → 2014-06-11 20:27 (+6d) |
| 131 | **Gestión de Configuración** | 2014-06-10 17:57 → 2014-06-12 17:27 (+2d) | 2014-06-10 18:57 → 2014-06-12 18:27 (+2d) |
| 132 | Versionado de todos los proyectos | 2014-06-10 17:57 → 2014-06-12 17:27 (+2d) | 2014-06-10 18:57 → 2014-06-12 18:27 (+2d) |
| 133 | Revisión de versionado de documentos modificados | 2014-06-10 17:57 → 2014-06-12 17:27 (+2d) | 2014-06-10 18:57 → 2014-06-12 18:27 (+2d) |
| 134 | **Iteración C5** | 2014-06-10 18:57 → 2014-06-12 18:27 (+2d) | 2014-07-16 18:57 → 2014-07-22 18:27 (+6d) |
| 135 | **Análisis/Diseño** | 2014-06-10 18:57 → 2014-06-12 18:27 (+2d) | 2014-06-11 20:57 → 2014-06-17 20:27 (+6d) |
| 136 | Revisión de Diagramas y Modelos de Análisis/Diseño | 2014-06-10 18:57 → 2014-06-12 18:27 (+2d) | 2014-06-11 20:57 → 2014-06-17 20:27 (+6d) |
| 137 | **Implementación** | 2014-06-11 20:57 → 2014-06-17 20:27 (+6d) | 2014-07-09 17:57 → 2014-07-15 17:27 (+6d) |
| 138 | Codificación de Calculos de tiempos de espera (FrontEnd) | 2014-06-11 20:57 → 2014-06-17 20:27 (+6d) | 2014-07-08 19:57 → 2014-07-10 19:27 (+2d) |
| 139 | Codificación de Funciones básicas (BackEnd) | 2014-06-11 20:57 → 2014-06-17 20:27 (+6d) | 2014-07-08 19:57 → 2014-07-10 19:27 (+2d) |
| 140 | Codificación de visualizador de ordenes (Android) | 2014-06-11 20:57 → 2014-06-17 20:27 (+6d) | 2014-07-09 17:57 → 2014-07-15 17:27 (+6d) |
| 141 | **Pruebas** | 2014-07-09 17:57 → 2014-07-15 17:27 (+6d) | 2014-07-15 19:57 → 2014-07-17 19:27 (+2d) |
| 142 | Pruebas de Funcionalidad (para las 3 aplicaciones) | 2014-07-09 17:57 → 2014-07-15 17:27 (+6d) | 2014-07-15 19:57 → 2014-07-17 19:27 (+2d) |
| 143 | **Gestión del Proyecto** | 2014-07-15 19:57 → 2014-07-17 19:27 (+2d) | 2014-07-16 17:57 → 2014-07-22 17:27 (+6d) |
| 144 | Actualización de Riesgos | 2014-07-15 19:57 → 2014-07-17 19:27 (+2d) | 2014-07-16 17:57 → 2014-07-22 17:27 (+6d) |
| 145 | Revisión de planificacion (posible replanificación) | 2014-07-15 19:57 → 2014-07-17 19:27 (+2d) | 2014-07-15 20:57 → 2014-07-17 20:27 (+2d) |
| 146 | **Gestión de Configuración** | 2014-07-16 17:57 → 2014-07-22 17:27 (+6d) | 2014-07-16 18:57 → 2014-07-22 18:27 (+6d) |
| 147 | Versionado de todos los proyectos | 2014-07-16 17:57 → 2014-07-22 17:27 (+6d) | 2014-07-16 18:57 → 2014-07-22 18:27 (+6d) |
| 148 | Revisión de versionado de documentos modificados | 2014-07-16 17:57 → 2014-07-22 17:27 (+6d) | 2014-07-16 18:57 → 2014-07-22 18:27 (+6d) |
| 149 | **Iteración C6** | 2014-07-16 18:57 → 2014-07-22 18:27 (+6d) | 2014-08-20 17:57 → 2014-08-26 17:27 (+6d) |
| 150 | **Análisis/Diseño** | 2014-07-16 18:57 → 2014-07-22 18:27 (+6d) | 2014-07-22 18:57 → 2014-07-24 18:27 (+2d) |
| 151 | Revisión de Diagramas y Modelos de Análisis/Diseño | 2014-07-16 18:57 → 2014-07-22 18:27 (+6d) | 2014-07-22 18:57 → 2014-07-24 18:27 (+2d) |
| 152 | **Implementación** | 2014-07-22 18:57 → 2014-07-24 18:27 (+2d) | 2014-08-12 20:57 → 2014-08-14 20:27 (+2d) |
| 153 | Codificación de Calculos de tiempos de espera (FrontEnd) | 2014-07-22 18:57 → 2014-07-24 18:27 (+2d) | 2014-08-12 20:57 → 2014-08-14 20:27 (+2d) |
| 154 | Codificación de visualizador de Ordenes (BackEnd) | 2014-07-22 18:57 → 2014-07-24 18:27 (+2d) | 2014-08-12 18:57 → 2014-08-14 18:27 (+2d) |
| 155 | Codificación de personalización gráfica (Android) | 2014-07-22 18:57 → 2014-07-24 18:27 (+2d) | 2014-08-12 20:57 → 2014-08-14 20:27 (+2d) |
| 156 | **Pruebas** | 2014-08-12 20:57 → 2014-08-14 20:27 (+2d) | 2014-08-19 18:57 → 2014-08-21 18:27 (+2d) |
| 157 | Pruebas de comunicación de interfaces y pruebas de funcionalidad | 2014-08-12 20:57 → 2014-08-14 20:27 (+2d) | 2014-08-19 18:57 → 2014-08-21 18:27 (+2d) |
| 158 | **Gestión del Proyecto** | 2014-08-19 18:57 → 2014-08-21 18:27 (+2d) | 2014-08-19 19:57 → 2014-08-21 19:27 (+2d) |

| ID | Task | Start | Finish | Complete |
| --- | --- | --- | --- | --- |
| 159 | Actualización de Riesgos | 2014-08-19 18:57 → 2014-08-21 18:27 (+2d) | 2014-08-19 19:57 → 2014-08-21 19:27 (+2d) |  |
| 160 | Revisión de planificacion (posible replanificación) | 2014-08-19 18:57 → 2014-08-21 18:27 (+2d) | 2014-08-19 19:57 → 2014-08-21 19:27 (+2d) |  |
| 161 | **Gestión de Configuración** | 2014-08-19 19:57 → 2014-08-21 19:27 (+2d) | 2014-08-20 17:57 → 2014-08-26 17:27 (+6d) |  |
| 162 | Versionado de todos los proyectos | 2014-08-19 19:57 → 2014-08-21 19:27 (+2d) | 2014-08-20 17:57 → 2014-08-26 17:27 (+6d) |  |
| 163 | Revisión de versionado de documentos modificados | 2014-08-19 19:57 → 2014-08-21 19:27 (+2d) | 2014-08-20 17:57 → 2014-08-26 17:27 (+6d) |  |
| 164 | Capacidad Operacional Inicial | 2014-08-20 17:57 → 2014-08-26 17:27 (+6d) | 2014-08-20 17:57 → 2014-08-26 17:27 (+6d) |  |
| 165 | **TRANSICIÓN** | 2014-08-20 17:57 → 2014-08-26 17:27 (+6d) | 2014-09-24 20:57 → 2014-09-30 20:27 (+6d) |  |
| 166 | **Iteración T1** | 2014-08-20 17:57 → 2014-08-26 17:27 (+6d) | 2014-09-24 20:57 → 2014-09-30 20:27 (+6d) |  |
| 167 | **Implementación** | 2014-08-20 17:57 → 2014-08-26 17:27 (+6d) | 2014-09-02 17:57 → 2014-09-04 17:27 (+2d) |  |
| 168 | Elaboracion de documentación para usuarios y videos tutoriales | 2014-08-20 17:57 → 2014-08-26 17:27 (+6d) | 2014-09-02 17:57 → 2014-09-04 17:27 (+2d) |  |
| 169 | **Despliegue** | 2014-09-02 17:57 → 2014-09-04 17:27 (+2d) | 2014-09-16 17:57 → 2014-09-18 17:27 (+2d) |  |
| 170 | Modelo de despliegue | 2014-09-02 17:57 → 2014-09-04 17:27 (+2d) | 2014-09-04 19:57 → 2014-09-10 19:27 (+6d) |  |
| 171 | Integración y puesta a punto del sistema | 2014-09-04 19:57 → 2014-09-10 19:27 (+6d) | 2014-09-16 17:57 → 2014-09-18 17:27 (+2d) |  |
| 172 | **Gestión del Proyecto** | 2014-09-16 17:57 → 2014-09-18 17:27 (+2d) | 2014-09-24 18:57 → 2014-09-30 18:27 (+6d) |  |
| 173 | Actualización de Riesgos | 2014-09-16 17:57 → 2014-09-18 17:27 (+2d) | 2014-09-16 18:57 → 2014-09-18 18:27 (+2d) |  |
| 174 | Revisión de planificacion (posible replanificación) | 2014-09-16 18:57 → 2014-09-18 18:27 (+2d) | 2014-09-16 19:57 → 2014-09-18 19:27 (+2d) |  |
| 175 | Análisis de resultados del proyecto | 2014-09-16 19:57 → 2014-09-18 19:27 (+2d) | 2014-09-24 18:57 → 2014-09-30 18:27 (+6d) |  |
| 176 | **Gestión de Configuración** | 2014-09-24 18:57 → 2014-09-30 18:27 (+6d) | 2014-09-24 20:57 → 2014-09-30 20:27 (+6d) |  |
| 177 | Versionado de todos los proyectos | 2014-09-24 18:57 → 2014-09-30 18:27 (+6d) | 2014-09-24 20:57 → 2014-09-30 20:27 (+6d) |  |
| 178 | Revisión de versionado de documentos modificados | 2014-09-24 18:57 → 2014-09-30 18:27 (+6d) | 2014-09-24 20:57 → 2014-09-30 20:27 (+6d) |  |
| 179 | Lanzamiento de producto | 2014-09-24 20:57 → 2014-09-30 20:27 (+6d) | 2014-09-24 20:57 → 2014-09-30 20:27 (+6d) |  |
| 180 | Fin de Proyecto | 2014-09-24 20:57 → 2014-09-30 20:27 (+6d) | 2014-09-24 20:57 → 2014-09-30 20:27 (+6d) |  |
| 181 | **Informe de avance mensual** |  |  | 15% → 23% |
| 184 | Informe de avance mensual 3 | 2013-10-30 09:00 A | 2013-10-30 13:00 A | 0% → 100% |

## Version 9 (data date 2013-07-29, saved 2014-03-12, file Informe4.mpp)

Note of the change: Creacion de todos los reportes

Last finish 2014-09-30 → 2014-10-02 (+2d). Complete tasks 24 → 36.

Changed:

| ID | Task | Start | Finish | Duration | Complete | Total float |
| --- | --- | --- | --- | --- | --- | --- |
| 1 | **RestApp** |  | 2014-09-30 20:27 → 2014-10-02 17:27 (+2d) | 70.93d → 71.56d | 15% → 23% |  |
| 25 | **ELABORACIÓN** |  | 2014-03-27 19:27 → 2014-04-01 20:27 (+5d) | 19.94d → 20.56d | 24% → 64% |  |
| 26 | **Iteración E1** |  | 2013-11-13 20:27 → 2013-11-14 17:27 A (+1d) | 8.06d → 8.19d | 60% → 100% | 0d → none |
| 36 | **Implementación** | 2013-10-30 18:27 A | 2013-11-12 18:27 → 2013-11-12 20:27 A | 2.5d → 2.75d | 0% → 100% | 0d → none |
| 37 | Desarrollo prototipos independientes de prueba | 2013-10-30 18:27 A | 2013-11-12 18:27 → 2013-11-12 20:27 A | 20h → 22h | 0% → 100% | 0d → none |
| 38 | **Gestión del Proyecto** | 2013-11-12 18:27 → 2013-11-12 20:27 A | 2013-11-12 20:27 → 2013-11-13 18:57 A (+1d) | 0.25d → 0.31d | 0% → 100% | 0d → none |
| 39 | Actualización y priorización de Riesgos | 2013-11-12 18:27 → 2013-11-12 20:27 A | 2013-11-12 19:27 → 2013-11-12 20:57 A | 1h → 0.5h | 0% → 100% | 0d → none |
| 40 | Refinación del Plan de Proyecto | 2013-11-12 19:27 → 2013-11-12 20:57 A | 2013-11-12 20:27 → 2013-11-13 18:57 A (+1d) | 1h → 2h | 0% → 100% | 0d → none |
| 41 | **Gestión de Configuración** | 2013-11-12 20:27 → 2013-11-13 18:57 A (+1d) | 2013-11-13 17:27 → 2013-11-13 19:27 A | 0.12d → 0.06d | 0% → 100% | 0d → none |
| 42 | Revisión de versionado de documentos modificados | 2013-11-12 20:27 → 2013-11-13 18:57 A (+1d) | 2013-11-13 17:27 → 2013-11-13 19:27 A | 1h → 0.5h | 0% → 100% | 0d → none |
| 43 | **Ambiente** | 2013-11-13 17:27 → 2013-11-13 19:27 A | 2013-11-13 20:27 → 2013-11-14 17:27 A (+1d) | 0.38d → 0.25d | 0% → 100% | 0d → none |
| 44 | Identificación de Tecnología | 2013-11-13 17:27 → 2013-11-13 19:27 A | 2013-11-13 20:27 → 2013-11-14 17:27 A (+1d) | 3h → 2h | 0% → 100% | 0d → none |
| 45 | **Iteración E2** | 2013-11-13 20:27 → 2013-11-14 17:27 A (+1d) | 2014-02-27 19:27 → 2014-03-11 20:27 (+12d) | 7.38d → 7.88d | 0% → 62% |  |
| 46 | **Modelo de Negocio** | 2013-11-13 20:27 → 2013-11-14 17:27 A (+1d) | 2013-11-19 17:27 → 2013-11-19 18:27 A |  | 0% → 100% | 0d → none |
| 47 | Refinación del Modelo de Negocio | 2013-11-13 20:27 → 2013-11-14 17:27 A (+1d) | 2013-11-19 17:27 → 2013-11-19 18:27 A |  | 0% → 100% | 0d → none |
| 48 | **Requerimientos** | 2013-11-19 17:27 → 2013-11-19 18:27 A | 2013-11-20 17:27 A | 0.5d → 0.38d | 0% → 100% | 0d → none |
| 49 | Validación de requerimientos | 2013-11-19 17:27 → 2013-11-19 18:27 A | 2013-11-19 20:27 → 2013-11-20 17:27 A (+1d) |  | 0% → 100% | 0.12d → none |
| 50 | Mapeo de Requerimientos a Casos de Uso | 2013-11-19 17:27 → 2013-11-19 18:27 A | 2013-11-20 17:27 → 2013-11-19 20:27 A (-1d) | 4h → 2h | 0% → 100% | 0d → none |
| 51 | **Análisis/Diseño** | 2013-11-20 17:27 A | 2014-02-05 17:27 → 2014-02-06 18:27 (+1d) | 4.5d → 5.12d | 0% → 76% |  |
| 52 | Definición Inicial de diagrama de Clases | 2013-11-20 17:27 A | 2013-11-26 19:27 → 2013-11-26 20:27 A | 10h → 11h | 0% → 100% | 0d → none |
| 53 | Definición inicial del Modelo de Datos | 2013-11-26 19:27 → 2013-11-26 20:27 A | 2013-11-28 19:27 → 2013-12-10 17:27 A (+12d) | 8h → 9h | 0% → 100% | 0d → none |
| 54 | Definición inicial de Diagrama de Actividades | 2013-11-28 19:27 → 2013-12-10 17:27 A (+12d) | 2013-12-11 19:27 → 2013-12-12 20:27 A (+1d) | 8h → 11h | 0% → 100% | 0d → none |
| 55 | Definición inicial de Diagramas de Secuencia | 2013-12-11 19:27 → 2013-12-12 20:27 (+1d) | 2014-02-05 17:27 → 2014-02-06 18:27 (+1d) |  |  |  |
| 56 | **Implementación** | 2014-02-05 17:27 → 2014-02-06 18:27 (+1d) | 2014-02-06 19:27 → 2014-02-26 20:27 (+20d) |  |  |  |
| 57 | Mejoramientos de prototipos | 2014-02-05 17:27 → 2014-02-06 18:27 (+1d) | 2014-02-06 19:27 → 2014-02-26 20:27 (+20d) |  |  |  |
| 58 | **Gestión del Proyecto** | 2014-02-06 19:27 → 2014-02-26 20:27 (+20d) | 2014-02-26 17:27 → 2014-02-27 18:27 (+1d) |  |  |  |
| 59 | Validación del Plan de proyecto | 2014-02-06 19:27 → 2014-02-26 20:27 (+20d) | 2014-02-26 17:27 → 2014-02-27 18:27 (+1d) |  |  |  |
| 60 | **Gestión de Configuración** | 2014-02-26 17:27 → 2014-02-27 18:27 (+1d) | 2014-02-26 18:27 → 2014-02-27 19:27 (+1d) |  |  |  |
| 61 | Versionado de los prototipos | 2014-02-26 17:27 → 2014-02-27 18:27 (+1d) | 2014-02-26 18:27 → 2014-02-27 19:27 (+1d) |  |  |  |
| 62 | Revisión de versionado de documentos modificados | 2014-02-26 17:27 → 2014-02-27 18:27 (+1d) | 2014-02-26 18:27 → 2014-02-27 19:27 (+1d) |  |  |  |
| 63 | **Ambiente** | 2014-02-26 18:27 → 2014-02-27 19:27 (+1d) | 2014-02-27 19:27 → 2014-03-11 20:27 (+12d) |  |  |  |
| 64 | Preparación del ambiente de desarrollo | 2014-02-26 18:27 → 2014-02-27 19:27 (+1d) | 2014-02-27 19:27 → 2014-03-11 20:27 (+12d) |  |  |  |
| 65 | **Iteración E3** | 2014-02-27 19:27 → 2014-03-11 20:27 (+12d) | 2014-03-27 19:27 → 2014-04-01 20:27 (+5d) |  |  |  |
| 66 | **Requerimientos** | 2014-02-27 19:27 → 2014-03-11 20:27 (+12d) | 2014-03-11 18:27 → 2014-03-12 19:27 (+1d) |  |  |  |
| 67 | Validacion de Mapeo de Requerimientos a Casos de Uso | 2014-02-27 19:27 → 2014-03-11 20:27 (+12d) | 2014-03-11 18:27 → 2014-03-12 19:27 (+1d) |  |  |  |
| 68 | **Análisis/Diseño** | 2014-03-11 18:27 → 2014-03-12 19:27 (+1d) | 2014-03-20 20:27 → 2014-03-26 17:27 (+6d) |  |  |  |
| 69 | Refinación de Diagrama de Casos de Uso | 2014-03-11 18:27 → 2014-03-12 19:27 (+1d) | 2014-03-12 20:27 → 2014-03-18 17:27 (+6d) |  |  |  |
| 70 | Refinación de Diagrama de Clases | 2014-03-12 20:27 → 2014-03-18 17:27 (+6d) | 2014-03-18 18:27 → 2014-03-19 19:27 (+1d) |  |  |  |
| 71 | Refinación del Modelo de Datos | 2014-03-18 18:27 → 2014-03-19 19:27 (+1d) | 2014-03-19 18:27 → 2014-03-20 19:27 (+1d) |  |  |  |
| 72 | Descripción de casos de uso mas importantes | 2014-03-19 18:27 → 2014-03-20 19:27 (+1d) | 2014-03-20 20:27 → 2014-03-26 17:27 (+6d) |  |  |  |
| 73 | **Implementación** | 2014-03-20 20:27 → 2014-03-26 17:27 (+6d) | 2014-03-26 20:27 → 2014-04-01 17:27 (+6d) |  |  |  |
| 74 | Definición de interfaces de comunicación entre plataformas | 2014-03-20 20:27 → 2014-03-26 17:27 (+6d) | 2014-03-26 20:27 → 2014-04-01 17:27 (+6d) |  |  |  |
| 75 | **Gestión del Proyecto** | 2014-03-26 20:27 → 2014-04-01 17:27 (+6d) | 2014-03-27 18:27 → 2014-04-01 19:27 (+5d) |  |  |  |
| 76 | Actualización de planes de prevención y contigencia para nuevos Riesgos | 2014-03-26 20:27 → 2014-04-01 17:27 (+6d) | 2014-03-27 18:27 → 2014-04-01 19:27 (+5d) |  |  |  |
| 77 | **Gestión de Configuración** | 2014-03-27 18:27 → 2014-04-01 19:27 (+5d) | 2014-03-27 19:27 → 2014-04-01 20:27 (+5d) |  |  |  |
| 78 | Revisión de versionado de documentos modificados | 2014-03-27 18:27 → 2014-04-01 19:27 (+5d) | 2014-03-27 19:27 → 2014-04-01 20:27 (+5d) |  |  |  |
| 79 | Arquitectura del ciclo de vida | 2014-03-27 19:27 → 2014-04-01 20:27 (+5d) | 2014-03-27 19:27 → 2014-04-01 20:27 (+5d) |  |  |  |
| 80 | **CONSTRUCCIÓN** | 2014-03-27 19:27 → 2014-04-01 20:27 (+5d) | 2014-08-26 17:27 → 2014-08-27 18:27 (+1d) |  |  |  |
| 81 | **Iteración C1** | 2014-03-27 19:27 → 2014-04-01 20:27 (+5d) | 2014-04-15 19:27 → 2014-04-16 20:27 (+1d) |  |  |  |
| 82 | **Análisis/Diseño** | 2014-03-27 19:27 → 2014-04-01 20:27 (+5d) | 2014-04-02 19:27 → 2014-04-03 20:27 (+1d) |  |  |  |
| 83 | Refinación de Diagramas de Actividad | 2014-03-27 19:27 → 2014-04-01 20:27 (+5d) | 2014-04-01 19:27 → 2014-04-02 20:27 (+1d) |  |  |  |
| 84 | Refinación de Diagramas de Secuencia | 2014-04-01 19:27 → 2014-04-02 20:27 (+1d) | 2014-04-02 19:27 → 2014-04-03 20:27 (+1d) |  |  |  |
| 85 | **Implementación** | 2014-04-02 19:27 → 2014-04-03 20:27 (+1d) | 2014-04-10 18:27 → 2014-04-15 19:27 (+5d) |  |  |  |
| 86 | Construcción de Base de Datos | 2014-04-02 19:27 → 2014-04-03 20:27 (+1d) | 2014-04-08 19:27 → 2014-04-09 20:27 (+1d) |  |  |  |
| 87 | Definición de Interfaz de Usuario | 2014-04-08 19:27 → 2014-04-09 20:27 (+1d) | 2014-04-10 18:27 → 2014-04-15 19:27 (+5d) |  |  |  |
| 88 | **Gestión del Proyecto** | 2014-04-10 18:27 → 2014-04-15 19:27 (+5d) | 2014-04-15 18:27 → 2014-04-16 19:27 (+1d) |  |  |  |
| 89 | Actualización de Riesgos | 2014-04-10 18:27 → 2014-04-15 19:27 (+5d) | 2014-04-10 19:27 → 2014-04-15 20:27 (+5d) |  |  |  |
| 90 | Revisión de planificacion (posible replanificación) | 2014-04-10 19:27 → 2014-04-15 20:27 (+5d) | 2014-04-15 18:27 → 2014-04-16 19:27 (+1d) |  |  |  |
| 91 | **Gestión de Configuración** | 2014-04-15 18:27 → 2014-04-16 19:27 (+1d) | 2014-04-15 19:27 → 2014-04-16 20:27 (+1d) |  |  |  |
| 92 | Versionado de prototipos | 2014-04-15 18:27 → 2014-04-16 19:27 (+1d) | 2014-04-15 19:27 → 2014-04-16 20:27 (+1d) |  |  |  |
| 93 | Revisión de versionado de documentos modificados | 2014-04-15 18:27 → 2014-04-16 19:27 (+1d) | 2014-04-15 19:27 → 2014-04-16 20:27 (+1d) |  |  |  |
| 94 | **Iteración C2** | 2014-04-15 19:27 → 2014-04-16 20:27 (+1d) | 2014-05-07 19:27 → 2014-05-08 20:27 (+1d) |  |  |  |
| 95 | **Análisis/Diseño** | 2014-04-15 19:27 → 2014-04-16 20:27 (+1d) | 2014-04-22 20:27 → 2014-04-24 17:27 (+2d) |  |  |  |
| 96 | Definición inicial del Modelo de componentes | 2014-04-15 19:27 → 2014-04-16 20:27 (+1d) | 2014-04-17 20:27 → 2014-04-23 17:27 (+6d) |  |  |  |
| 97 | Refinación de Diagramas de clases (agregado de operaciones) | 2014-04-17 20:27 → 2014-04-23 17:27 (+6d) | 2014-04-22 20:27 → 2014-04-24 17:27 (+2d) |  |  |  |
| 98 | **Implementación** | 2014-04-22 20:27 → 2014-04-24 17:27 (+2d) | 2014-05-01 19:27 → 2014-05-06 20:27 (+5d) |  |  |  |
| 99 | Codificación de Interfaz de usuario (FrontEnd) | 2014-04-22 20:27 → 2014-04-24 17:27 (+2d) | 2014-05-01 18:27 → 2014-05-06 19:27 (+5d) |  |  |  |
| 100 | Codificación de Interfaz de usuario (BackEnd) | 2014-04-22 20:27 → 2014-04-24 17:27 (+2d) | 2014-05-01 19:27 → 2014-05-06 20:27 (+5d) |  |  |  |
| 101 | Codificación de Interfaz de usuario (Android) | 2014-04-22 20:27 → 2014-04-24 17:27 (+2d) | 2014-05-01 19:27 → 2014-05-06 20:27 (+5d) |  |  |  |
| 102 | **Gestión del Proyecto** | 2014-05-01 19:27 → 2014-05-06 20:27 (+5d) | 2014-05-07 17:27 → 2014-05-08 18:27 (+1d) |  |  |  |

| ID | Task | Start | Finish |
| --- | --- | --- | --- |
| 103 | Actualización de Riesgos | 2014-05-01 19:27 → 2014-05-06 20:27 (+5d) | 2014-05-06 18:27 → 2014-05-07 19:27 (+1d) |
| 104 | Revisión de planificacion (posible replanificación) | 2014-05-06 18:27 → 2014-05-07 19:27 (+1d) | 2014-05-07 17:27 → 2014-05-08 18:27 (+1d) |
| 105 | **Gestión de Configuración** | 2014-05-07 17:27 → 2014-05-08 18:27 (+1d) | 2014-05-07 19:27 → 2014-05-08 20:27 (+1d) |
| 106 | Versionado de interfaz de usuario | 2014-05-07 17:27 → 2014-05-08 18:27 (+1d) | 2014-05-07 18:27 → 2014-05-08 19:27 (+1d) |
| 107 | Revisión de versionado de documentos modificados | 2014-05-07 18:27 → 2014-05-08 19:27 (+1d) | 2014-05-07 19:27 → 2014-05-08 20:27 (+1d) |
| 108 | **Iteración C3** | 2014-05-07 19:27 → 2014-05-08 20:27 (+1d) | 2014-05-22 19:27 → 2014-05-27 20:27 (+5d) |
| 109 | **Análisis/Diseño** | 2014-05-07 19:27 → 2014-05-08 20:27 (+1d) | 2014-05-08 18:27 → 2014-05-13 19:27 (+5d) |
| 110 | Refinación del Modelo de componentes | 2014-05-07 19:27 → 2014-05-08 20:27 (+1d) | 2014-05-08 18:27 → 2014-05-13 19:27 (+5d) |
| 111 | **Implementación** | 2014-05-08 18:27 → 2014-05-13 19:27 (+5d) | 2014-05-21 19:27 → 2014-05-22 20:27 (+1d) |
| 112 | Codificacion de logeo de usuario (FrontEnd) | 2014-05-08 18:27 → 2014-05-13 19:27 (+5d) | 2014-05-21 19:27 → 2014-05-22 20:27 (+1d) |
| 113 | Codificación de seguridad [Roles y Usuario] (BackEnd) | 2014-05-08 18:27 → 2014-05-13 19:27 (+5d) | 2014-05-21 18:27 → 2014-05-22 19:27 (+1d) |
| 114 | Codificación de Local Storage (Android) | 2014-05-08 18:27 → 2014-05-13 19:27 (+5d) | 2014-05-21 18:27 → 2014-05-22 19:27 (+1d) |
| 115 | **Gestión del Proyecto** | 2014-05-21 19:27 → 2014-05-22 20:27 (+1d) | 2014-05-22 18:27 → 2014-05-27 19:27 (+5d) |
| 116 | Actualización de Riesgos | 2014-05-21 19:27 → 2014-05-22 20:27 (+1d) | 2014-05-22 18:27 → 2014-05-27 19:27 (+5d) |
| 117 | Revisión de planificacion (posible replanificación) | 2014-05-21 19:27 → 2014-05-22 20:27 (+1d) | 2014-05-22 18:27 → 2014-05-27 19:27 (+5d) |
| 118 | **Gestión de Configuración** | 2014-05-22 18:27 → 2014-05-27 19:27 (+5d) | 2014-05-22 19:27 → 2014-05-27 20:27 (+5d) |
| 119 | Versionado de todos los proyectos | 2014-05-22 18:27 → 2014-05-27 19:27 (+5d) | 2014-05-22 19:27 → 2014-05-27 20:27 (+5d) |
| 120 | Revisión de versionado de documentos modificados | 2014-05-22 18:27 → 2014-05-27 19:27 (+5d) | 2014-05-22 19:27 → 2014-05-27 20:27 (+5d) |
| 121 | **Iteración C4** | 2014-05-22 19:27 → 2014-05-27 20:27 (+5d) | 2014-06-12 18:27 → 2014-06-17 19:27 (+5d) |
| 122 | **Análisis/Diseño** | 2014-05-22 19:27 → 2014-05-27 20:27 (+5d) | 2014-05-27 19:27 → 2014-05-28 20:27 (+1d) |
| 123 | Refinación del Modelo de Datos | 2014-05-22 19:27 → 2014-05-27 20:27 (+5d) | 2014-05-27 19:27 → 2014-05-28 20:27 (+1d) |
| 124 | **Implementación** | 2014-05-27 19:27 → 2014-05-28 20:27 (+1d) | 2014-06-11 19:27 → 2014-06-12 20:27 (+1d) |
| 125 | Codificación de Gestión de reservas online (FrontEnd) | 2014-05-27 19:27 → 2014-05-28 20:27 (+1d) | 2014-06-11 19:27 → 2014-06-12 20:27 (+1d) |
| 126 | Codificación de ABM principales (BackEnd) | 2014-05-27 19:27 → 2014-05-28 20:27 (+1d) | 2014-06-11 17:27 → 2014-06-12 18:27 (+1d) |
| 127 | Codificación de ABM principales (Android) | 2014-05-27 19:27 → 2014-05-28 20:27 (+1d) | 2014-06-11 19:27 → 2014-06-12 20:27 (+1d) |
| 128 | **Gestión del Proyecto** | 2014-06-11 19:27 → 2014-06-12 20:27 (+1d) | 2014-06-12 17:27 → 2014-06-17 18:27 (+5d) |
| 129 | Actualización de Riesgos | 2014-06-11 19:27 → 2014-06-12 20:27 (+1d) | 2014-06-12 17:27 → 2014-06-17 18:27 (+5d) |
| 130 | Revisión de planificacion (posible replanificación) | 2014-06-11 19:27 → 2014-06-12 20:27 (+1d) | 2014-06-11 20:27 → 2014-06-17 17:27 (+6d) |
| 131 | **Gestión de Configuración** | 2014-06-12 17:27 → 2014-06-17 18:27 (+5d) | 2014-06-12 18:27 → 2014-06-17 19:27 (+5d) |
| 132 | Versionado de todos los proyectos | 2014-06-12 17:27 → 2014-06-17 18:27 (+5d) | 2014-06-12 18:27 → 2014-06-17 19:27 (+5d) |
| 133 | Revisión de versionado de documentos modificados | 2014-06-12 17:27 → 2014-06-17 18:27 (+5d) | 2014-06-12 18:27 → 2014-06-17 19:27 (+5d) |
| 134 | **Iteración C5** | 2014-06-12 18:27 → 2014-06-17 19:27 (+5d) | 2014-07-22 18:27 → 2014-07-23 19:27 (+1d) |
| 135 | **Análisis/Diseño** | 2014-06-12 18:27 → 2014-06-17 19:27 (+5d) | 2014-06-17 20:27 → 2014-06-19 17:27 (+2d) |
| 136 | Revisión de Diagramas y Modelos de Análisis/Diseño | 2014-06-12 18:27 → 2014-06-17 19:27 (+5d) | 2014-06-17 20:27 → 2014-06-19 17:27 (+2d) |
| 137 | **Implementación** | 2014-06-17 20:27 → 2014-06-19 17:27 (+2d) | 2014-07-15 17:27 → 2014-07-16 18:27 (+1d) |
| 138 | Codificación de Calculos de tiempos de espera (FrontEnd) | 2014-06-17 20:27 → 2014-06-19 17:27 (+2d) | 2014-07-10 19:27 → 2014-07-15 20:27 (+5d) |
| 139 | Codificación de Funciones básicas (BackEnd) | 2014-06-17 20:27 → 2014-06-19 17:27 (+2d) | 2014-07-10 19:27 → 2014-07-15 20:27 (+5d) |
| 140 | Codificación de visualizador de ordenes (Android) | 2014-06-17 20:27 → 2014-06-19 17:27 (+2d) | 2014-07-15 17:27 → 2014-07-16 18:27 (+1d) |
| 141 | **Pruebas** | 2014-07-15 17:27 → 2014-07-16 18:27 (+1d) | 2014-07-17 19:27 → 2014-07-22 20:27 (+5d) |
| 142 | Pruebas de Funcionalidad (para las 3 aplicaciones) | 2014-07-15 17:27 → 2014-07-16 18:27 (+1d) | 2014-07-17 19:27 → 2014-07-22 20:27 (+5d) |
| 143 | **Gestión del Proyecto** | 2014-07-17 19:27 → 2014-07-22 20:27 (+5d) | 2014-07-22 17:27 → 2014-07-23 18:27 (+1d) |
| 144 | Actualización de Riesgos | 2014-07-17 19:27 → 2014-07-22 20:27 (+5d) | 2014-07-22 17:27 → 2014-07-23 18:27 (+1d) |
| 145 | Revisión de planificacion (posible replanificación) | 2014-07-17 19:27 → 2014-07-22 20:27 (+5d) | 2014-07-17 20:27 → 2014-07-23 17:27 (+6d) |
| 146 | **Gestión de Configuración** | 2014-07-22 17:27 → 2014-07-23 18:27 (+1d) | 2014-07-22 18:27 → 2014-07-23 19:27 (+1d) |
| 147 | Versionado de todos los proyectos | 2014-07-22 17:27 → 2014-07-23 18:27 (+1d) | 2014-07-22 18:27 → 2014-07-23 19:27 (+1d) |
| 148 | Revisión de versionado de documentos modificados | 2014-07-22 17:27 → 2014-07-23 18:27 (+1d) | 2014-07-22 18:27 → 2014-07-23 19:27 (+1d) |
| 149 | **Iteración C6** | 2014-07-22 18:27 → 2014-07-23 19:27 (+1d) | 2014-08-26 17:27 → 2014-08-27 18:27 (+1d) |
| 150 | **Análisis/Diseño** | 2014-07-22 18:27 → 2014-07-23 19:27 (+1d) | 2014-07-24 18:27 → 2014-07-29 19:27 (+5d) |
| 151 | Revisión de Diagramas y Modelos de Análisis/Diseño | 2014-07-22 18:27 → 2014-07-23 19:27 (+1d) | 2014-07-24 18:27 → 2014-07-29 19:27 (+5d) |
| 152 | **Implementación** | 2014-07-24 18:27 → 2014-07-29 19:27 (+5d) | 2014-08-14 20:27 → 2014-08-20 17:27 (+6d) |
| 153 | Codificación de Calculos de tiempos de espera (FrontEnd) | 2014-07-24 18:27 → 2014-07-29 19:27 (+5d) | 2014-08-14 20:27 → 2014-08-20 17:27 (+6d) |
| 154 | Codificación de visualizador de Ordenes (BackEnd) | 2014-07-24 18:27 → 2014-07-29 19:27 (+5d) | 2014-08-14 18:27 → 2014-08-19 19:27 (+5d) |
| 155 | Codificación de personalización gráfica (Android) | 2014-07-24 18:27 → 2014-07-29 19:27 (+5d) | 2014-08-14 20:27 → 2014-08-20 17:27 (+6d) |
| 156 | **Pruebas** | 2014-08-14 20:27 → 2014-08-20 17:27 (+6d) | 2014-08-21 18:27 → 2014-08-26 19:27 (+5d) |
| 157 | Pruebas de comunicación de interfaces y pruebas de funcionalidad | 2014-08-14 20:27 → 2014-08-20 17:27 (+6d) | 2014-08-21 18:27 → 2014-08-26 19:27 (+5d) |
| 158 | **Gestión del Proyecto** | 2014-08-21 18:27 → 2014-08-26 19:27 (+5d) | 2014-08-21 19:27 → 2014-08-26 20:27 (+5d) |
| 159 | Actualización de Riesgos | 2014-08-21 18:27 → 2014-08-26 19:27 (+5d) | 2014-08-21 19:27 → 2014-08-26 20:27 (+5d) |
| 160 | Revisión de planificacion (posible replanificación) | 2014-08-21 18:27 → 2014-08-26 19:27 (+5d) | 2014-08-21 19:27 → 2014-08-26 20:27 (+5d) |
| 161 | **Gestión de Configuración** | 2014-08-21 19:27 → 2014-08-26 20:27 (+5d) | 2014-08-26 17:27 → 2014-08-27 18:27 (+1d) |
| 162 | Versionado de todos los proyectos | 2014-08-21 19:27 → 2014-08-26 20:27 (+5d) | 2014-08-26 17:27 → 2014-08-27 18:27 (+1d) |
| 163 | Revisión de versionado de documentos modificados | 2014-08-21 19:27 → 2014-08-26 20:27 (+5d) | 2014-08-26 17:27 → 2014-08-27 18:27 (+1d) |
| 164 | Capacidad Operacional Inicial | 2014-08-26 17:27 → 2014-08-27 18:27 (+1d) | 2014-08-26 17:27 → 2014-08-27 18:27 (+1d) |
| 165 | **TRANSICIÓN** | 2014-08-26 17:27 → 2014-08-27 18:27 (+1d) | 2014-09-30 20:27 → 2014-10-02 17:27 (+2d) |
| 166 | **Iteración T1** | 2014-08-26 17:27 → 2014-08-27 18:27 (+1d) | 2014-09-30 20:27 → 2014-10-02 17:27 (+2d) |
| 167 | **Implementación** | 2014-08-26 17:27 → 2014-08-27 18:27 (+1d) | 2014-09-04 17:27 → 2014-09-09 18:27 (+5d) |
| 168 | Elaboracion de documentación para usuarios y videos tutoriales | 2014-08-26 17:27 → 2014-08-27 18:27 (+1d) | 2014-09-04 17:27 → 2014-09-09 18:27 (+5d) |
| 169 | **Despliegue** | 2014-09-04 17:27 → 2014-09-09 18:27 (+5d) | 2014-09-18 17:27 → 2014-09-23 18:27 (+5d) |
| 170 | Modelo de despliegue | 2014-09-04 17:27 → 2014-09-09 18:27 (+5d) | 2014-09-10 19:27 → 2014-09-11 20:27 (+1d) |
| 171 | Integración y puesta a punto del sistema | 2014-09-10 19:27 → 2014-09-11 20:27 (+1d) | 2014-09-18 17:27 → 2014-09-23 18:27 (+5d) |
| 172 | **Gestión del Proyecto** | 2014-09-18 17:27 → 2014-09-23 18:27 (+5d) | 2014-09-30 18:27 → 2014-10-01 19:27 (+1d) |

| ID | Task | Start | Finish | Complete | Other |
| --- | --- | --- | --- | --- | --- |
| 173 | Actualización de Riesgos | 2014-09-18 17:27 → 2014-09-23 18:27 (+5d) | 2014-09-18 18:27 → 2014-09-23 19:27 (+5d) |  |  |
| 174 | Revisión de planificacion (posible replanificación) | 2014-09-18 18:27 → 2014-09-23 19:27 (+5d) | 2014-09-18 19:27 → 2014-09-23 20:27 (+5d) |  |  |
| 175 | Análisis de resultados del proyecto | 2014-09-18 19:27 → 2014-09-23 20:27 (+5d) | 2014-09-30 18:27 → 2014-10-01 19:27 (+1d) |  |  |
| 176 | **Gestión de Configuración** | 2014-09-30 18:27 → 2014-10-01 19:27 (+1d) | 2014-09-30 20:27 → 2014-10-02 17:27 (+2d) |  |  |
| 177 | Versionado de todos los proyectos | 2014-09-30 18:27 → 2014-10-01 19:27 (+1d) | 2014-09-30 20:27 → 2014-10-02 17:27 (+2d) |  |  |
| 178 | Revisión de versionado de documentos modificados | 2014-09-30 18:27 → 2014-10-01 19:27 (+1d) | 2014-09-30 20:27 → 2014-10-02 17:27 (+2d) |  |  |
| 179 | Lanzamiento de producto | 2014-09-30 20:27 → 2014-10-02 17:27 (+2d) | 2014-09-30 20:27 → 2014-10-02 17:27 (+2d) |  |  |
| 180 | Fin de Proyecto | 2014-09-30 20:27 → 2014-10-02 17:27 (+2d) | 2014-09-30 20:27 → 2014-10-02 17:27 (+2d) |  |  |
| 181 | **Informe de avance mensual** |  |  | 23% → 31% |  |
| 185 | Informe de avance mensual 4 | 2013-11-27 09:00 → 2013-12-10 09:00 A (+13d) | 2013-11-27 13:00 → 2013-12-10 13:00 A (+13d) | 0% → 100% | constraint start no earlier than 2013-11-27 09:00 → start no earlier than 2013-12-10 09:00 |

## Version 10 (data date 2013-07-29, saved 2014-03-12, file Informe5.mpp)

Note of the change: Creacion de todos los reportes

Last finish 2014-10-02 → 2014-09-30 (-2d). Complete tasks 36 → 43.

Changed:

| ID | Task | Start | Finish | Duration | Complete | Total float |
| --- | --- | --- | --- | --- | --- | --- |
| 1 | **RestApp** |  | 2014-10-02 17:27 → 2014-09-30 18:27 (-2d) | 71.56d → 70.68d | 23% → 25% |  |
| 25 | **ELABORACIÓN** |  | 2014-04-01 20:27 → 2014-03-27 17:27 (-5d) | 20.56d → 19.69d | 64% → 78% |  |
| 45 | **Iteración E2** |  | 2014-03-11 20:27 → 2014-02-27 17:27 A (-12d) | 7.88d → 7d | 62% → 100% | 0d → none |
| 51 | **Análisis/Diseño** |  | 2014-02-06 18:27 → 2014-02-05 19:27 A (-1d) | 5.12d → 4.75d | 76% → 100% | 0d → none |
| 55 | Definición inicial de Diagramas de Secuencia | 2013-12-12 20:27 A | 2014-02-06 18:27 → 2014-02-05 19:27 A (-1d) | 10h → 7h | 0% → 100% | 0d → none |
| 56 | **Implementación** | 2014-02-06 18:27 → 2014-02-05 19:27 A (-1d) | 2014-02-26 20:27 → 2014-02-06 19:27 A (-20d) | 0.75d → 0.5d | 0% → 100% | 0d → none |
| 57 | Mejoramientos de prototipos | 2014-02-06 18:27 → 2014-02-05 19:27 A (-1d) | 2014-02-26 20:27 → 2014-02-06 19:27 A (-20d) | 6h → 4h | 0% → 100% | 0d → none |
| 58 | **Gestión del Proyecto** | 2014-02-26 20:27 → 2014-02-06 19:27 A (-20d) | 2014-02-27 18:27 → 2014-02-06 20:27 A (-21d) | 0.25d → 0.12d | 0% → 100% | 0d → none |
| 59 | Validación del Plan de proyecto | 2014-02-26 20:27 → 2014-02-06 19:27 A (-20d) | 2014-02-27 18:27 → 2014-02-06 20:27 A (-21d) | 2h → 1h | 0% → 100% | 0d → none |
| 60 | **Gestión de Configuración** | 2014-02-27 18:27 → 2014-02-06 20:27 A (-21d) | 2014-02-27 19:27 → 2014-02-26 17:27 A (-1d) |  | 0% → 100% | 0d → none |
| 61 | Versionado de los prototipos | 2014-02-27 18:27 → 2014-02-06 20:27 A (-21d) | 2014-02-27 19:27 → 2014-02-26 17:27 A (-1d) |  | 0% → 100% | 0d → none |
| 62 | Revisión de versionado de documentos modificados | 2014-02-27 18:27 → 2014-02-06 20:27 A (-21d) | 2014-02-27 19:27 → 2014-02-06 20:57 A (-21d) | 1h → 0.5h | 0% → 100% | 0d → none |
| 63 | **Ambiente** | 2014-02-27 19:27 → 2014-02-26 17:27 A (-1d) | 2014-03-11 20:27 → 2014-02-27 17:27 A (-12d) | 0.62d → 0.5d | 0% → 100% | 0d → none |
| 64 | Preparación del ambiente de desarrollo | 2014-02-27 19:27 → 2014-02-26 17:27 A (-1d) | 2014-03-11 20:27 → 2014-02-27 17:27 A (-12d) | 5h → 4h | 0% → 100% | 0d → none |
| 65 | **Iteración E3** | 2014-03-11 20:27 → 2014-02-27 17:27 (-12d) | 2014-04-01 20:27 → 2014-03-27 17:27 (-5d) |  |  |  |
| 66 | **Requerimientos** | 2014-03-11 20:27 → 2014-02-27 17:27 (-12d) | 2014-03-12 19:27 → 2014-02-27 20:27 (-13d) |  |  |  |
| 67 | Validacion de Mapeo de Requerimientos a Casos de Uso | 2014-03-11 20:27 → 2014-02-27 17:27 (-12d) | 2014-03-12 19:27 → 2014-02-27 20:27 (-13d) |  |  |  |
| 68 | **Análisis/Diseño** | 2014-03-12 19:27 → 2014-02-27 20:27 (-13d) | 2014-03-26 17:27 → 2014-03-20 18:27 (-6d) |  |  |  |
| 69 | Refinación de Diagrama de Casos de Uso | 2014-03-12 19:27 → 2014-02-27 20:27 (-13d) | 2014-03-18 17:27 → 2014-03-12 18:27 (-6d) |  |  |  |
| 70 | Refinación de Diagrama de Clases | 2014-03-18 17:27 → 2014-03-12 18:27 (-6d) | 2014-03-19 19:27 → 2014-03-13 20:27 (-6d) |  |  |  |
| 71 | Refinación del Modelo de Datos | 2014-03-19 19:27 → 2014-03-13 20:27 (-6d) | 2014-03-20 19:27 → 2014-03-18 20:27 (-2d) |  |  |  |
| 72 | Descripción de casos de uso mas importantes | 2014-03-20 19:27 → 2014-03-18 20:27 (-2d) | 2014-03-26 17:27 → 2014-03-20 18:27 (-6d) |  |  |  |
| 73 | **Implementación** | 2014-03-26 17:27 → 2014-03-20 18:27 (-6d) | 2014-04-01 17:27 → 2014-03-26 18:27 (-6d) |  |  |  |
| 74 | Definición de interfaces de comunicación entre plataformas | 2014-03-26 17:27 → 2014-03-20 18:27 (-6d) | 2014-04-01 17:27 → 2014-03-26 18:27 (-6d) |  |  |  |
| 75 | **Gestión del Proyecto** | 2014-04-01 17:27 → 2014-03-26 18:27 (-6d) | 2014-04-01 19:27 → 2014-03-26 20:27 (-6d) |  |  |  |
| 76 | Actualización de planes de prevención y contigencia para nuevos Riesgos | 2014-04-01 17:27 → 2014-03-26 18:27 (-6d) | 2014-04-01 19:27 → 2014-03-26 20:27 (-6d) |  |  |  |
| 77 | **Gestión de Configuración** | 2014-04-01 19:27 → 2014-03-26 20:27 (-6d) | 2014-04-01 20:27 → 2014-03-27 17:27 (-5d) |  |  |  |
| 78 | Revisión de versionado de documentos modificados | 2014-04-01 19:27 → 2014-03-26 20:27 (-6d) | 2014-04-01 20:27 → 2014-03-27 17:27 (-5d) |  |  |  |
| 79 | Arquitectura del ciclo de vida | 2014-04-01 20:27 → 2014-03-27 17:27 (-5d) | 2014-04-01 20:27 → 2014-03-27 17:27 (-5d) |  |  |  |
| 80 | **CONSTRUCCIÓN** | 2014-04-01 20:27 → 2014-03-27 17:27 (-5d) | 2014-08-27 18:27 → 2014-08-21 19:27 (-6d) |  |  |  |
| 81 | **Iteración C1** | 2014-04-01 20:27 → 2014-03-27 17:27 (-5d) | 2014-04-16 20:27 → 2014-04-15 17:27 (-1d) |  |  |  |
| 82 | **Análisis/Diseño** | 2014-04-01 20:27 → 2014-03-27 17:27 (-5d) | 2014-04-03 20:27 → 2014-04-02 17:27 (-1d) |  |  |  |
| 83 | Refinación de Diagramas de Actividad | 2014-04-01 20:27 → 2014-03-27 17:27 (-5d) | 2014-04-02 20:27 → 2014-04-01 17:27 (-1d) |  |  |  |
| 84 | Refinación de Diagramas de Secuencia | 2014-04-02 20:27 → 2014-04-01 17:27 (-1d) | 2014-04-03 20:27 → 2014-04-02 17:27 (-1d) |  |  |  |
| 85 | **Implementación** | 2014-04-03 20:27 → 2014-04-02 17:27 (-1d) | 2014-04-15 19:27 → 2014-04-09 20:27 (-6d) |  |  |  |
| 86 | Construcción de Base de Datos | 2014-04-03 20:27 → 2014-04-02 17:27 (-1d) | 2014-04-09 20:27 → 2014-04-08 17:27 (-1d) |  |  |  |
| 87 | Definición de Interfaz de Usuario | 2014-04-09 20:27 → 2014-04-08 17:27 (-1d) | 2014-04-15 19:27 → 2014-04-09 20:27 (-6d) |  |  |  |
| 88 | **Gestión del Proyecto** | 2014-04-15 19:27 → 2014-04-09 20:27 (-6d) | 2014-04-16 19:27 → 2014-04-10 20:27 (-6d) |  |  |  |
| 89 | Actualización de Riesgos | 2014-04-15 19:27 → 2014-04-09 20:27 (-6d) | 2014-04-15 20:27 → 2014-04-10 17:27 (-5d) |  |  |  |
| 90 | Revisión de planificacion (posible replanificación) | 2014-04-15 20:27 → 2014-04-10 17:27 (-5d) | 2014-04-16 19:27 → 2014-04-10 20:27 (-6d) |  |  |  |
| 91 | **Gestión de Configuración** | 2014-04-16 19:27 → 2014-04-10 20:27 (-6d) | 2014-04-16 20:27 → 2014-04-15 17:27 (-1d) |  |  |  |
| 92 | Versionado de prototipos | 2014-04-16 19:27 → 2014-04-10 20:27 (-6d) | 2014-04-16 20:27 → 2014-04-15 17:27 (-1d) |  |  |  |
| 93 | Revisión de versionado de documentos modificados | 2014-04-16 19:27 → 2014-04-10 20:27 (-6d) | 2014-04-16 20:27 → 2014-04-15 17:27 (-1d) |  |  |  |
| 94 | **Iteración C2** | 2014-04-16 20:27 → 2014-04-15 17:27 (-1d) | 2014-05-08 20:27 → 2014-05-07 17:27 (-1d) |  |  |  |
| 95 | **Análisis/Diseño** | 2014-04-16 20:27 → 2014-04-15 17:27 (-1d) | 2014-04-24 17:27 → 2014-04-22 18:27 (-2d) |  |  |  |
| 96 | Definición inicial del Modelo de componentes | 2014-04-16 20:27 → 2014-04-15 17:27 (-1d) | 2014-04-23 17:27 → 2014-04-17 18:27 (-6d) |  |  |  |
| 97 | Refinación de Diagramas de clases (agregado de operaciones) | 2014-04-23 17:27 → 2014-04-17 18:27 (-6d) | 2014-04-24 17:27 → 2014-04-22 18:27 (-2d) |  |  |  |
| 98 | **Implementación** | 2014-04-24 17:27 → 2014-04-22 18:27 (-2d) | 2014-05-06 20:27 → 2014-05-01 17:27 (-5d) |  |  |  |
| 99 | Codificación de Interfaz de usuario (FrontEnd) | 2014-04-24 17:27 → 2014-04-22 18:27 (-2d) | 2014-05-06 19:27 → 2014-04-30 20:27 (-6d) |  |  |  |
| 100 | Codificación de Interfaz de usuario (BackEnd) | 2014-04-24 17:27 → 2014-04-22 18:27 (-2d) | 2014-05-06 20:27 → 2014-05-01 17:27 (-5d) |  |  |  |
| 101 | Codificación de Interfaz de usuario (Android) | 2014-04-24 17:27 → 2014-04-22 18:27 (-2d) | 2014-05-06 20:27 → 2014-05-01 17:27 (-5d) |  |  |  |
| 102 | **Gestión del Proyecto** | 2014-05-06 20:27 → 2014-05-01 17:27 (-5d) | 2014-05-08 18:27 → 2014-05-06 19:27 (-2d) |  |  |  |
| 103 | Actualización de Riesgos | 2014-05-06 20:27 → 2014-05-01 17:27 (-5d) | 2014-05-07 19:27 → 2014-05-01 20:27 (-6d) |  |  |  |
| 104 | Revisión de planificacion (posible replanificación) | 2014-05-07 19:27 → 2014-05-01 20:27 (-6d) | 2014-05-08 18:27 → 2014-05-06 19:27 (-2d) |  |  |  |
| 105 | **Gestión de Configuración** | 2014-05-08 18:27 → 2014-05-06 19:27 (-2d) | 2014-05-08 20:27 → 2014-05-07 17:27 (-1d) |  |  |  |
| 106 | Versionado de interfaz de usuario | 2014-05-08 18:27 → 2014-05-06 19:27 (-2d) | 2014-05-08 19:27 → 2014-05-06 20:27 (-2d) |  |  |  |
| 107 | Revisión de versionado de documentos modificados | 2014-05-08 19:27 → 2014-05-06 20:27 (-2d) | 2014-05-08 20:27 → 2014-05-07 17:27 (-1d) |  |  |  |
| 108 | **Iteración C3** | 2014-05-08 20:27 → 2014-05-07 17:27 (-1d) | 2014-05-27 20:27 → 2014-05-22 17:27 (-5d) |  |  |  |
| 109 | **Análisis/Diseño** | 2014-05-08 20:27 → 2014-05-07 17:27 (-1d) | 2014-05-13 19:27 → 2014-05-07 20:27 (-6d) |  |  |  |
| 110 | Refinación del Modelo de componentes | 2014-05-08 20:27 → 2014-05-07 17:27 (-1d) | 2014-05-13 19:27 → 2014-05-07 20:27 (-6d) |  |  |  |
| 111 | **Implementación** | 2014-05-13 19:27 → 2014-05-07 20:27 (-6d) | 2014-05-22 20:27 → 2014-05-21 17:27 (-1d) |  |  |  |
| 112 | Codificacion de logeo de usuario (FrontEnd) | 2014-05-13 19:27 → 2014-05-07 20:27 (-6d) | 2014-05-22 20:27 → 2014-05-21 17:27 (-1d) |  |  |  |
| 113 | Codificación de seguridad [Roles y Usuario] (BackEnd) | 2014-05-13 19:27 → 2014-05-07 20:27 (-6d) | 2014-05-22 19:27 → 2014-05-20 20:27 (-2d) |  |  |  |
| 114 | Codificación de Local Storage (Android) | 2014-05-13 19:27 → 2014-05-07 20:27 (-6d) | 2014-05-22 19:27 → 2014-05-20 20:27 (-2d) |  |  |  |
| 115 | **Gestión del Proyecto** | 2014-05-22 20:27 → 2014-05-21 17:27 (-1d) | 2014-05-27 19:27 → 2014-05-21 20:27 (-6d) |  |  |  |
| 116 | Actualización de Riesgos | 2014-05-22 20:27 → 2014-05-21 17:27 (-1d) | 2014-05-27 19:27 → 2014-05-21 20:27 (-6d) |  |  |  |
| 117 | Revisión de planificacion (posible replanificación) | 2014-05-22 20:27 → 2014-05-21 17:27 (-1d) | 2014-05-27 19:27 → 2014-05-21 20:27 (-6d) |  |  |  |
| 118 | **Gestión de Configuración** | 2014-05-27 19:27 → 2014-05-21 20:27 (-6d) | 2014-05-27 20:27 → 2014-05-22 17:27 (-5d) |  |  |  |
| 119 | Versionado de todos los proyectos | 2014-05-27 19:27 → 2014-05-21 20:27 (-6d) | 2014-05-27 20:27 → 2014-05-22 17:27 (-5d) |  |  |  |
| 120 | Revisión de versionado de documentos modificados | 2014-05-27 19:27 → 2014-05-21 20:27 (-6d) | 2014-05-27 20:27 → 2014-05-22 17:27 (-5d) |  |  |  |

| ID | Task | Start | Finish | Complete | Other |
| --- | --- | --- | --- | --- | --- |
| 121 | **Iteración C4** | 2014-05-27 20:27 → 2014-05-22 17:27 (-5d) | 2014-06-17 19:27 → 2014-06-11 20:27 (-6d) |  |  |
| 122 | **Análisis/Diseño** | 2014-05-27 20:27 → 2014-05-22 17:27 (-5d) | 2014-05-28 20:27 → 2014-05-27 17:27 (-1d) |  |  |
| 123 | Refinación del Modelo de Datos | 2014-05-27 20:27 → 2014-05-22 17:27 (-5d) | 2014-05-28 20:27 → 2014-05-27 17:27 (-1d) |  |  |
| 124 | **Implementación** | 2014-05-28 20:27 → 2014-05-27 17:27 (-1d) | 2014-06-12 20:27 → 2014-06-11 17:27 (-1d) |  |  |
| 125 | Codificación de Gestión de reservas online (FrontEnd) | 2014-05-28 20:27 → 2014-05-27 17:27 (-1d) | 2014-06-12 20:27 → 2014-06-11 17:27 (-1d) |  |  |
| 126 | Codificación de ABM principales (BackEnd) | 2014-05-28 20:27 → 2014-05-27 17:27 (-1d) | 2014-06-12 18:27 → 2014-06-10 19:27 (-2d) |  |  |
| 127 | Codificación de ABM principales (Android) | 2014-05-28 20:27 → 2014-05-27 17:27 (-1d) | 2014-06-12 20:27 → 2014-06-11 17:27 (-1d) |  |  |
| 128 | **Gestión del Proyecto** | 2014-06-12 20:27 → 2014-06-11 17:27 (-1d) | 2014-06-17 18:27 → 2014-06-11 19:27 (-6d) |  |  |
| 129 | Actualización de Riesgos | 2014-06-12 20:27 → 2014-06-11 17:27 (-1d) | 2014-06-17 18:27 → 2014-06-11 19:27 (-6d) |  |  |
| 130 | Revisión de planificacion (posible replanificación) | 2014-06-12 20:27 → 2014-06-11 17:27 (-1d) | 2014-06-17 17:27 → 2014-06-11 18:27 (-6d) |  |  |
| 131 | **Gestión de Configuración** | 2014-06-17 18:27 → 2014-06-11 19:27 (-6d) | 2014-06-17 19:27 → 2014-06-11 20:27 (-6d) |  |  |
| 132 | Versionado de todos los proyectos | 2014-06-17 18:27 → 2014-06-11 19:27 (-6d) | 2014-06-17 19:27 → 2014-06-11 20:27 (-6d) |  |  |
| 133 | Revisión de versionado de documentos modificados | 2014-06-17 18:27 → 2014-06-11 19:27 (-6d) | 2014-06-17 19:27 → 2014-06-11 20:27 (-6d) |  |  |
| 134 | **Iteración C5** | 2014-06-17 19:27 → 2014-06-11 20:27 (-6d) | 2014-07-23 19:27 → 2014-07-17 20:27 (-6d) |  |  |
| 135 | **Análisis/Diseño** | 2014-06-17 19:27 → 2014-06-11 20:27 (-6d) | 2014-06-19 17:27 → 2014-06-17 18:27 (-2d) |  |  |
| 136 | Revisión de Diagramas y Modelos de Análisis/Diseño | 2014-06-17 19:27 → 2014-06-11 20:27 (-6d) | 2014-06-19 17:27 → 2014-06-17 18:27 (-2d) |  |  |
| 137 | **Implementación** | 2014-06-19 17:27 → 2014-06-17 18:27 (-2d) | 2014-07-16 18:27 → 2014-07-10 19:27 (-6d) |  |  |
| 138 | Codificación de Calculos de tiempos de espera (FrontEnd) | 2014-06-19 17:27 → 2014-06-17 18:27 (-2d) | 2014-07-15 20:27 → 2014-07-10 17:27 (-5d) |  |  |
| 139 | Codificación de Funciones básicas (BackEnd) | 2014-06-19 17:27 → 2014-06-17 18:27 (-2d) | 2014-07-15 20:27 → 2014-07-10 17:27 (-5d) |  |  |
| 140 | Codificación de visualizador de ordenes (Android) | 2014-06-19 17:27 → 2014-06-17 18:27 (-2d) | 2014-07-16 18:27 → 2014-07-10 19:27 (-6d) |  |  |
| 141 | **Pruebas** | 2014-07-16 18:27 → 2014-07-10 19:27 (-6d) | 2014-07-22 20:27 → 2014-07-17 17:27 (-5d) |  |  |
| 142 | Pruebas de Funcionalidad (para las 3 aplicaciones) | 2014-07-16 18:27 → 2014-07-10 19:27 (-6d) | 2014-07-22 20:27 → 2014-07-17 17:27 (-5d) |  |  |
| 143 | **Gestión del Proyecto** | 2014-07-22 20:27 → 2014-07-17 17:27 (-5d) | 2014-07-23 18:27 → 2014-07-17 19:27 (-6d) |  |  |
| 144 | Actualización de Riesgos | 2014-07-22 20:27 → 2014-07-17 17:27 (-5d) | 2014-07-23 18:27 → 2014-07-17 19:27 (-6d) |  |  |
| 145 | Revisión de planificacion (posible replanificación) | 2014-07-22 20:27 → 2014-07-17 17:27 (-5d) | 2014-07-23 17:27 → 2014-07-17 18:27 (-6d) |  |  |
| 146 | **Gestión de Configuración** | 2014-07-23 18:27 → 2014-07-17 19:27 (-6d) | 2014-07-23 19:27 → 2014-07-17 20:27 (-6d) |  |  |
| 147 | Versionado de todos los proyectos | 2014-07-23 18:27 → 2014-07-17 19:27 (-6d) | 2014-07-23 19:27 → 2014-07-17 20:27 (-6d) |  |  |
| 148 | Revisión de versionado de documentos modificados | 2014-07-23 18:27 → 2014-07-17 19:27 (-6d) | 2014-07-23 19:27 → 2014-07-17 20:27 (-6d) |  |  |
| 149 | **Iteración C6** | 2014-07-23 19:27 → 2014-07-17 20:27 (-6d) | 2014-08-27 18:27 → 2014-08-21 19:27 (-6d) |  |  |
| 150 | **Análisis/Diseño** | 2014-07-23 19:27 → 2014-07-17 20:27 (-6d) | 2014-07-29 19:27 → 2014-07-23 20:27 (-6d) |  |  |
| 151 | Revisión de Diagramas y Modelos de Análisis/Diseño | 2014-07-23 19:27 → 2014-07-17 20:27 (-6d) | 2014-07-29 19:27 → 2014-07-23 20:27 (-6d) |  |  |
| 152 | **Implementación** | 2014-07-29 19:27 → 2014-07-23 20:27 (-6d) | 2014-08-20 17:27 → 2014-08-14 18:27 (-6d) |  |  |
| 153 | Codificación de Calculos de tiempos de espera (FrontEnd) | 2014-07-29 19:27 → 2014-07-23 20:27 (-6d) | 2014-08-20 17:27 → 2014-08-14 18:27 (-6d) |  |  |
| 154 | Codificación de visualizador de Ordenes (BackEnd) | 2014-07-29 19:27 → 2014-07-23 20:27 (-6d) | 2014-08-19 19:27 → 2014-08-13 20:27 (-6d) |  |  |
| 155 | Codificación de personalización gráfica (Android) | 2014-07-29 19:27 → 2014-07-23 20:27 (-6d) | 2014-08-20 17:27 → 2014-08-14 18:27 (-6d) |  |  |
| 156 | **Pruebas** | 2014-08-20 17:27 → 2014-08-14 18:27 (-6d) | 2014-08-26 19:27 → 2014-08-20 20:27 (-6d) |  |  |
| 157 | Pruebas de comunicación de interfaces y pruebas de funcionalidad | 2014-08-20 17:27 → 2014-08-14 18:27 (-6d) | 2014-08-26 19:27 → 2014-08-20 20:27 (-6d) |  |  |
| 158 | **Gestión del Proyecto** | 2014-08-26 19:27 → 2014-08-20 20:27 (-6d) | 2014-08-26 20:27 → 2014-08-21 17:27 (-5d) |  |  |
| 159 | Actualización de Riesgos | 2014-08-26 19:27 → 2014-08-20 20:27 (-6d) | 2014-08-26 20:27 → 2014-08-21 17:27 (-5d) |  |  |
| 160 | Revisión de planificacion (posible replanificación) | 2014-08-26 19:27 → 2014-08-20 20:27 (-6d) | 2014-08-26 20:27 → 2014-08-21 17:27 (-5d) |  |  |
| 161 | **Gestión de Configuración** | 2014-08-26 20:27 → 2014-08-21 17:27 (-5d) | 2014-08-27 18:27 → 2014-08-21 19:27 (-6d) |  |  |
| 162 | Versionado de todos los proyectos | 2014-08-26 20:27 → 2014-08-21 17:27 (-5d) | 2014-08-27 18:27 → 2014-08-21 19:27 (-6d) |  |  |
| 163 | Revisión de versionado de documentos modificados | 2014-08-26 20:27 → 2014-08-21 17:27 (-5d) | 2014-08-27 18:27 → 2014-08-21 19:27 (-6d) |  |  |
| 164 | Capacidad Operacional Inicial | 2014-08-27 18:27 → 2014-08-21 19:27 (-6d) | 2014-08-27 18:27 → 2014-08-21 19:27 (-6d) |  |  |
| 165 | **TRANSICIÓN** | 2014-08-27 18:27 → 2014-08-21 19:27 (-6d) | 2014-10-02 17:27 → 2014-09-30 18:27 (-2d) |  |  |
| 166 | **Iteración T1** | 2014-08-27 18:27 → 2014-08-21 19:27 (-6d) | 2014-10-02 17:27 → 2014-09-30 18:27 (-2d) |  |  |
| 167 | **Implementación** | 2014-08-27 18:27 → 2014-08-21 19:27 (-6d) | 2014-09-09 18:27 → 2014-09-03 19:27 (-6d) |  |  |
| 168 | Elaboracion de documentación para usuarios y videos tutoriales | 2014-08-27 18:27 → 2014-08-21 19:27 (-6d) | 2014-09-09 18:27 → 2014-09-03 19:27 (-6d) |  |  |
| 169 | **Despliegue** | 2014-09-09 18:27 → 2014-09-03 19:27 (-6d) | 2014-09-23 18:27 → 2014-09-17 19:27 (-6d) |  |  |
| 170 | Modelo de despliegue | 2014-09-09 18:27 → 2014-09-03 19:27 (-6d) | 2014-09-11 20:27 → 2014-09-10 17:27 (-1d) |  |  |
| 171 | Integración y puesta a punto del sistema | 2014-09-11 20:27 → 2014-09-10 17:27 (-1d) | 2014-09-23 18:27 → 2014-09-17 19:27 (-6d) |  |  |
| 172 | **Gestión del Proyecto** | 2014-09-23 18:27 → 2014-09-17 19:27 (-6d) | 2014-10-01 19:27 → 2014-09-25 20:27 (-6d) |  |  |
| 173 | Actualización de Riesgos | 2014-09-23 18:27 → 2014-09-17 19:27 (-6d) | 2014-09-23 19:27 → 2014-09-17 20:27 (-6d) |  |  |
| 174 | Revisión de planificacion (posible replanificación) | 2014-09-23 19:27 → 2014-09-17 20:27 (-6d) | 2014-09-23 20:27 → 2014-09-18 17:27 (-5d) |  |  |
| 175 | Análisis de resultados del proyecto | 2014-09-23 20:27 → 2014-09-18 17:27 (-5d) | 2014-10-01 19:27 → 2014-09-25 20:27 (-6d) |  |  |
| 176 | **Gestión de Configuración** | 2014-10-01 19:27 → 2014-09-25 20:27 (-6d) | 2014-10-02 17:27 → 2014-09-30 18:27 (-2d) |  |  |
| 177 | Versionado de todos los proyectos | 2014-10-01 19:27 → 2014-09-25 20:27 (-6d) | 2014-10-02 17:27 → 2014-09-30 18:27 (-2d) |  |  |
| 178 | Revisión de versionado de documentos modificados | 2014-10-01 19:27 → 2014-09-25 20:27 (-6d) | 2014-10-02 17:27 → 2014-09-30 18:27 (-2d) |  |  |
| 179 | Lanzamiento de producto | 2014-10-02 17:27 → 2014-09-30 18:27 (-2d) | 2014-10-02 17:27 → 2014-09-30 18:27 (-2d) |  |  |
| 180 | Fin de Proyecto | 2014-10-02 17:27 → 2014-09-30 18:27 (-2d) | 2014-10-02 17:27 → 2014-09-30 18:27 (-2d) |  |  |
| 181 | **Informe de avance mensual** |  |  | 31% → 38% |  |
| 186 | Informe de avance mensual 5 | 2013-12-25 09:00 → 2014-02-27 09:00 A (+64d) | 2013-12-25 13:00 → 2014-02-27 13:00 A (+64d) | 0% → 100% | constraint start no earlier than 2013-12-25 09:00 → start no earlier than 2014-02-27 09:00 |

## Version 11 (data date 2013-07-29, saved 2014-03-12, file Informe6.mpp)

Note of the change: Creacion de todos los reportes

Last finish 2014-09-30 → 2014-09-11 (-19d). Complete tasks 43 → 61.

Changed:

| ID | Task | Start | Finish | Duration | Complete | Total float |
| --- | --- | --- | --- | --- | --- | --- |
| 1 | **RestApp** |  | 2014-09-30 18:27 → 2014-09-11 18:57 (-19d) | 70.68d → 67.24d | 25% → 31% |  |
| 25 | **ELABORACIÓN** |  | 2014-03-27 17:27 → 2014-03-13 20:57 A (-14d) | 19.69d → 17.12d | 78% → 100% | 0d → none |
| 65 | **Iteración E3** | 2014-02-27 17:27 A | 2014-03-27 17:27 → 2014-03-13 20:57 A (-14d) | 4.5d → 1.94d | 0% → 100% | 0d → none |
| 66 | **Requerimientos** | 2014-02-27 17:27 A | 2014-02-27 20:27 → 2014-02-27 18:27 A | 0.38d → 0.12d | 0% → 100% | 0d → none |
| 67 | Validacion de Mapeo de Requerimientos a Casos de Uso | 2014-02-27 17:27 A | 2014-02-27 20:27 → 2014-02-27 18:27 A | 3h → 1h | 0% → 100% | 0d → none |
| 68 | **Análisis/Diseño** | 2014-02-27 20:27 → 2014-02-27 18:27 A | 2014-03-20 18:27 → 2014-03-12 19:27 A (-8d) | 2.75d → 1.12d | 0% → 100% | 0d → none |
| 69 | Refinación de Diagrama de Casos de Uso | 2014-02-27 20:27 → 2014-02-27 18:27 A | 2014-03-12 18:27 → 2014-02-27 20:27 A (-13d) | 6h → 2h | 0% → 100% | 0d → none |
| 70 | Refinación de Diagrama de Clases | 2014-03-12 18:27 → 2014-02-27 20:27 A (-13d) | 2014-03-13 20:27 → 2014-03-11 19:27 A (-2d) | 6h → 3h | 0% → 100% | 0d → none |
| 71 | Refinación del Modelo de Datos | 2014-03-13 20:27 → 2014-03-11 19:27 A (-2d) | 2014-03-18 20:27 → 2014-03-12 17:27 A (-6d) | 4h → 2h | 0% → 100% | 0d → none |
| 72 | Descripción de casos de uso mas importantes | 2014-03-18 20:27 → 2014-03-12 17:27 A (-6d) | 2014-03-20 18:27 → 2014-03-12 19:27 A (-8d) | 6h → 2h | 0% → 100% | 0d → none |
| 73 | **Implementación** | 2014-03-20 18:27 → 2014-03-12 19:27 A (-8d) | 2014-03-26 18:27 → 2014-03-13 18:27 A (-13d) | 1d → 0.38d | 0% → 100% | 0d → none |
| 74 | Definición de interfaces de comunicación entre plataformas | 2014-03-20 18:27 → 2014-03-12 19:27 A (-8d) | 2014-03-26 18:27 → 2014-03-13 18:27 A (-13d) | 8h → 3h | 0% → 100% | 0d → none |
| 75 | **Gestión del Proyecto** | 2014-03-26 18:27 → 2014-03-13 18:27 A (-13d) | 2014-03-26 20:27 → 2014-03-13 20:27 A (-13d) |  | 0% → 100% | 0d → none |
| 76 | Actualización de planes de prevención y contigencia para nuevos Riesgos | 2014-03-26 18:27 → 2014-03-13 18:27 A (-13d) | 2014-03-26 20:27 → 2014-03-13 20:27 A (-13d) |  | 0% → 100% | 0d → none |
| 77 | **Gestión de Configuración** | 2014-03-26 20:27 → 2014-03-13 20:27 A (-13d) | 2014-03-27 17:27 → 2014-03-13 20:57 A (-14d) | 0.12d → 0.06d | 0% → 100% | 0d → none |
| 78 | Revisión de versionado de documentos modificados | 2014-03-26 20:27 → 2014-03-13 20:27 A (-13d) | 2014-03-27 17:27 → 2014-03-13 20:57 A (-14d) | 1h → 0.5h | 0% → 100% | 0d → none |
| 79 | Arquitectura del ciclo de vida | 2014-03-27 17:27 → 2014-03-13 20:57 A (-14d) | 2014-03-27 17:27 → 2014-03-13 20:57 A (-14d) |  | 0% → 100% | 0d → none |
| 80 | **CONSTRUCCIÓN** | 2014-03-27 17:27 → 2014-03-13 20:57 A (-14d) | 2014-08-21 19:27 → 2014-08-06 19:57 (-15d) | 31.75d → 30.88d | 0% → 4% |  |
| 81 | **Iteración C1** | 2014-03-27 17:27 → 2014-03-13 20:57 A (-14d) | 2014-04-15 17:27 → 2014-03-27 17:57 A (-19d) | 3.5d → 2.62d | 0% → 100% | 0d → none |
| 82 | **Análisis/Diseño** | 2014-03-27 17:27 → 2014-03-13 20:57 A (-14d) | 2014-04-02 17:27 → 2014-03-18 20:57 A (-15d) | 1d → 0.5d | 0% → 100% | 0d → none |
| 83 | Refinación de Diagramas de Actividad | 2014-03-27 17:27 → 2014-03-13 20:57 A (-14d) | 2014-04-01 17:27 → 2014-03-18 18:57 A (-14d) | 4h → 2h | 0% → 100% | 0d → none |
| 84 | Refinación de Diagramas de Secuencia | 2014-04-01 17:27 → 2014-03-18 18:57 A (-14d) | 2014-04-02 17:27 → 2014-03-18 20:57 A (-15d) | 4h → 2h | 0% → 100% | 0d → none |
| 85 | **Implementación** | 2014-04-02 17:27 → 2014-03-18 20:57 A (-15d) | 2014-04-09 20:27 → 2014-03-25 19:57 A (-15d) | 1.88d → 1.38d | 0% → 100% | 0d → none |
| 86 | Construcción de Base de Datos | 2014-04-02 17:27 → 2014-03-18 20:57 A (-15d) | 2014-04-08 17:27 → 2014-03-20 18:57 A (-19d) | 8h → 6h | 0% → 100% | 0d → none |
| 87 | Definición de Interfaz de Usuario | 2014-04-08 17:27 → 2014-03-20 18:57 A (-19d) | 2014-04-09 20:27 → 2014-03-25 19:57 A (-15d) | 7h → 5h | 0% → 100% | 0d → none |
| 88 | **Gestión del Proyecto** | 2014-04-09 20:27 → 2014-03-25 19:57 A (-15d) | 2014-04-10 20:27 → 2014-03-26 20:57 A (-15d) | 0.5d → 0.62d | 0% → 100% | 0d → none |
| 89 | Actualización de Riesgos | 2014-04-09 20:27 → 2014-03-25 19:57 A (-15d) | 2014-04-10 17:27 → 2014-03-25 20:57 A (-16d) |  | 0% → 100% | 0d → none |
| 90 | Revisión de planificacion (posible replanificación) | 2014-04-10 17:27 → 2014-03-25 20:57 A (-16d) | 2014-04-10 20:27 → 2014-03-26 20:57 A (-15d) | 3h → 4h | 0% → 100% | 0d → none |
| 91 | **Gestión de Configuración** | 2014-04-10 20:27 → 2014-03-26 20:57 A (-15d) | 2014-04-15 17:27 → 2014-03-27 17:57 A (-19d) |  | 0% → 100% | 0d → none |
| 92 | Versionado de prototipos | 2014-04-10 20:27 → 2014-03-26 20:57 A (-15d) | 2014-04-15 17:27 → 2014-03-27 17:57 A (-19d) |  | 0% → 100% | 0d → none |
| 93 | Revisión de versionado de documentos modificados | 2014-04-10 20:27 → 2014-03-26 20:57 A (-15d) | 2014-04-15 17:27 → 2014-03-27 17:57 A (-19d) |  | 0% → 100% | 0d → none |
| 94 | **Iteración C2** | 2014-04-15 17:27 → 2014-03-27 17:57 (-19d) | 2014-05-07 17:27 → 2014-04-22 17:57 (-15d) |  |  |  |
| 95 | **Análisis/Diseño** | 2014-04-15 17:27 → 2014-03-27 17:57 (-19d) | 2014-04-22 18:27 → 2014-04-03 18:57 (-19d) |  |  |  |
| 96 | Definición inicial del Modelo de componentes | 2014-04-15 17:27 → 2014-03-27 17:57 (-19d) | 2014-04-17 18:27 → 2014-04-02 18:57 (-15d) |  |  |  |
| 97 | Refinación de Diagramas de clases (agregado de operaciones) | 2014-04-17 18:27 → 2014-04-02 18:57 (-15d) | 2014-04-22 18:27 → 2014-04-03 18:57 (-19d) |  |  |  |
| 98 | **Implementación** | 2014-04-22 18:27 → 2014-04-03 18:57 (-19d) | 2014-05-01 17:27 → 2014-04-16 17:57 (-15d) |  |  |  |
| 99 | Codificación de Interfaz de usuario (FrontEnd) | 2014-04-22 18:27 → 2014-04-03 18:57 (-19d) | 2014-04-30 20:27 → 2014-04-15 20:57 (-15d) |  |  |  |
| 100 | Codificación de Interfaz de usuario (BackEnd) | 2014-04-22 18:27 → 2014-04-03 18:57 (-19d) | 2014-05-01 17:27 → 2014-04-16 17:57 (-15d) |  |  |  |
| 101 | Codificación de Interfaz de usuario (Android) | 2014-04-22 18:27 → 2014-04-03 18:57 (-19d) | 2014-05-01 17:27 → 2014-04-16 17:57 (-15d) |  |  |  |
| 102 | **Gestión del Proyecto** | 2014-05-01 17:27 → 2014-04-16 17:57 (-15d) | 2014-05-06 19:27 → 2014-04-17 19:57 (-19d) |  |  |  |
| 103 | Actualización de Riesgos | 2014-05-01 17:27 → 2014-04-16 17:57 (-15d) | 2014-05-01 20:27 → 2014-04-16 20:57 (-15d) |  |  |  |
| 104 | Revisión de planificacion (posible replanificación) | 2014-05-01 20:27 → 2014-04-16 20:57 (-15d) | 2014-05-06 19:27 → 2014-04-17 19:57 (-19d) |  |  |  |
| 105 | **Gestión de Configuración** | 2014-05-06 19:27 → 2014-04-17 19:57 (-19d) | 2014-05-07 17:27 → 2014-04-22 17:57 (-15d) |  |  |  |
| 106 | Versionado de interfaz de usuario | 2014-05-06 19:27 → 2014-04-17 19:57 (-19d) | 2014-05-06 20:27 → 2014-04-17 20:57 (-19d) |  |  |  |
| 107 | Revisión de versionado de documentos modificados | 2014-05-06 20:27 → 2014-04-17 20:57 (-19d) | 2014-05-07 17:27 → 2014-04-22 17:57 (-15d) |  |  |  |
| 108 | **Iteración C3** | 2014-05-07 17:27 → 2014-04-22 17:57 (-15d) | 2014-05-22 17:27 → 2014-05-07 17:57 (-15d) |  |  |  |
| 109 | **Análisis/Diseño** | 2014-05-07 17:27 → 2014-04-22 17:57 (-15d) | 2014-05-07 20:27 → 2014-04-22 20:57 (-15d) |  |  |  |
| 110 | Refinación del Modelo de componentes | 2014-05-07 17:27 → 2014-04-22 17:57 (-15d) | 2014-05-07 20:27 → 2014-04-22 20:57 (-15d) |  |  |  |
| 111 | **Implementación** | 2014-05-07 20:27 → 2014-04-22 20:57 (-15d) | 2014-05-21 17:27 → 2014-05-06 17:57 (-15d) |  |  |  |
| 112 | Codificacion de logeo de usuario (FrontEnd) | 2014-05-07 20:27 → 2014-04-22 20:57 (-15d) | 2014-05-21 17:27 → 2014-05-06 17:57 (-15d) |  |  |  |
| 113 | Codificación de seguridad [Roles y Usuario] (BackEnd) | 2014-05-07 20:27 → 2014-04-22 20:57 (-15d) | 2014-05-20 20:27 → 2014-05-01 20:57 (-19d) |  |  |  |
| 114 | Codificación de Local Storage (Android) | 2014-05-07 20:27 → 2014-04-22 20:57 (-15d) | 2014-05-20 20:27 → 2014-05-01 20:57 (-19d) |  |  |  |
| 115 | **Gestión del Proyecto** | 2014-05-21 17:27 → 2014-05-06 17:57 (-15d) | 2014-05-21 20:27 → 2014-05-06 20:57 (-15d) |  |  |  |
| 116 | Actualización de Riesgos | 2014-05-21 17:27 → 2014-05-06 17:57 (-15d) | 2014-05-21 20:27 → 2014-05-06 20:57 (-15d) |  |  |  |
| 117 | Revisión de planificacion (posible replanificación) | 2014-05-21 17:27 → 2014-05-06 17:57 (-15d) | 2014-05-21 20:27 → 2014-05-06 20:57 (-15d) |  |  |  |
| 118 | **Gestión de Configuración** | 2014-05-21 20:27 → 2014-05-06 20:57 (-15d) | 2014-05-22 17:27 → 2014-05-07 17:57 (-15d) |  |  |  |
| 119 | Versionado de todos los proyectos | 2014-05-21 20:27 → 2014-05-06 20:57 (-15d) | 2014-05-22 17:27 → 2014-05-07 17:57 (-15d) |  |  |  |
| 120 | Revisión de versionado de documentos modificados | 2014-05-21 20:27 → 2014-05-06 20:57 (-15d) | 2014-05-22 17:27 → 2014-05-07 17:57 (-15d) |  |  |  |
| 121 | **Iteración C4** | 2014-05-22 17:27 → 2014-05-07 17:57 (-15d) | 2014-06-11 20:27 → 2014-05-27 20:57 (-15d) |  |  |  |
| 122 | **Análisis/Diseño** | 2014-05-22 17:27 → 2014-05-07 17:57 (-15d) | 2014-05-27 17:27 → 2014-05-08 17:57 (-19d) |  |  |  |
| 123 | Refinación del Modelo de Datos | 2014-05-22 17:27 → 2014-05-07 17:57 (-15d) | 2014-05-27 17:27 → 2014-05-08 17:57 (-19d) |  |  |  |
| 124 | **Implementación** | 2014-05-27 17:27 → 2014-05-08 17:57 (-19d) | 2014-06-11 17:27 → 2014-05-27 17:57 (-15d) |  |  |  |
| 125 | Codificación de Gestión de reservas online (FrontEnd) | 2014-05-27 17:27 → 2014-05-08 17:57 (-19d) | 2014-06-11 17:27 → 2014-05-27 17:57 (-15d) |  |  |  |
| 126 | Codificación de ABM principales (BackEnd) | 2014-05-27 17:27 → 2014-05-08 17:57 (-19d) | 2014-06-10 19:27 → 2014-05-22 19:57 (-19d) |  |  |  |
| 127 | Codificación de ABM principales (Android) | 2014-05-27 17:27 → 2014-05-08 17:57 (-19d) | 2014-06-11 17:27 → 2014-05-27 17:57 (-15d) |  |  |  |
| 128 | **Gestión del Proyecto** | 2014-06-11 17:27 → 2014-05-27 17:57 (-15d) | 2014-06-11 19:27 → 2014-05-27 19:57 (-15d) |  |  |  |
| 129 | Actualización de Riesgos | 2014-06-11 17:27 → 2014-05-27 17:57 (-15d) | 2014-06-11 19:27 → 2014-05-27 19:57 (-15d) |  |  |  |
| 130 | Revisión de planificacion (posible replanificación) | 2014-06-11 17:27 → 2014-05-27 17:57 (-15d) | 2014-06-11 18:27 → 2014-05-27 18:57 (-15d) |  |  |  |
| 131 | **Gestión de Configuración** | 2014-06-11 19:27 → 2014-05-27 19:57 (-15d) | 2014-06-11 20:27 → 2014-05-27 20:57 (-15d) |  |  |  |
| 132 | Versionado de todos los proyectos | 2014-06-11 19:27 → 2014-05-27 19:57 (-15d) | 2014-06-11 20:27 → 2014-05-27 20:57 (-15d) |  |  |  |

| ID | Task | Start | Finish | Complete | Other |
| --- | --- | --- | --- | --- | --- |
| 133 | Revisión de versionado de documentos modificados | 2014-06-11 19:27 → 2014-05-27 19:57 (-15d) | 2014-06-11 20:27 → 2014-05-27 20:57 (-15d) |  |  |
| 134 | **Iteración C5** | 2014-06-11 20:27 → 2014-05-27 20:57 (-15d) | 2014-07-17 20:27 → 2014-07-02 20:57 (-15d) |  |  |
| 135 | **Análisis/Diseño** | 2014-06-11 20:27 → 2014-05-27 20:57 (-15d) | 2014-06-17 18:27 → 2014-05-29 18:57 (-19d) |  |  |
| 136 | Revisión de Diagramas y Modelos de Análisis/Diseño | 2014-06-11 20:27 → 2014-05-27 20:57 (-15d) | 2014-06-17 18:27 → 2014-05-29 18:57 (-19d) |  |  |
| 137 | **Implementación** | 2014-06-17 18:27 → 2014-05-29 18:57 (-19d) | 2014-07-10 19:27 → 2014-06-25 19:57 (-15d) |  |  |
| 138 | Codificación de Calculos de tiempos de espera (FrontEnd) | 2014-06-17 18:27 → 2014-05-29 18:57 (-19d) | 2014-07-10 17:27 → 2014-06-25 17:57 (-15d) |  |  |
| 139 | Codificación de Funciones básicas (BackEnd) | 2014-06-17 18:27 → 2014-05-29 18:57 (-19d) | 2014-07-10 17:27 → 2014-06-25 17:57 (-15d) |  |  |
| 140 | Codificación de visualizador de ordenes (Android) | 2014-06-17 18:27 → 2014-05-29 18:57 (-19d) | 2014-07-10 19:27 → 2014-06-25 19:57 (-15d) |  |  |
| 141 | **Pruebas** | 2014-07-10 19:27 → 2014-06-25 19:57 (-15d) | 2014-07-17 17:27 → 2014-07-02 17:57 (-15d) |  |  |
| 142 | Pruebas de Funcionalidad (para las 3 aplicaciones) | 2014-07-10 19:27 → 2014-06-25 19:57 (-15d) | 2014-07-17 17:27 → 2014-07-02 17:57 (-15d) |  |  |
| 143 | **Gestión del Proyecto** | 2014-07-17 17:27 → 2014-07-02 17:57 (-15d) | 2014-07-17 19:27 → 2014-07-02 19:57 (-15d) |  |  |
| 144 | Actualización de Riesgos | 2014-07-17 17:27 → 2014-07-02 17:57 (-15d) | 2014-07-17 19:27 → 2014-07-02 19:57 (-15d) |  |  |
| 145 | Revisión de planificacion (posible replanificación) | 2014-07-17 17:27 → 2014-07-02 17:57 (-15d) | 2014-07-17 18:27 → 2014-07-02 18:57 (-15d) |  |  |
| 146 | **Gestión de Configuración** | 2014-07-17 19:27 → 2014-07-02 19:57 (-15d) | 2014-07-17 20:27 → 2014-07-02 20:57 (-15d) |  |  |
| 147 | Versionado de todos los proyectos | 2014-07-17 19:27 → 2014-07-02 19:57 (-15d) | 2014-07-17 20:27 → 2014-07-02 20:57 (-15d) |  |  |
| 148 | Revisión de versionado de documentos modificados | 2014-07-17 19:27 → 2014-07-02 19:57 (-15d) | 2014-07-17 20:27 → 2014-07-02 20:57 (-15d) |  |  |
| 149 | **Iteración C6** | 2014-07-17 20:27 → 2014-07-02 20:57 (-15d) | 2014-08-21 19:27 → 2014-08-06 19:57 (-15d) |  |  |
| 150 | **Análisis/Diseño** | 2014-07-17 20:27 → 2014-07-02 20:57 (-15d) | 2014-07-23 20:27 → 2014-07-08 20:57 (-15d) |  |  |
| 151 | Revisión de Diagramas y Modelos de Análisis/Diseño | 2014-07-17 20:27 → 2014-07-02 20:57 (-15d) | 2014-07-23 20:27 → 2014-07-08 20:57 (-15d) |  |  |
| 152 | **Implementación** | 2014-07-23 20:27 → 2014-07-08 20:57 (-15d) | 2014-08-14 18:27 → 2014-07-30 18:57 (-15d) |  |  |
| 153 | Codificación de Calculos de tiempos de espera (FrontEnd) | 2014-07-23 20:27 → 2014-07-08 20:57 (-15d) | 2014-08-14 18:27 → 2014-07-30 18:57 (-15d) |  |  |
| 154 | Codificación de visualizador de Ordenes (BackEnd) | 2014-07-23 20:27 → 2014-07-08 20:57 (-15d) | 2014-08-13 20:27 → 2014-07-29 20:57 (-15d) |  |  |
| 155 | Codificación de personalización gráfica (Android) | 2014-07-23 20:27 → 2014-07-08 20:57 (-15d) | 2014-08-14 18:27 → 2014-07-30 18:57 (-15d) |  |  |
| 156 | **Pruebas** | 2014-08-14 18:27 → 2014-07-30 18:57 (-15d) | 2014-08-20 20:27 → 2014-08-05 20:57 (-15d) |  |  |
| 157 | Pruebas de comunicación de interfaces y pruebas de funcionalidad | 2014-08-14 18:27 → 2014-07-30 18:57 (-15d) | 2014-08-20 20:27 → 2014-08-05 20:57 (-15d) |  |  |
| 158 | **Gestión del Proyecto** | 2014-08-20 20:27 → 2014-08-05 20:57 (-15d) | 2014-08-21 17:27 → 2014-08-06 17:57 (-15d) |  |  |
| 159 | Actualización de Riesgos | 2014-08-20 20:27 → 2014-08-05 20:57 (-15d) | 2014-08-21 17:27 → 2014-08-06 17:57 (-15d) |  |  |
| 160 | Revisión de planificacion (posible replanificación) | 2014-08-20 20:27 → 2014-08-05 20:57 (-15d) | 2014-08-21 17:27 → 2014-08-06 17:57 (-15d) |  |  |
| 161 | **Gestión de Configuración** | 2014-08-21 17:27 → 2014-08-06 17:57 (-15d) | 2014-08-21 19:27 → 2014-08-06 19:57 (-15d) |  |  |
| 162 | Versionado de todos los proyectos | 2014-08-21 17:27 → 2014-08-06 17:57 (-15d) | 2014-08-21 19:27 → 2014-08-06 19:57 (-15d) |  |  |
| 163 | Revisión de versionado de documentos modificados | 2014-08-21 17:27 → 2014-08-06 17:57 (-15d) | 2014-08-21 19:27 → 2014-08-06 19:57 (-15d) |  |  |
| 164 | Capacidad Operacional Inicial | 2014-08-21 19:27 → 2014-08-06 19:57 (-15d) | 2014-08-21 19:27 → 2014-08-06 19:57 (-15d) |  |  |
| 165 | **TRANSICIÓN** | 2014-08-21 19:27 → 2014-08-06 19:57 (-15d) | 2014-09-30 18:27 → 2014-09-11 18:57 (-19d) |  |  |
| 166 | **Iteración T1** | 2014-08-21 19:27 → 2014-08-06 19:57 (-15d) | 2014-09-30 18:27 → 2014-09-11 18:57 (-19d) |  |  |
| 167 | **Implementación** | 2014-08-21 19:27 → 2014-08-06 19:57 (-15d) | 2014-09-03 19:27 → 2014-08-19 19:57 (-15d) |  |  |
| 168 | Elaboracion de documentación para usuarios y videos tutoriales | 2014-08-21 19:27 → 2014-08-06 19:57 (-15d) | 2014-09-03 19:27 → 2014-08-19 19:57 (-15d) |  |  |
| 169 | **Despliegue** | 2014-09-03 19:27 → 2014-08-19 19:57 (-15d) | 2014-09-17 19:27 → 2014-09-02 19:57 (-15d) |  |  |
| 170 | Modelo de despliegue | 2014-09-03 19:27 → 2014-08-19 19:57 (-15d) | 2014-09-10 17:27 → 2014-08-26 17:57 (-15d) |  |  |
| 171 | Integración y puesta a punto del sistema | 2014-09-10 17:27 → 2014-08-26 17:57 (-15d) | 2014-09-17 19:27 → 2014-09-02 19:57 (-15d) |  |  |
| 172 | **Gestión del Proyecto** | 2014-09-17 19:27 → 2014-09-02 19:57 (-15d) | 2014-09-25 20:27 → 2014-09-10 20:57 (-15d) |  |  |
| 173 | Actualización de Riesgos | 2014-09-17 19:27 → 2014-09-02 19:57 (-15d) | 2014-09-17 20:27 → 2014-09-02 20:57 (-15d) |  |  |
| 174 | Revisión de planificacion (posible replanificación) | 2014-09-17 20:27 → 2014-09-02 20:57 (-15d) | 2014-09-18 17:27 → 2014-09-03 17:57 (-15d) |  |  |
| 175 | Análisis de resultados del proyecto | 2014-09-18 17:27 → 2014-09-03 17:57 (-15d) | 2014-09-25 20:27 → 2014-09-10 20:57 (-15d) |  |  |
| 176 | **Gestión de Configuración** | 2014-09-25 20:27 → 2014-09-10 20:57 (-15d) | 2014-09-30 18:27 → 2014-09-11 18:57 (-19d) |  |  |
| 177 | Versionado de todos los proyectos | 2014-09-25 20:27 → 2014-09-10 20:57 (-15d) | 2014-09-30 18:27 → 2014-09-11 18:57 (-19d) |  |  |
| 178 | Revisión de versionado de documentos modificados | 2014-09-25 20:27 → 2014-09-10 20:57 (-15d) | 2014-09-30 18:27 → 2014-09-11 18:57 (-19d) |  |  |
| 179 | Lanzamiento de producto | 2014-09-30 18:27 → 2014-09-11 18:57 (-19d) | 2014-09-30 18:27 → 2014-09-11 18:57 (-19d) |  |  |
| 180 | Fin de Proyecto | 2014-09-30 18:27 → 2014-09-11 18:57 (-19d) | 2014-09-30 18:27 → 2014-09-11 18:57 (-19d) |  |  |
| 181 | **Informe de avance mensual** |  |  | 38% → 46% |  |
| 187 | Informe de avance mensual 6 | 2014-01-29 09:00 → 2014-03-27 09:00 A (+57d) | 2014-01-29 13:00 → 2014-03-27 13:00 A (+57d) | 0% → 100% | constraint start no earlier than 2014-01-29 09:00 → start no earlier than 2014-03-27 09:00 |

## Version 12 (data date 2013-08-28, saved 2014-03-13, file Informe1.mpp)

Note of the change: Template de informe al 50%

Last finish 2014-09-11 → 2014-09-18 (+7d). Complete tasks 61 → 10.

Changed:

| ID | Task | Start | Finish | Duration | Complete | Total float |
| --- | --- | --- | --- | --- | --- | --- |
| 1 | **RestApp** |  | 2014-09-11 18:57 → 2014-09-18 20:57 (+7d) | 67.24d → 68.99d | 31% → 6% |  |
| 2 | **INICIO** |  | 2013-10-01 19:57 A → 2013-09-25 19:57 (-6d) | 11.37d → 10.37d | 100% → 61% | none → 0d |
| 3 | **Iteración I1** |  | 2013-10-01 19:57 A → 2013-09-25 19:57 (-6d) | 11.37d → 10.37d | 100% → 61% | none → 0d |
| 14 | **Gestión del Proyecto** |  | 2013-09-24 17:57 A → 2013-09-18 19:57 (-6d) | 6.12d → 5.38d | 100% → 53% | none → 0d |
| 17 | Gestión de riesgos (definición) | 2013-08-29 19:57 A → 2013-08-29 19:57 | 2013-09-05 17:57 A → 2013-09-04 19:57 (-1d) | 10h → 8h | 100% → 0% | none → 0d |
| 18 | Gestión de configuración (definición) | 2013-09-05 17:57 A → 2013-09-04 19:57 (-1d) | 2013-09-18 19:57 A → 2013-09-17 19:57 (-1d) | 10h → 8h | 100% → 0% | none → 0d |
| 19 | Presentación Inicial | 2013-09-18 19:57 A → 2013-09-17 19:57 (-1d) | 2013-09-24 17:57 A → 2013-09-18 19:57 (-6d) | 6h → 0.5d | 100% → 0% | none → 0d |
| 20 | **Gestión de configuración** | 2013-09-24 17:57 A → 2013-09-18 19:57 (-6d) | 2013-09-26 19:57 A → 2013-09-24 19:57 (-2d) | 1.25d → 1d | 100% → 0% | none → 0d |
| 21 | Preparación del ambiente de versionado | 2013-09-24 17:57 A → 2013-09-18 19:57 (-6d) | 2013-09-26 19:57 A → 2013-09-24 19:57 (-2d) | 10h → 8h | 100% → 0% | none → 0d |
| 22 | **Ambiente** | 2013-09-26 19:57 A → 2013-09-24 19:57 (-2d) | 2013-10-01 19:57 A → 2013-09-25 19:57 (-6d) |  | 100% → 0% | none → 0d |
| 23 | Identificación y evaluación de herramientas | 2013-09-26 19:57 A → 2013-09-24 19:57 (-2d) | 2013-10-01 19:57 A → 2013-09-25 19:57 (-6d) |  | 100% → 0% | none → 0d |
| 24 | Objetivos del ciclo de vida | 2013-10-01 19:57 A → 2013-09-25 19:57 (-6d) | 2013-10-01 19:57 A → 2013-09-25 19:57 (-6d) |  | 100% → 0% | none → 0d |
| 25 | **ELABORACIÓN** | 2013-10-01 19:57 A → 2013-09-25 19:57 (-6d) | 2014-03-13 20:57 A → 2014-03-19 19:57 (+6d) | 17.12d → 19d | 100% → 0% | none → 0d |
| 26 | **Iteración E1** | 2013-10-01 19:57 A → 2013-09-25 19:57 (-6d) | 2013-11-14 17:27 A → 2013-11-05 20:57 (-9d) | 8.19d → 7.12d | 100% → 0% | none → 0d |
| 27 | **Modelo de Negocio** | 2013-10-01 19:57 A → 2013-09-25 19:57 (-6d) | 2013-10-03 19:57 A → 2013-10-01 18:57 (-2d) | 1d → 0.88d | 100% → 0% | none → 0d |
| 28 | Entendimiento del Modelo de Negocio | 2013-10-01 19:57 A → 2013-09-25 19:57 (-6d) | 2013-10-03 19:57 A → 2013-10-01 18:57 (-2d) | 8h → 7h | 100% → 0% | none → 0d |
| 29 | **Requerimientos** | 2013-10-03 19:57 A → 2013-10-01 18:57 (-2d) | 2013-10-15 19:57 A → 2013-10-08 18:57 (-7d) | 2d → 1.5d | 100% → 0% | none → 0d |
| 30 | Definicón de nuevos requerimientos | 2013-10-03 19:57 A → 2013-10-01 18:57 (-2d) | 2013-10-08 18:57 A → 2013-10-01 20:57 (-7d) | 3h → 2h | 100% → 0% | none → 0d |
| 31 | Documentación de requerimientos según estandar | 2013-10-08 18:57 A → 2013-10-01 20:57 (-7d) | 2013-10-10 18:57 A → 2013-10-03 17:57 (-7d) | 8h → 5h | 100% → 0% | none → 0d |
| 32 | Jerarquización de requerimientos | 2013-10-10 18:57 A → 2013-10-03 17:57 (-7d) | 2013-10-15 19:57 A → 2013-10-08 18:57 (-7d) |  | 100% → 0% | none → 0d |
| 33 | **Análisis/Diseño** | 2013-10-15 19:57 A → 2013-10-08 18:57 (-7d) | 2013-10-30 18:27 A → 2013-10-15 18:57 (-15d) | 1.81d → 1.5d | 100% → 0% | none → 0d |
| 34 | Refinación de Modelo de Casos de Usos | 2013-10-15 19:57 A → 2013-10-08 18:57 (-7d) | 2013-10-16 18:57 A → 2013-10-08 20:57 (-8d) | 3h → 2h | 100% → 0% | none → 0d |
| 35 | Definición preliminar de Diagrama de clases | 2013-10-16 18:57 A → 2013-10-08 20:57 (-8d) | 2013-10-30 18:27 A → 2013-10-15 18:57 (-15d) | 11.5h → 10h | 100% → 0% | none → 0d |
| 36 | **Implementación** | 2013-10-30 18:27 A → 2013-10-15 18:57 (-15d) | 2013-11-12 20:27 A → 2013-10-31 18:57 (-12d) | 2.75d → 2.5d | 100% → 0% | none → 0d |
| 37 | Desarrollo prototipos independientes de prueba | 2013-10-30 18:27 A → 2013-10-15 18:57 (-15d) | 2013-11-12 20:27 A → 2013-10-31 18:57 (-12d) | 22h → 20h | 100% → 0% | none → 0d |
| 38 | **Gestión del Proyecto** | 2013-11-12 20:27 A → 2013-10-31 18:57 (-12d) | 2013-11-13 18:57 A → 2013-10-31 20:57 (-13d) | 0.31d → 0.25d | 100% → 0% | none → 0d |
| 39 | Actualización y priorización de Riesgos | 2013-11-12 20:27 A → 2013-10-31 18:57 (-12d) | 2013-11-12 20:57 A → 2013-10-31 19:57 (-12d) | 0.5h → 1h | 100% → 0% | none → 0d |
| 40 | Refinación del Plan de Proyecto | 2013-11-12 20:57 A → 2013-10-31 19:57 (-12d) | 2013-11-13 18:57 A → 2013-10-31 20:57 (-13d) | 2h → 1h | 100% → 0% | none → 0d |
| 41 | **Gestión de Configuración** | 2013-11-13 18:57 A → 2013-10-31 20:57 (-13d) | 2013-11-13 19:27 A → 2013-11-05 17:57 (-8d) | 0.06d → 0.12d | 100% → 0% | none → 0d |
| 42 | Revisión de versionado de documentos modificados | 2013-11-13 18:57 A → 2013-10-31 20:57 (-13d) | 2013-11-13 19:27 A → 2013-11-05 17:57 (-8d) | 0.5h → 1h | 100% → 0% | none → 0d |
| 43 | **Ambiente** | 2013-11-13 19:27 A → 2013-11-05 17:57 (-8d) | 2013-11-14 17:27 A → 2013-11-05 20:57 (-9d) | 0.25d → 0.38d | 100% → 0% | none → 0d |
| 44 | Identificación de Tecnología | 2013-11-13 19:27 A → 2013-11-05 17:57 (-8d) | 2013-11-14 17:27 A → 2013-11-05 20:57 (-9d) | 2h → 3h | 100% → 0% | none → 0d |
| 45 | **Iteración E2** | 2013-11-14 17:27 A → 2013-11-05 20:57 (-9d) | 2014-02-27 17:27 A → 2014-02-04 19:57 (-23d) | 7d → 7.38d | 100% → 0% | none → 0d |
| 46 | **Modelo de Negocio** | 2013-11-14 17:27 A → 2013-11-05 20:57 (-9d) | 2013-11-19 18:27 A → 2013-11-07 17:57 (-12d) |  | 100% → 0% | none → 0d |
| 47 | Refinación del Modelo de Negocio | 2013-11-14 17:27 A → 2013-11-05 20:57 (-9d) | 2013-11-19 18:27 A → 2013-11-07 17:57 (-12d) |  | 100% → 0% | none → 0d |
| 48 | **Requerimientos** | 2013-11-19 18:27 A → 2013-11-07 17:57 (-12d) | 2013-11-20 17:27 A → 2013-11-12 17:57 (-8d) | 0.38d → 0.5d | 100% → 0% | none → 0d |
| 49 | Validación de requerimientos | 2013-11-19 18:27 A → 2013-11-07 17:57 (-12d) | 2013-11-20 17:27 A → 2013-11-07 20:57 (-13d) |  | 100% → 0% | none → 0.12d |
| 50 | Mapeo de Requerimientos a Casos de Uso | 2013-11-19 18:27 A → 2013-11-07 17:57 (-12d) | 2013-11-19 20:27 A → 2013-11-12 17:57 (-7d) | 2h → 4h | 100% → 0% | none → 0d |
| 51 | **Análisis/Diseño** | 2013-11-20 17:27 A → 2013-11-12 17:57 (-8d) | 2014-02-05 19:27 A → 2013-12-10 17:57 (-57d) | 4.75d → 4.5d | 100% → 0% | none → 0d |
| 52 | Definición Inicial de diagrama de Clases | 2013-11-20 17:27 A → 2013-11-12 17:57 (-8d) | 2013-11-26 20:27 A → 2013-11-14 19:57 (-12d) | 11h → 10h | 100% → 0% | none → 0d |
| 53 | Definición inicial del Modelo de Datos | 2013-11-26 20:27 A → 2013-11-14 19:57 (-12d) | 2013-12-10 17:27 A → 2013-11-20 19:57 (-20d) | 9h → 8h | 100% → 0% | none → 0d |
| 54 | Definición inicial de Diagrama de Actividades | 2013-12-10 17:27 A → 2013-11-20 19:57 (-20d) | 2013-12-12 20:27 A → 2013-11-26 19:57 (-16d) | 11h → 8h | 100% → 0% | none → 0d |
| 55 | Definición inicial de Diagramas de Secuencia | 2013-12-12 20:27 A → 2013-11-26 19:57 (-16d) | 2014-02-05 19:27 A → 2013-12-10 17:57 (-57d) | 7h → 10h | 100% → 0% | none → 0d |
| 56 | **Implementación** | 2014-02-05 19:27 A → 2013-12-10 17:57 (-57d) | 2014-02-06 19:27 A → 2013-12-11 19:57 (-57d) | 0.5d → 0.75d | 100% → 0% | none → 0d |
| 57 | Mejoramientos de prototipos | 2014-02-05 19:27 A → 2013-12-10 17:57 (-57d) | 2014-02-06 19:27 A → 2013-12-11 19:57 (-57d) | 4h → 6h | 100% → 0% | none → 0d |
| 58 | **Gestión del Proyecto** | 2014-02-06 19:27 A → 2013-12-11 19:57 (-57d) | 2014-02-06 20:27 A → 2013-12-12 17:57 (-56d) | 0.12d → 0.25d | 100% → 0% | none → 0d |
| 59 | Validación del Plan de proyecto | 2014-02-06 19:27 A → 2013-12-11 19:57 (-57d) | 2014-02-06 20:27 A → 2013-12-12 17:57 (-56d) | 1h → 2h | 100% → 0% | none → 0d |
| 60 | **Gestión de Configuración** | 2014-02-06 20:27 A → 2013-12-12 17:57 (-56d) | 2014-02-26 17:27 A → 2013-12-12 18:57 (-76d) |  | 100% → 0% | none → 0d |
| 61 | Versionado de los prototipos | 2014-02-06 20:27 A → 2013-12-12 17:57 (-56d) | 2014-02-26 17:27 A → 2013-12-12 18:57 (-76d) |  | 100% → 0% | none → 0d |
| 62 | Revisión de versionado de documentos modificados | 2014-02-06 20:27 A → 2013-12-12 17:57 (-56d) | 2014-02-06 20:57 A → 2013-12-12 18:57 (-56d) | 0.5h → 1h | 100% → 0% | none → 0d |
| 63 | **Ambiente** | 2014-02-26 17:27 A → 2013-12-12 18:57 (-76d) | 2014-02-27 17:27 A → 2014-02-04 19:57 (-23d) | 0.5d → 0.62d | 100% → 0% | none → 0d |
| 64 | Preparación del ambiente de desarrollo | 2014-02-26 17:27 A → 2013-12-12 18:57 (-76d) | 2014-02-27 17:27 A → 2014-02-04 19:57 (-23d) | 4h → 5h | 100% → 0% | none → 0d |
| 65 | **Iteración E3** | 2014-02-27 17:27 A → 2014-02-04 19:57 (-23d) | 2014-03-13 20:57 A → 2014-03-19 19:57 (+6d) | 1.94d → 4.5d | 100% → 0% | none → 0d |
| 66 | **Requerimientos** | 2014-02-27 17:27 A → 2014-02-04 19:57 (-23d) | 2014-02-27 18:27 A → 2014-02-05 18:57 (-22d) | 0.12d → 0.38d | 100% → 0% | none → 0d |
| 67 | Validacion de Mapeo de Requerimientos a Casos de Uso | 2014-02-27 17:27 A → 2014-02-04 19:57 (-23d) | 2014-02-27 18:27 A → 2014-02-05 18:57 (-22d) | 1h → 3h | 100% → 0% | none → 0d |
| 68 | **Análisis/Diseño** | 2014-02-27 18:27 A → 2014-02-05 18:57 (-22d) | 2014-03-12 19:27 A → 2014-03-12 20:57 | 1.12d → 2.75d | 100% → 0% | none → 0d |
| 69 | Refinación de Diagrama de Casos de Uso | 2014-02-27 18:27 A → 2014-02-05 18:57 (-22d) | 2014-02-27 20:27 A → 2014-02-06 20:57 (-21d) | 2h → 6h | 100% → 0% | none → 0d |
| 70 | Refinación de Diagrama de Clases | 2014-02-27 20:27 A → 2014-02-06 20:57 (-21d) | 2014-03-11 19:27 A → 2014-02-27 18:57 (-12d) | 3h → 6h | 100% → 0% | none → 0d |
| 71 | Refinación del Modelo de Datos | 2014-03-11 19:27 A → 2014-02-27 18:57 (-12d) | 2014-03-12 17:27 A → 2014-03-11 18:57 (-1d) | 2h → 4h | 100% → 0% | none → 0d |
| 72 | Descripción de casos de uso mas importantes | 2014-03-12 17:27 A → 2014-03-11 18:57 (-1d) | 2014-03-12 19:27 A → 2014-03-12 20:57 | 2h → 6h | 100% → 0% | none → 0d |
| 73 | **Implementación** | 2014-03-12 19:27 A → 2014-03-12 20:57 | 2014-03-13 18:27 A → 2014-03-18 20:57 (+5d) | 0.38d → 1d | 100% → 0% | none → 0d |
| 74 | Definición de interfaces de comunicación entre plataformas | 2014-03-12 19:27 A → 2014-03-12 20:57 | 2014-03-13 18:27 A → 2014-03-18 20:57 (+5d) | 3h → 8h | 100% → 0% | none → 0d |
| 75 | **Gestión del Proyecto** | 2014-03-13 18:27 A → 2014-03-18 20:57 (+5d) | 2014-03-13 20:27 A → 2014-03-19 18:57 (+6d) |  | 100% → 0% | none → 0d |
| 76 | Actualización de planes de prevención y contigencia para nuevos Riesgos | 2014-03-13 18:27 A → 2014-03-18 20:57 (+5d) | 2014-03-13 20:27 A → 2014-03-19 18:57 (+6d) |  | 100% → 0% | none → 0d |
| 77 | **Gestión de Configuración** | 2014-03-13 20:27 A → 2014-03-19 18:57 (+6d) | 2014-03-13 20:57 A → 2014-03-19 19:57 (+6d) | 0.06d → 0.12d | 100% → 0% | none → 0d |
| 78 | Revisión de versionado de documentos modificados | 2014-03-13 20:27 A → 2014-03-19 18:57 (+6d) | 2014-03-13 20:57 A → 2014-03-19 19:57 (+6d) | 0.5h → 1h | 100% → 0% | none → 0d |
| 79 | Arquitectura del ciclo de vida | 2014-03-13 20:57 A → 2014-03-19 19:57 (+6d) | 2014-03-13 20:57 A → 2014-03-19 19:57 (+6d) |  | 100% → 0% | none → 0d |
| 80 | **CONSTRUCCIÓN** | 2014-03-13 20:57 A → 2014-03-19 19:57 (+6d) | 2014-08-06 19:57 → 2014-08-14 17:57 (+8d) | 30.88d → 31.75d | 4% → 0% |  |
| 81 | **Iteración C1** | 2014-03-13 20:57 A → 2014-03-19 19:57 (+6d) | 2014-03-27 17:57 A → 2014-04-03 19:57 (+7d) | 2.62d → 3.5d | 100% → 0% | none → 0d |
| 82 | **Análisis/Diseño** | 2014-03-13 20:57 A → 2014-03-19 19:57 (+6d) | 2014-03-18 20:57 A → 2014-03-25 19:57 (+7d) | 0.5d → 1d | 100% → 0% | none → 0d |

| ID | Task | Start | Finish | Duration | Complete | Total float |
| --- | --- | --- | --- | --- | --- | --- |
| 83 | Refinación de Diagramas de Actividad | 2014-03-13 20:57 A → 2014-03-19 19:57 (+6d) | 2014-03-18 18:57 A → 2014-03-20 19:57 (+2d) | 2h → 4h | 100% → 0% | none → 0d |
| 84 | Refinación de Diagramas de Secuencia | 2014-03-18 18:57 A → 2014-03-20 19:57 (+2d) | 2014-03-18 20:57 A → 2014-03-25 19:57 (+7d) | 2h → 4h | 100% → 0% | none → 0d |
| 85 | **Implementación** | 2014-03-18 20:57 A → 2014-03-25 19:57 (+7d) | 2014-03-25 19:57 A → 2014-04-02 18:57 (+8d) | 1.38d → 1.88d | 100% → 0% | none → 0d |
| 86 | Construcción de Base de Datos | 2014-03-18 20:57 A → 2014-03-25 19:57 (+7d) | 2014-03-20 18:57 A → 2014-03-27 19:57 (+7d) | 6h → 8h | 100% → 0% | none → 0d |
| 87 | Definición de Interfaz de Usuario | 2014-03-20 18:57 A → 2014-03-27 19:57 (+7d) | 2014-03-25 19:57 A → 2014-04-02 18:57 (+8d) | 5h → 7h | 100% → 0% | none → 0d |
| 88 | **Gestión del Proyecto** | 2014-03-25 19:57 A → 2014-04-02 18:57 (+8d) | 2014-03-26 20:57 A → 2014-04-03 18:57 (+8d) | 0.62d → 0.5d | 100% → 0% | none → 0d |
| 89 | Actualización de Riesgos | 2014-03-25 19:57 A → 2014-04-02 18:57 (+8d) | 2014-03-25 20:57 A → 2014-04-02 19:57 (+8d) |  | 100% → 0% | none → 0d |
| 90 | Revisión de planificacion (posible replanificación) | 2014-03-25 20:57 A → 2014-04-02 19:57 (+8d) | 2014-03-26 20:57 A → 2014-04-03 18:57 (+8d) | 4h → 3h | 100% → 0% | none → 0d |
| 91 | **Gestión de Configuración** | 2014-03-26 20:57 A → 2014-04-03 18:57 (+8d) | 2014-03-27 17:57 A → 2014-04-03 19:57 (+7d) |  | 100% → 0% | none → 0d |
| 92 | Versionado de prototipos | 2014-03-26 20:57 A → 2014-04-03 18:57 (+8d) | 2014-03-27 17:57 A → 2014-04-03 19:57 (+7d) |  | 100% → 0% | none → 0d |
| 93 | Revisión de versionado de documentos modificados | 2014-03-26 20:57 A → 2014-04-03 18:57 (+8d) | 2014-03-27 17:57 A → 2014-04-03 19:57 (+7d) |  | 100% → 0% | none → 0d |
| 94 | **Iteración C2** | 2014-03-27 17:57 → 2014-04-03 19:57 (+7d) | 2014-04-22 17:57 → 2014-04-29 19:57 (+7d) |  |  |  |
| 95 | **Análisis/Diseño** | 2014-03-27 17:57 → 2014-04-03 19:57 (+7d) | 2014-04-03 18:57 → 2014-04-10 20:57 (+7d) |  |  |  |
| 96 | Definición inicial del Modelo de componentes | 2014-03-27 17:57 → 2014-04-03 19:57 (+7d) | 2014-04-02 18:57 → 2014-04-09 20:57 (+7d) |  |  |  |
| 97 | Refinación de Diagramas de clases (agregado de operaciones) | 2014-04-02 18:57 → 2014-04-09 20:57 (+7d) | 2014-04-03 18:57 → 2014-04-10 20:57 (+7d) |  |  |  |
| 98 | **Implementación** | 2014-04-03 18:57 → 2014-04-10 20:57 (+7d) | 2014-04-16 17:57 → 2014-04-23 19:57 (+7d) |  |  |  |
| 99 | Codificación de Interfaz de usuario (FrontEnd) | 2014-04-03 18:57 → 2014-04-10 20:57 (+7d) | 2014-04-15 20:57 → 2014-04-23 18:57 (+8d) |  |  |  |
| 100 | Codificación de Interfaz de usuario (BackEnd) | 2014-04-03 18:57 → 2014-04-10 20:57 (+7d) | 2014-04-16 17:57 → 2014-04-23 19:57 (+7d) |  |  |  |
| 101 | Codificación de Interfaz de usuario (Android) | 2014-04-03 18:57 → 2014-04-10 20:57 (+7d) | 2014-04-16 17:57 → 2014-04-23 19:57 (+7d) |  |  |  |
| 102 | **Gestión del Proyecto** | 2014-04-16 17:57 → 2014-04-23 19:57 (+7d) | 2014-04-17 19:57 → 2014-04-29 17:57 (+12d) |  |  |  |
| 103 | Actualización de Riesgos | 2014-04-16 17:57 → 2014-04-23 19:57 (+7d) | 2014-04-16 20:57 → 2014-04-24 18:57 (+8d) |  |  |  |
| 104 | Revisión de planificacion (posible replanificación) | 2014-04-16 20:57 → 2014-04-24 18:57 (+8d) | 2014-04-17 19:57 → 2014-04-29 17:57 (+12d) |  |  |  |
| 105 | **Gestión de Configuración** | 2014-04-17 19:57 → 2014-04-29 17:57 (+12d) | 2014-04-22 17:57 → 2014-04-29 19:57 (+7d) |  |  |  |
| 106 | Versionado de interfaz de usuario | 2014-04-17 19:57 → 2014-04-29 17:57 (+12d) | 2014-04-17 20:57 → 2014-04-29 18:57 (+12d) |  |  |  |
| 107 | Revisión de versionado de documentos modificados | 2014-04-17 20:57 → 2014-04-29 18:57 (+12d) | 2014-04-22 17:57 → 2014-04-29 19:57 (+7d) |  |  |  |
| 108 | **Iteración C3** | 2014-04-22 17:57 → 2014-04-29 19:57 (+7d) | 2014-05-07 17:57 → 2014-05-14 19:57 (+7d) |  |  |  |
| 109 | **Análisis/Diseño** | 2014-04-22 17:57 → 2014-04-29 19:57 (+7d) | 2014-04-22 20:57 → 2014-04-30 18:57 (+8d) |  |  |  |
| 110 | Refinación del Modelo de componentes | 2014-04-22 17:57 → 2014-04-29 19:57 (+7d) | 2014-04-22 20:57 → 2014-04-30 18:57 (+8d) |  |  |  |
| 111 | **Implementación** | 2014-04-22 20:57 → 2014-04-30 18:57 (+8d) | 2014-05-06 17:57 → 2014-05-13 19:57 (+7d) |  |  |  |
| 112 | Codificacion de logeo de usuario (FrontEnd) | 2014-04-22 20:57 → 2014-04-30 18:57 (+8d) | 2014-05-06 17:57 → 2014-05-13 19:57 (+7d) |  |  |  |
| 113 | Codificación de seguridad [Roles y Usuario] (BackEnd) | 2014-04-22 20:57 → 2014-04-30 18:57 (+8d) | 2014-05-01 20:57 → 2014-05-13 18:57 (+12d) |  |  |  |
| 114 | Codificación de Local Storage (Android) | 2014-04-22 20:57 → 2014-04-30 18:57 (+8d) | 2014-05-01 20:57 → 2014-05-13 18:57 (+12d) |  |  |  |
| 115 | **Gestión del Proyecto** | 2014-05-06 17:57 → 2014-05-13 19:57 (+7d) | 2014-05-06 20:57 → 2014-05-14 18:57 (+8d) |  |  |  |
| 116 | Actualización de Riesgos | 2014-05-06 17:57 → 2014-05-13 19:57 (+7d) | 2014-05-06 20:57 → 2014-05-14 18:57 (+8d) |  |  |  |
| 117 | Revisión de planificacion (posible replanificación) | 2014-05-06 17:57 → 2014-05-13 19:57 (+7d) | 2014-05-06 20:57 → 2014-05-14 18:57 (+8d) |  |  |  |
| 118 | **Gestión de Configuración** | 2014-05-06 20:57 → 2014-05-14 18:57 (+8d) | 2014-05-07 17:57 → 2014-05-14 19:57 (+7d) |  |  |  |
| 119 | Versionado de todos los proyectos | 2014-05-06 20:57 → 2014-05-14 18:57 (+8d) | 2014-05-07 17:57 → 2014-05-14 19:57 (+7d) |  |  |  |
| 120 | Revisión de versionado de documentos modificados | 2014-05-06 20:57 → 2014-05-14 18:57 (+8d) | 2014-05-07 17:57 → 2014-05-14 19:57 (+7d) |  |  |  |
| 121 | **Iteración C4** | 2014-05-07 17:57 → 2014-05-14 19:57 (+7d) | 2014-05-27 20:57 → 2014-06-04 18:57 (+8d) |  |  |  |
| 122 | **Análisis/Diseño** | 2014-05-07 17:57 → 2014-05-14 19:57 (+7d) | 2014-05-08 17:57 → 2014-05-15 19:57 (+7d) |  |  |  |
| 123 | Refinación del Modelo de Datos | 2014-05-07 17:57 → 2014-05-14 19:57 (+7d) | 2014-05-08 17:57 → 2014-05-15 19:57 (+7d) |  |  |  |
| 124 | **Implementación** | 2014-05-08 17:57 → 2014-05-15 19:57 (+7d) | 2014-05-27 17:57 → 2014-06-03 19:57 (+7d) |  |  |  |
| 125 | Codificación de Gestión de reservas online (FrontEnd) | 2014-05-08 17:57 → 2014-05-15 19:57 (+7d) | 2014-05-27 17:57 → 2014-06-03 19:57 (+7d) |  |  |  |
| 126 | Codificación de ABM principales (BackEnd) | 2014-05-08 17:57 → 2014-05-15 19:57 (+7d) | 2014-05-22 19:57 → 2014-06-03 17:57 (+12d) |  |  |  |
| 127 | Codificación de ABM principales (Android) | 2014-05-08 17:57 → 2014-05-15 19:57 (+7d) | 2014-05-27 17:57 → 2014-06-03 19:57 (+7d) |  |  |  |
| 128 | **Gestión del Proyecto** | 2014-05-27 17:57 → 2014-06-03 19:57 (+7d) | 2014-05-27 19:57 → 2014-06-04 17:57 (+8d) |  |  |  |
| 129 | Actualización de Riesgos | 2014-05-27 17:57 → 2014-06-03 19:57 (+7d) | 2014-05-27 19:57 → 2014-06-04 17:57 (+8d) |  |  |  |
| 130 | Revisión de planificacion (posible replanificación) | 2014-05-27 17:57 → 2014-06-03 19:57 (+7d) | 2014-05-27 18:57 → 2014-06-03 20:57 (+7d) |  |  |  |
| 131 | **Gestión de Configuración** | 2014-05-27 19:57 → 2014-06-04 17:57 (+8d) | 2014-05-27 20:57 → 2014-06-04 18:57 (+8d) |  |  |  |
| 132 | Versionado de todos los proyectos | 2014-05-27 19:57 → 2014-06-04 17:57 (+8d) | 2014-05-27 20:57 → 2014-06-04 18:57 (+8d) |  |  |  |
| 133 | Revisión de versionado de documentos modificados | 2014-05-27 19:57 → 2014-06-04 17:57 (+8d) | 2014-05-27 20:57 → 2014-06-04 18:57 (+8d) |  |  |  |
| 134 | **Iteración C5** | 2014-05-27 20:57 → 2014-06-04 18:57 (+8d) | 2014-07-02 20:57 → 2014-07-10 18:57 (+8d) |  |  |  |
| 135 | **Análisis/Diseño** | 2014-05-27 20:57 → 2014-06-04 18:57 (+8d) | 2014-05-29 18:57 → 2014-06-05 20:57 (+7d) |  |  |  |
| 136 | Revisión de Diagramas y Modelos de Análisis/Diseño | 2014-05-27 20:57 → 2014-06-04 18:57 (+8d) | 2014-05-29 18:57 → 2014-06-05 20:57 (+7d) |  |  |  |
| 137 | **Implementación** | 2014-05-29 18:57 → 2014-06-05 20:57 (+7d) | 2014-06-25 19:57 → 2014-07-03 17:57 (+8d) |  |  |  |
| 138 | Codificación de Calculos de tiempos de espera (FrontEnd) | 2014-05-29 18:57 → 2014-06-05 20:57 (+7d) | 2014-06-25 17:57 → 2014-07-02 19:57 (+7d) |  |  |  |
| 139 | Codificación de Funciones básicas (BackEnd) | 2014-05-29 18:57 → 2014-06-05 20:57 (+7d) | 2014-06-25 17:57 → 2014-07-02 19:57 (+7d) |  |  |  |
| 140 | Codificación de visualizador de ordenes (Android) | 2014-05-29 18:57 → 2014-06-05 20:57 (+7d) | 2014-06-25 19:57 → 2014-07-03 17:57 (+8d) |  |  |  |
| 141 | **Pruebas** | 2014-06-25 19:57 → 2014-07-03 17:57 (+8d) | 2014-07-02 17:57 → 2014-07-09 19:57 (+7d) |  |  |  |
| 142 | Pruebas de Funcionalidad (para las 3 aplicaciones) | 2014-06-25 19:57 → 2014-07-03 17:57 (+8d) | 2014-07-02 17:57 → 2014-07-09 19:57 (+7d) |  |  |  |
| 143 | **Gestión del Proyecto** | 2014-07-02 17:57 → 2014-07-09 19:57 (+7d) | 2014-07-02 19:57 → 2014-07-10 17:57 (+8d) |  |  |  |
| 144 | Actualización de Riesgos | 2014-07-02 17:57 → 2014-07-09 19:57 (+7d) | 2014-07-02 19:57 → 2014-07-10 17:57 (+8d) |  |  |  |
| 145 | Revisión de planificacion (posible replanificación) | 2014-07-02 17:57 → 2014-07-09 19:57 (+7d) | 2014-07-02 18:57 → 2014-07-09 20:57 (+7d) |  |  |  |
| 146 | **Gestión de Configuración** | 2014-07-02 19:57 → 2014-07-10 17:57 (+8d) | 2014-07-02 20:57 → 2014-07-10 18:57 (+8d) |  |  |  |
| 147 | Versionado de todos los proyectos | 2014-07-02 19:57 → 2014-07-10 17:57 (+8d) | 2014-07-02 20:57 → 2014-07-10 18:57 (+8d) |  |  |  |
| 148 | Revisión de versionado de documentos modificados | 2014-07-02 19:57 → 2014-07-10 17:57 (+8d) | 2014-07-02 20:57 → 2014-07-10 18:57 (+8d) |  |  |  |
| 149 | **Iteración C6** | 2014-07-02 20:57 → 2014-07-10 18:57 (+8d) | 2014-08-06 19:57 → 2014-08-14 17:57 (+8d) |  |  |  |
| 150 | **Análisis/Diseño** | 2014-07-02 20:57 → 2014-07-10 18:57 (+8d) | 2014-07-08 20:57 → 2014-07-16 18:57 (+8d) |  |  |  |
| 151 | Revisión de Diagramas y Modelos de Análisis/Diseño | 2014-07-02 20:57 → 2014-07-10 18:57 (+8d) | 2014-07-08 20:57 → 2014-07-16 18:57 (+8d) |  |  |  |
| 152 | **Implementación** | 2014-07-08 20:57 → 2014-07-16 18:57 (+8d) | 2014-07-30 18:57 → 2014-08-06 20:57 (+7d) |  |  |  |

| ID | Task | Start | Finish | Complete | Other |
| --- | --- | --- | --- | --- | --- |
| 153 | Codificación de Calculos de tiempos de espera (FrontEnd) | 2014-07-08 20:57 → 2014-07-16 18:57 (+8d) | 2014-07-30 18:57 → 2014-08-06 20:57 (+7d) |  |  |
| 154 | Codificación de visualizador de Ordenes (BackEnd) | 2014-07-08 20:57 → 2014-07-16 18:57 (+8d) | 2014-07-29 20:57 → 2014-08-06 18:57 (+8d) |  |  |
| 155 | Codificación de personalización gráfica (Android) | 2014-07-08 20:57 → 2014-07-16 18:57 (+8d) | 2014-07-30 18:57 → 2014-08-06 20:57 (+7d) |  |  |
| 156 | **Pruebas** | 2014-07-30 18:57 → 2014-08-06 20:57 (+7d) | 2014-08-05 20:57 → 2014-08-13 18:57 (+8d) |  |  |
| 157 | Pruebas de comunicación de interfaces y pruebas de funcionalidad | 2014-07-30 18:57 → 2014-08-06 20:57 (+7d) | 2014-08-05 20:57 → 2014-08-13 18:57 (+8d) |  |  |
| 158 | **Gestión del Proyecto** | 2014-08-05 20:57 → 2014-08-13 18:57 (+8d) | 2014-08-06 17:57 → 2014-08-13 19:57 (+7d) |  |  |
| 159 | Actualización de Riesgos | 2014-08-05 20:57 → 2014-08-13 18:57 (+8d) | 2014-08-06 17:57 → 2014-08-13 19:57 (+7d) |  |  |
| 160 | Revisión de planificacion (posible replanificación) | 2014-08-05 20:57 → 2014-08-13 18:57 (+8d) | 2014-08-06 17:57 → 2014-08-13 19:57 (+7d) |  |  |
| 161 | **Gestión de Configuración** | 2014-08-06 17:57 → 2014-08-13 19:57 (+7d) | 2014-08-06 19:57 → 2014-08-14 17:57 (+8d) |  |  |
| 162 | Versionado de todos los proyectos | 2014-08-06 17:57 → 2014-08-13 19:57 (+7d) | 2014-08-06 19:57 → 2014-08-14 17:57 (+8d) |  |  |
| 163 | Revisión de versionado de documentos modificados | 2014-08-06 17:57 → 2014-08-13 19:57 (+7d) | 2014-08-06 19:57 → 2014-08-14 17:57 (+8d) |  |  |
| 164 | Capacidad Operacional Inicial | 2014-08-06 19:57 → 2014-08-14 17:57 (+8d) | 2014-08-06 19:57 → 2014-08-14 17:57 (+8d) |  |  |
| 165 | **TRANSICIÓN** | 2014-08-06 19:57 → 2014-08-14 17:57 (+8d) | 2014-09-11 18:57 → 2014-09-18 20:57 (+7d) |  |  |
| 166 | **Iteración T1** | 2014-08-06 19:57 → 2014-08-14 17:57 (+8d) | 2014-09-11 18:57 → 2014-09-18 20:57 (+7d) |  |  |
| 167 | **Implementación** | 2014-08-06 19:57 → 2014-08-14 17:57 (+8d) | 2014-08-19 19:57 → 2014-08-27 17:57 (+8d) |  |  |
| 168 | Elaboracion de documentación para usuarios y videos tutoriales | 2014-08-06 19:57 → 2014-08-14 17:57 (+8d) | 2014-08-19 19:57 → 2014-08-27 17:57 (+8d) |  |  |
| 169 | **Despliegue** | 2014-08-19 19:57 → 2014-08-27 17:57 (+8d) | 2014-09-02 19:57 → 2014-09-10 17:57 (+8d) |  |  |
| 170 | Modelo de despliegue | 2014-08-19 19:57 → 2014-08-27 17:57 (+8d) | 2014-08-26 17:57 → 2014-09-02 19:57 (+7d) |  |  |
| 171 | Integración y puesta a punto del sistema | 2014-08-26 17:57 → 2014-09-02 19:57 (+7d) | 2014-09-02 19:57 → 2014-09-10 17:57 (+8d) |  |  |
| 172 | **Gestión del Proyecto** | 2014-09-02 19:57 → 2014-09-10 17:57 (+8d) | 2014-09-10 20:57 → 2014-09-18 18:57 (+8d) |  |  |
| 173 | Actualización de Riesgos | 2014-09-02 19:57 → 2014-09-10 17:57 (+8d) | 2014-09-02 20:57 → 2014-09-10 18:57 (+8d) |  |  |
| 174 | Revisión de planificacion (posible replanificación) | 2014-09-02 20:57 → 2014-09-10 18:57 (+8d) | 2014-09-03 17:57 → 2014-09-10 19:57 (+7d) |  |  |
| 175 | Análisis de resultados del proyecto | 2014-09-03 17:57 → 2014-09-10 19:57 (+7d) | 2014-09-10 20:57 → 2014-09-18 18:57 (+8d) |  |  |
| 176 | **Gestión de Configuración** | 2014-09-10 20:57 → 2014-09-18 18:57 (+8d) | 2014-09-11 18:57 → 2014-09-18 20:57 (+7d) |  |  |
| 177 | Versionado de todos los proyectos | 2014-09-10 20:57 → 2014-09-18 18:57 (+8d) | 2014-09-11 18:57 → 2014-09-18 20:57 (+7d) |  |  |
| 178 | Revisión de versionado de documentos modificados | 2014-09-10 20:57 → 2014-09-18 18:57 (+8d) | 2014-09-11 18:57 → 2014-09-18 20:57 (+7d) |  |  |
| 179 | Lanzamiento de producto | 2014-09-11 18:57 → 2014-09-18 20:57 (+7d) | 2014-09-11 18:57 → 2014-09-18 20:57 (+7d) |  |  |
| 180 | Fin de Proyecto | 2014-09-11 18:57 → 2014-09-18 20:57 (+7d) | 2014-09-11 18:57 → 2014-09-18 20:57 (+7d) |  |  |
| 181 | **Informe de avance mensual** |  |  | 46% → 8% |  |
| 183 | Informe de avance mensual 2 | 2013-09-25 09:00 A → 2013-09-25 09:00 | 2013-09-25 13:00 A → 2013-09-25 13:00 | 100% → 0% |  |
| 184 | Informe de avance mensual 3 | 2013-10-30 09:00 A → 2013-10-30 09:00 | 2013-10-30 13:00 A → 2013-10-30 13:00 | 100% → 0% |  |
| 185 | Informe de avance mensual 4 | 2013-12-10 09:00 A → 2013-11-27 09:00 (-13d) | 2013-12-10 13:00 A → 2013-11-27 13:00 (-13d) | 100% → 0% | constraint start no earlier than 2013-12-10 09:00 → start no earlier than 2013-11-27 09:00 |
| 186 | Informe de avance mensual 5 | 2014-02-27 09:00 A → 2013-12-25 09:00 (-64d) | 2014-02-27 13:00 A → 2013-12-25 13:00 (-64d) | 100% → 0% | constraint start no earlier than 2014-02-27 09:00 → start no earlier than 2013-12-25 09:00 |
| 187 | Informe de avance mensual 6 | 2014-03-27 09:00 A → 2014-01-29 09:00 (-57d) | 2014-03-27 13:00 A → 2014-01-29 13:00 (-57d) | 100% → 0% | constraint start no earlier than 2014-03-27 09:00 → start no earlier than 2014-01-29 09:00 |

## Version 13 (data date 2013-10-02, saved 2014-03-20, file Informe2.mpp)

Note of the change: Informe 3

Last finish 2014-09-18 → 2014-09-24 (+6d). Complete tasks 10 → 15.

Changed:

| ID | Task | Start | Finish | Duration | Complete | Total float |
| --- | --- | --- | --- | --- | --- | --- |
| 1 | **RestApp** |  | 2014-09-18 20:57 → 2014-09-24 20:57 (+6d) | 68.99d → 69.99d | 6% → 10% |  |
| 2 | **INICIO** |  | 2013-09-25 19:57 → 2013-10-01 19:57 (+6d) | 10.37d → 11.37d | 61% → 96% |  |
| 3 | **Iteración I1** |  | 2013-09-25 19:57 → 2013-10-01 19:57 (+6d) | 10.37d → 11.37d | 61% → 96% |  |
| 14 | **Gestión del Proyecto** |  | 2013-09-18 19:57 → 2013-09-24 17:57 A (+6d) | 5.38d → 6.12d | 53% → 100% | 0d → none |
| 17 | Gestión de riesgos (definición) | 2013-08-29 19:57 A | 2013-09-04 19:57 → 2013-09-05 17:57 A (+1d) | 8h → 10h | 0% → 100% | 0d → none |
| 18 | Gestión de configuración (definición) | 2013-09-04 19:57 → 2013-09-05 17:57 A (+1d) | 2013-09-17 19:57 → 2013-09-18 19:57 A (+1d) | 8h → 10h | 0% → 100% | 0d → none |
| 19 | Presentación Inicial | 2013-09-17 19:57 → 2013-09-18 19:57 A (+1d) | 2013-09-18 19:57 → 2013-09-24 17:57 A (+6d) | 0.5d → 6h | 0% → 100% | 0d → none |
| 20 | **Gestión de configuración** | 2013-09-18 19:57 → 2013-09-24 17:57 A (+6d) | 2013-09-24 19:57 → 2013-09-26 19:57 A (+2d) | 1d → 1.25d | 0% → 100% | 0d → none |
| 21 | Preparación del ambiente de versionado | 2013-09-18 19:57 → 2013-09-24 17:57 A (+6d) | 2013-09-24 19:57 → 2013-09-26 19:57 A (+2d) | 8h → 10h | 0% → 100% | 0d → none |
| 22 | **Ambiente** | 2013-09-24 19:57 → 2013-09-26 19:57 (+2d) | 2013-09-25 19:57 → 2013-10-01 19:57 (+6d) |  |  |  |
| 23 | Identificación y evaluación de herramientas | 2013-09-24 19:57 → 2013-09-26 19:57 (+2d) | 2013-09-25 19:57 → 2013-10-01 19:57 (+6d) |  |  |  |
| 24 | Objetivos del ciclo de vida | 2013-09-25 19:57 → 2013-10-01 19:57 (+6d) | 2013-09-25 19:57 → 2013-10-01 19:57 (+6d) |  |  |  |
| 25 | **ELABORACIÓN** | 2013-09-25 19:57 → 2013-10-01 19:57 (+6d) | 2014-03-19 19:57 → 2014-03-25 19:57 (+6d) |  |  |  |
| 26 | **Iteración E1** | 2013-09-25 19:57 → 2013-10-01 19:57 (+6d) | 2013-11-05 20:57 → 2013-11-07 20:57 (+2d) |  |  |  |
| 27 | **Modelo de Negocio** | 2013-09-25 19:57 → 2013-10-01 19:57 (+6d) | 2013-10-01 18:57 → 2013-10-03 18:57 (+2d) |  |  |  |
| 28 | Entendimiento del Modelo de Negocio | 2013-09-25 19:57 → 2013-10-01 19:57 (+6d) | 2013-10-01 18:57 → 2013-10-03 18:57 (+2d) |  |  |  |
| 29 | **Requerimientos** | 2013-10-01 18:57 → 2013-10-03 18:57 (+2d) | 2013-10-08 18:57 → 2013-10-10 18:57 (+2d) |  |  |  |
| 30 | Definicón de nuevos requerimientos | 2013-10-01 18:57 → 2013-10-03 18:57 (+2d) | 2013-10-01 20:57 → 2013-10-03 20:57 (+2d) |  |  |  |
| 31 | Documentación de requerimientos según estandar | 2013-10-01 20:57 → 2013-10-03 20:57 (+2d) | 2013-10-03 17:57 → 2013-10-09 17:57 (+6d) |  |  |  |
| 32 | Jerarquización de requerimientos | 2013-10-03 17:57 → 2013-10-09 17:57 (+6d) | 2013-10-08 18:57 → 2013-10-10 18:57 (+2d) |  |  |  |
| 33 | **Análisis/Diseño** | 2013-10-08 18:57 → 2013-10-10 18:57 (+2d) | 2013-10-15 18:57 → 2013-10-17 18:57 (+2d) |  |  |  |
| 34 | Refinación de Modelo de Casos de Usos | 2013-10-08 18:57 → 2013-10-10 18:57 (+2d) | 2013-10-08 20:57 → 2013-10-10 20:57 (+2d) |  |  |  |
| 35 | Definición preliminar de Diagrama de clases | 2013-10-08 20:57 → 2013-10-10 20:57 (+2d) | 2013-10-15 18:57 → 2013-10-17 18:57 (+2d) |  |  |  |
| 36 | **Implementación** | 2013-10-15 18:57 → 2013-10-17 18:57 (+2d) | 2013-10-31 18:57 → 2013-11-06 18:57 (+6d) |  |  |  |
| 37 | Desarrollo prototipos independientes de prueba | 2013-10-15 18:57 → 2013-10-17 18:57 (+2d) | 2013-10-31 18:57 → 2013-11-06 18:57 (+6d) |  |  |  |
| 38 | **Gestión del Proyecto** | 2013-10-31 18:57 → 2013-11-06 18:57 (+6d) | 2013-10-31 20:57 → 2013-11-06 20:57 (+6d) |  |  |  |
| 39 | Actualización y priorización de Riesgos | 2013-10-31 18:57 → 2013-11-06 18:57 (+6d) | 2013-10-31 19:57 → 2013-11-06 19:57 (+6d) |  |  |  |
| 40 | Refinación del Plan de Proyecto | 2013-10-31 19:57 → 2013-11-06 19:57 (+6d) | 2013-10-31 20:57 → 2013-11-06 20:57 (+6d) |  |  |  |
| 41 | **Gestión de Configuración** | 2013-10-31 20:57 → 2013-11-06 20:57 (+6d) | 2013-11-05 17:57 → 2013-11-07 17:57 (+2d) |  |  |  |
| 42 | Revisión de versionado de documentos modificados | 2013-10-31 20:57 → 2013-11-06 20:57 (+6d) | 2013-11-05 17:57 → 2013-11-07 17:57 (+2d) |  |  |  |
| 43 | **Ambiente** | 2013-11-05 17:57 → 2013-11-07 17:57 (+2d) | 2013-11-05 20:57 → 2013-11-07 20:57 (+2d) |  |  |  |
| 44 | Identificación de Tecnología | 2013-11-05 17:57 → 2013-11-07 17:57 (+2d) | 2013-11-05 20:57 → 2013-11-07 20:57 (+2d) |  |  |  |
| 45 | **Iteración E2** | 2013-11-05 20:57 → 2013-11-07 20:57 (+2d) | 2014-02-04 19:57 → 2014-02-06 19:57 (+2d) |  |  |  |
| 46 | **Modelo de Negocio** | 2013-11-05 20:57 → 2013-11-07 20:57 (+2d) | 2013-11-07 17:57 → 2013-11-13 17:57 (+6d) |  |  |  |
| 47 | Refinación del Modelo de Negocio | 2013-11-05 20:57 → 2013-11-07 20:57 (+2d) | 2013-11-07 17:57 → 2013-11-13 17:57 (+6d) |  |  |  |
| 48 | **Requerimientos** | 2013-11-07 17:57 → 2013-11-13 17:57 (+6d) | 2013-11-12 17:57 → 2013-11-14 17:57 (+2d) |  |  |  |
| 49 | Validación de requerimientos | 2013-11-07 17:57 → 2013-11-13 17:57 (+6d) | 2013-11-07 20:57 → 2013-11-13 20:57 (+6d) |  |  |  |
| 50 | Mapeo de Requerimientos a Casos de Uso | 2013-11-07 17:57 → 2013-11-13 17:57 (+6d) | 2013-11-12 17:57 → 2013-11-14 17:57 (+2d) |  |  |  |
| 51 | **Análisis/Diseño** | 2013-11-12 17:57 → 2013-11-14 17:57 (+2d) | 2013-12-10 17:57 → 2013-12-12 17:57 (+2d) |  |  |  |
| 52 | Definición Inicial de diagrama de Clases | 2013-11-12 17:57 → 2013-11-14 17:57 (+2d) | 2013-11-14 19:57 → 2013-11-20 19:57 (+6d) |  |  |  |
| 53 | Definición inicial del Modelo de Datos | 2013-11-14 19:57 → 2013-11-20 19:57 (+6d) | 2013-11-20 19:57 → 2013-11-26 19:57 (+6d) |  |  |  |
| 54 | Definición inicial de Diagrama de Actividades | 2013-11-20 19:57 → 2013-11-26 19:57 (+6d) | 2013-11-26 19:57 → 2013-11-28 19:57 (+2d) |  |  |  |
| 55 | Definición inicial de Diagramas de Secuencia | 2013-11-26 19:57 → 2013-11-28 19:57 (+2d) | 2013-12-10 17:57 → 2013-12-12 17:57 (+2d) |  |  |  |
| 56 | **Implementación** | 2013-12-10 17:57 → 2013-12-12 17:57 (+2d) | 2013-12-11 19:57 → 2014-02-04 19:57 (+55d) |  |  |  |
| 57 | Mejoramientos de prototipos | 2013-12-10 17:57 → 2013-12-12 17:57 (+2d) | 2013-12-11 19:57 → 2014-02-04 19:57 (+55d) |  |  |  |
| 58 | **Gestión del Proyecto** | 2013-12-11 19:57 → 2014-02-04 19:57 (+55d) | 2013-12-12 17:57 → 2014-02-05 17:57 (+55d) |  |  |  |
| 59 | Validación del Plan de proyecto | 2013-12-11 19:57 → 2014-02-04 19:57 (+55d) | 2013-12-12 17:57 → 2014-02-05 17:57 (+55d) |  |  |  |
| 60 | **Gestión de Configuración** | 2013-12-12 17:57 → 2014-02-05 17:57 (+55d) | 2013-12-12 18:57 → 2014-02-05 18:57 (+55d) |  |  |  |
| 61 | Versionado de los prototipos | 2013-12-12 17:57 → 2014-02-05 17:57 (+55d) | 2013-12-12 18:57 → 2014-02-05 18:57 (+55d) |  |  |  |
| 62 | Revisión de versionado de documentos modificados | 2013-12-12 17:57 → 2014-02-05 17:57 (+55d) | 2013-12-12 18:57 → 2014-02-05 18:57 (+55d) |  |  |  |
| 63 | **Ambiente** | 2013-12-12 18:57 → 2014-02-05 18:57 (+55d) | 2014-02-04 19:57 → 2014-02-06 19:57 (+2d) |  |  |  |
| 64 | Preparación del ambiente de desarrollo | 2013-12-12 18:57 → 2014-02-05 18:57 (+55d) | 2014-02-04 19:57 → 2014-02-06 19:57 (+2d) |  |  |  |
| 65 | **Iteración E3** | 2014-02-04 19:57 → 2014-02-06 19:57 (+2d) | 2014-03-19 19:57 → 2014-03-25 19:57 (+6d) |  |  |  |
| 66 | **Requerimientos** | 2014-02-04 19:57 → 2014-02-06 19:57 (+2d) | 2014-02-05 18:57 → 2014-02-26 18:57 (+21d) |  |  |  |
| 67 | Validacion de Mapeo de Requerimientos a Casos de Uso | 2014-02-04 19:57 → 2014-02-06 19:57 (+2d) | 2014-02-05 18:57 → 2014-02-26 18:57 (+21d) |  |  |  |
| 68 | **Análisis/Diseño** | 2014-02-05 18:57 → 2014-02-26 18:57 (+21d) | 2014-03-12 20:57 → 2014-03-18 20:57 (+6d) |  |  |  |
| 69 | Refinación de Diagrama de Casos de Uso | 2014-02-05 18:57 → 2014-02-26 18:57 (+21d) | 2014-02-06 20:57 → 2014-02-27 20:57 (+21d) |  |  |  |
| 70 | Refinación de Diagrama de Clases | 2014-02-06 20:57 → 2014-02-27 20:57 (+21d) | 2014-02-27 18:57 → 2014-03-12 18:57 (+13d) |  |  |  |
| 71 | Refinación del Modelo de Datos | 2014-02-27 18:57 → 2014-03-12 18:57 (+13d) | 2014-03-11 18:57 → 2014-03-13 18:57 (+2d) |  |  |  |
| 72 | Descripción de casos de uso mas importantes | 2014-03-11 18:57 → 2014-03-13 18:57 (+2d) | 2014-03-12 20:57 → 2014-03-18 20:57 (+6d) |  |  |  |
| 73 | **Implementación** | 2014-03-12 20:57 → 2014-03-18 20:57 (+6d) | 2014-03-18 20:57 → 2014-03-20 20:57 (+2d) |  |  |  |
| 74 | Definición de interfaces de comunicación entre plataformas | 2014-03-12 20:57 → 2014-03-18 20:57 (+6d) | 2014-03-18 20:57 → 2014-03-20 20:57 (+2d) |  |  |  |
| 75 | **Gestión del Proyecto** | 2014-03-18 20:57 → 2014-03-20 20:57 (+2d) | 2014-03-19 18:57 → 2014-03-25 18:57 (+6d) |  |  |  |
| 76 | Actualización de planes de prevención y contigencia para nuevos Riesgos | 2014-03-18 20:57 → 2014-03-20 20:57 (+2d) | 2014-03-19 18:57 → 2014-03-25 18:57 (+6d) |  |  |  |
| 77 | **Gestión de Configuración** | 2014-03-19 18:57 → 2014-03-25 18:57 (+6d) | 2014-03-19 19:57 → 2014-03-25 19:57 (+6d) |  |  |  |
| 78 | Revisión de versionado de documentos modificados | 2014-03-19 18:57 → 2014-03-25 18:57 (+6d) | 2014-03-19 19:57 → 2014-03-25 19:57 (+6d) |  |  |  |
| 79 | Arquitectura del ciclo de vida | 2014-03-19 19:57 → 2014-03-25 19:57 (+6d) | 2014-03-19 19:57 → 2014-03-25 19:57 (+6d) |  |  |  |
| 80 | **CONSTRUCCIÓN** | 2014-03-19 19:57 → 2014-03-25 19:57 (+6d) | 2014-08-14 17:57 → 2014-08-20 17:57 (+6d) |  |  |  |
| 81 | **Iteración C1** | 2014-03-19 19:57 → 2014-03-25 19:57 (+6d) | 2014-04-03 19:57 → 2014-04-09 19:57 (+6d) |  |  |  |
| 82 | **Análisis/Diseño** | 2014-03-19 19:57 → 2014-03-25 19:57 (+6d) | 2014-03-25 19:57 → 2014-03-27 19:57 (+2d) |  |  |  |

| ID | Task | Start | Finish |
| --- | --- | --- | --- |
| 83 | Refinación de Diagramas de Actividad | 2014-03-19 19:57 → 2014-03-25 19:57 (+6d) | 2014-03-20 19:57 → 2014-03-26 19:57 (+6d) |
| 84 | Refinación de Diagramas de Secuencia | 2014-03-20 19:57 → 2014-03-26 19:57 (+6d) | 2014-03-25 19:57 → 2014-03-27 19:57 (+2d) |
| 85 | **Implementación** | 2014-03-25 19:57 → 2014-03-27 19:57 (+2d) | 2014-04-02 18:57 → 2014-04-08 18:57 (+6d) |
| 86 | Construcción de Base de Datos | 2014-03-25 19:57 → 2014-03-27 19:57 (+2d) | 2014-03-27 19:57 → 2014-04-02 19:57 (+6d) |
| 87 | Definición de Interfaz de Usuario | 2014-03-27 19:57 → 2014-04-02 19:57 (+6d) | 2014-04-02 18:57 → 2014-04-08 18:57 (+6d) |
| 88 | **Gestión del Proyecto** | 2014-04-02 18:57 → 2014-04-08 18:57 (+6d) | 2014-04-03 18:57 → 2014-04-09 18:57 (+6d) |
| 89 | Actualización de Riesgos | 2014-04-02 18:57 → 2014-04-08 18:57 (+6d) | 2014-04-02 19:57 → 2014-04-08 19:57 (+6d) |
| 90 | Revisión de planificacion (posible replanificación) | 2014-04-02 19:57 → 2014-04-08 19:57 (+6d) | 2014-04-03 18:57 → 2014-04-09 18:57 (+6d) |
| 91 | **Gestión de Configuración** | 2014-04-03 18:57 → 2014-04-09 18:57 (+6d) | 2014-04-03 19:57 → 2014-04-09 19:57 (+6d) |
| 92 | Versionado de prototipos | 2014-04-03 18:57 → 2014-04-09 18:57 (+6d) | 2014-04-03 19:57 → 2014-04-09 19:57 (+6d) |
| 93 | Revisión de versionado de documentos modificados | 2014-04-03 18:57 → 2014-04-09 18:57 (+6d) | 2014-04-03 19:57 → 2014-04-09 19:57 (+6d) |
| 94 | **Iteración C2** | 2014-04-03 19:57 → 2014-04-09 19:57 (+6d) | 2014-04-29 19:57 → 2014-05-01 19:57 (+2d) |
| 95 | **Análisis/Diseño** | 2014-04-03 19:57 → 2014-04-09 19:57 (+6d) | 2014-04-10 20:57 → 2014-04-16 20:57 (+6d) |
| 96 | Definición inicial del Modelo de componentes | 2014-04-03 19:57 → 2014-04-09 19:57 (+6d) | 2014-04-09 20:57 → 2014-04-15 20:57 (+6d) |
| 97 | Refinación de Diagramas de clases (agregado de operaciones) | 2014-04-09 20:57 → 2014-04-15 20:57 (+6d) | 2014-04-10 20:57 → 2014-04-16 20:57 (+6d) |
| 98 | **Implementación** | 2014-04-10 20:57 → 2014-04-16 20:57 (+6d) | 2014-04-23 19:57 → 2014-04-29 19:57 (+6d) |
| 99 | Codificación de Interfaz de usuario (FrontEnd) | 2014-04-10 20:57 → 2014-04-16 20:57 (+6d) | 2014-04-23 18:57 → 2014-04-29 18:57 (+6d) |
| 100 | Codificación de Interfaz de usuario (BackEnd) | 2014-04-10 20:57 → 2014-04-16 20:57 (+6d) | 2014-04-23 19:57 → 2014-04-29 19:57 (+6d) |
| 101 | Codificación de Interfaz de usuario (Android) | 2014-04-10 20:57 → 2014-04-16 20:57 (+6d) | 2014-04-23 19:57 → 2014-04-29 19:57 (+6d) |
| 102 | **Gestión del Proyecto** | 2014-04-23 19:57 → 2014-04-29 19:57 (+6d) | 2014-04-29 17:57 → 2014-05-01 17:57 (+2d) |
| 103 | Actualización de Riesgos | 2014-04-23 19:57 → 2014-04-29 19:57 (+6d) | 2014-04-24 18:57 → 2014-04-30 18:57 (+6d) |
| 104 | Revisión de planificacion (posible replanificación) | 2014-04-24 18:57 → 2014-04-30 18:57 (+6d) | 2014-04-29 17:57 → 2014-05-01 17:57 (+2d) |
| 105 | **Gestión de Configuración** | 2014-04-29 17:57 → 2014-05-01 17:57 (+2d) | 2014-04-29 19:57 → 2014-05-01 19:57 (+2d) |
| 106 | Versionado de interfaz de usuario | 2014-04-29 17:57 → 2014-05-01 17:57 (+2d) | 2014-04-29 18:57 → 2014-05-01 18:57 (+2d) |
| 107 | Revisión de versionado de documentos modificados | 2014-04-29 18:57 → 2014-05-01 18:57 (+2d) | 2014-04-29 19:57 → 2014-05-01 19:57 (+2d) |
| 108 | **Iteración C3** | 2014-04-29 19:57 → 2014-05-01 19:57 (+2d) | 2014-05-14 19:57 → 2014-05-20 19:57 (+6d) |
| 109 | **Análisis/Diseño** | 2014-04-29 19:57 → 2014-05-01 19:57 (+2d) | 2014-04-30 18:57 → 2014-05-06 18:57 (+6d) |
| 110 | Refinación del Modelo de componentes | 2014-04-29 19:57 → 2014-05-01 19:57 (+2d) | 2014-04-30 18:57 → 2014-05-06 18:57 (+6d) |
| 111 | **Implementación** | 2014-04-30 18:57 → 2014-05-06 18:57 (+6d) | 2014-05-13 19:57 → 2014-05-15 19:57 (+2d) |
| 112 | Codificacion de logeo de usuario (FrontEnd) | 2014-04-30 18:57 → 2014-05-06 18:57 (+6d) | 2014-05-13 19:57 → 2014-05-15 19:57 (+2d) |
| 113 | Codificación de seguridad [Roles y Usuario] (BackEnd) | 2014-04-30 18:57 → 2014-05-06 18:57 (+6d) | 2014-05-13 18:57 → 2014-05-15 18:57 (+2d) |
| 114 | Codificación de Local Storage (Android) | 2014-04-30 18:57 → 2014-05-06 18:57 (+6d) | 2014-05-13 18:57 → 2014-05-15 18:57 (+2d) |
| 115 | **Gestión del Proyecto** | 2014-05-13 19:57 → 2014-05-15 19:57 (+2d) | 2014-05-14 18:57 → 2014-05-20 18:57 (+6d) |
| 116 | Actualización de Riesgos | 2014-05-13 19:57 → 2014-05-15 19:57 (+2d) | 2014-05-14 18:57 → 2014-05-20 18:57 (+6d) |
| 117 | Revisión de planificacion (posible replanificación) | 2014-05-13 19:57 → 2014-05-15 19:57 (+2d) | 2014-05-14 18:57 → 2014-05-20 18:57 (+6d) |
| 118 | **Gestión de Configuración** | 2014-05-14 18:57 → 2014-05-20 18:57 (+6d) | 2014-05-14 19:57 → 2014-05-20 19:57 (+6d) |
| 119 | Versionado de todos los proyectos | 2014-05-14 18:57 → 2014-05-20 18:57 (+6d) | 2014-05-14 19:57 → 2014-05-20 19:57 (+6d) |
| 120 | Revisión de versionado de documentos modificados | 2014-05-14 18:57 → 2014-05-20 18:57 (+6d) | 2014-05-14 19:57 → 2014-05-20 19:57 (+6d) |
| 121 | **Iteración C4** | 2014-05-14 19:57 → 2014-05-20 19:57 (+6d) | 2014-06-04 18:57 → 2014-06-10 18:57 (+6d) |
| 122 | **Análisis/Diseño** | 2014-05-14 19:57 → 2014-05-20 19:57 (+6d) | 2014-05-15 19:57 → 2014-05-21 19:57 (+6d) |
| 123 | Refinación del Modelo de Datos | 2014-05-14 19:57 → 2014-05-20 19:57 (+6d) | 2014-05-15 19:57 → 2014-05-21 19:57 (+6d) |
| 124 | **Implementación** | 2014-05-15 19:57 → 2014-05-21 19:57 (+6d) | 2014-06-03 19:57 → 2014-06-05 19:57 (+2d) |
| 125 | Codificación de Gestión de reservas online (FrontEnd) | 2014-05-15 19:57 → 2014-05-21 19:57 (+6d) | 2014-06-03 19:57 → 2014-06-05 19:57 (+2d) |
| 126 | Codificación de ABM principales (BackEnd) | 2014-05-15 19:57 → 2014-05-21 19:57 (+6d) | 2014-06-03 17:57 → 2014-06-05 17:57 (+2d) |
| 127 | Codificación de ABM principales (Android) | 2014-05-15 19:57 → 2014-05-21 19:57 (+6d) | 2014-06-03 19:57 → 2014-06-05 19:57 (+2d) |
| 128 | **Gestión del Proyecto** | 2014-06-03 19:57 → 2014-06-05 19:57 (+2d) | 2014-06-04 17:57 → 2014-06-10 17:57 (+6d) |
| 129 | Actualización de Riesgos | 2014-06-03 19:57 → 2014-06-05 19:57 (+2d) | 2014-06-04 17:57 → 2014-06-10 17:57 (+6d) |
| 130 | Revisión de planificacion (posible replanificación) | 2014-06-03 19:57 → 2014-06-05 19:57 (+2d) | 2014-06-03 20:57 → 2014-06-05 20:57 (+2d) |
| 131 | **Gestión de Configuración** | 2014-06-04 17:57 → 2014-06-10 17:57 (+6d) | 2014-06-04 18:57 → 2014-06-10 18:57 (+6d) |
| 132 | Versionado de todos los proyectos | 2014-06-04 17:57 → 2014-06-10 17:57 (+6d) | 2014-06-04 18:57 → 2014-06-10 18:57 (+6d) |
| 133 | Revisión de versionado de documentos modificados | 2014-06-04 17:57 → 2014-06-10 17:57 (+6d) | 2014-06-04 18:57 → 2014-06-10 18:57 (+6d) |
| 134 | **Iteración C5** | 2014-06-04 18:57 → 2014-06-10 18:57 (+6d) | 2014-07-10 18:57 → 2014-07-16 18:57 (+6d) |
| 135 | **Análisis/Diseño** | 2014-06-04 18:57 → 2014-06-10 18:57 (+6d) | 2014-06-05 20:57 → 2014-06-11 20:57 (+6d) |
| 136 | Revisión de Diagramas y Modelos de Análisis/Diseño | 2014-06-04 18:57 → 2014-06-10 18:57 (+6d) | 2014-06-05 20:57 → 2014-06-11 20:57 (+6d) |
| 137 | **Implementación** | 2014-06-05 20:57 → 2014-06-11 20:57 (+6d) | 2014-07-03 17:57 → 2014-07-09 17:57 (+6d) |
| 138 | Codificación de Calculos de tiempos de espera (FrontEnd) | 2014-06-05 20:57 → 2014-06-11 20:57 (+6d) | 2014-07-02 19:57 → 2014-07-08 19:57 (+6d) |
| 139 | Codificación de Funciones básicas (BackEnd) | 2014-06-05 20:57 → 2014-06-11 20:57 (+6d) | 2014-07-02 19:57 → 2014-07-08 19:57 (+6d) |
| 140 | Codificación de visualizador de ordenes (Android) | 2014-06-05 20:57 → 2014-06-11 20:57 (+6d) | 2014-07-03 17:57 → 2014-07-09 17:57 (+6d) |
| 141 | **Pruebas** | 2014-07-03 17:57 → 2014-07-09 17:57 (+6d) | 2014-07-09 19:57 → 2014-07-15 19:57 (+6d) |
| 142 | Pruebas de Funcionalidad (para las 3 aplicaciones) | 2014-07-03 17:57 → 2014-07-09 17:57 (+6d) | 2014-07-09 19:57 → 2014-07-15 19:57 (+6d) |
| 143 | **Gestión del Proyecto** | 2014-07-09 19:57 → 2014-07-15 19:57 (+6d) | 2014-07-10 17:57 → 2014-07-16 17:57 (+6d) |
| 144 | Actualización de Riesgos | 2014-07-09 19:57 → 2014-07-15 19:57 (+6d) | 2014-07-10 17:57 → 2014-07-16 17:57 (+6d) |
| 145 | Revisión de planificacion (posible replanificación) | 2014-07-09 19:57 → 2014-07-15 19:57 (+6d) | 2014-07-09 20:57 → 2014-07-15 20:57 (+6d) |
| 146 | **Gestión de Configuración** | 2014-07-10 17:57 → 2014-07-16 17:57 (+6d) | 2014-07-10 18:57 → 2014-07-16 18:57 (+6d) |
| 147 | Versionado de todos los proyectos | 2014-07-10 17:57 → 2014-07-16 17:57 (+6d) | 2014-07-10 18:57 → 2014-07-16 18:57 (+6d) |
| 148 | Revisión de versionado de documentos modificados | 2014-07-10 17:57 → 2014-07-16 17:57 (+6d) | 2014-07-10 18:57 → 2014-07-16 18:57 (+6d) |
| 149 | **Iteración C6** | 2014-07-10 18:57 → 2014-07-16 18:57 (+6d) | 2014-08-14 17:57 → 2014-08-20 17:57 (+6d) |
| 150 | **Análisis/Diseño** | 2014-07-10 18:57 → 2014-07-16 18:57 (+6d) | 2014-07-16 18:57 → 2014-07-22 18:57 (+6d) |
| 151 | Revisión de Diagramas y Modelos de Análisis/Diseño | 2014-07-10 18:57 → 2014-07-16 18:57 (+6d) | 2014-07-16 18:57 → 2014-07-22 18:57 (+6d) |
| 152 | **Implementación** | 2014-07-16 18:57 → 2014-07-22 18:57 (+6d) | 2014-08-06 20:57 → 2014-08-12 20:57 (+6d) |

| ID | Task | Start | Finish | Complete |
| --- | --- | --- | --- | --- |
| 153 | Codificación de Calculos de tiempos de espera (FrontEnd) | 2014-07-16 18:57 → 2014-07-22 18:57 (+6d) | 2014-08-06 20:57 → 2014-08-12 20:57 (+6d) |  |
| 154 | Codificación de visualizador de Ordenes (BackEnd) | 2014-07-16 18:57 → 2014-07-22 18:57 (+6d) | 2014-08-06 18:57 → 2014-08-12 18:57 (+6d) |  |
| 155 | Codificación de personalización gráfica (Android) | 2014-07-16 18:57 → 2014-07-22 18:57 (+6d) | 2014-08-06 20:57 → 2014-08-12 20:57 (+6d) |  |
| 156 | **Pruebas** | 2014-08-06 20:57 → 2014-08-12 20:57 (+6d) | 2014-08-13 18:57 → 2014-08-19 18:57 (+6d) |  |
| 157 | Pruebas de comunicación de interfaces y pruebas de funcionalidad | 2014-08-06 20:57 → 2014-08-12 20:57 (+6d) | 2014-08-13 18:57 → 2014-08-19 18:57 (+6d) |  |
| 158 | **Gestión del Proyecto** | 2014-08-13 18:57 → 2014-08-19 18:57 (+6d) | 2014-08-13 19:57 → 2014-08-19 19:57 (+6d) |  |
| 159 | Actualización de Riesgos | 2014-08-13 18:57 → 2014-08-19 18:57 (+6d) | 2014-08-13 19:57 → 2014-08-19 19:57 (+6d) |  |
| 160 | Revisión de planificacion (posible replanificación) | 2014-08-13 18:57 → 2014-08-19 18:57 (+6d) | 2014-08-13 19:57 → 2014-08-19 19:57 (+6d) |  |
| 161 | **Gestión de Configuración** | 2014-08-13 19:57 → 2014-08-19 19:57 (+6d) | 2014-08-14 17:57 → 2014-08-20 17:57 (+6d) |  |
| 162 | Versionado de todos los proyectos | 2014-08-13 19:57 → 2014-08-19 19:57 (+6d) | 2014-08-14 17:57 → 2014-08-20 17:57 (+6d) |  |
| 163 | Revisión de versionado de documentos modificados | 2014-08-13 19:57 → 2014-08-19 19:57 (+6d) | 2014-08-14 17:57 → 2014-08-20 17:57 (+6d) |  |
| 164 | Capacidad Operacional Inicial | 2014-08-14 17:57 → 2014-08-20 17:57 (+6d) | 2014-08-14 17:57 → 2014-08-20 17:57 (+6d) |  |
| 165 | **TRANSICIÓN** | 2014-08-14 17:57 → 2014-08-20 17:57 (+6d) | 2014-09-18 20:57 → 2014-09-24 20:57 (+6d) |  |
| 166 | **Iteración T1** | 2014-08-14 17:57 → 2014-08-20 17:57 (+6d) | 2014-09-18 20:57 → 2014-09-24 20:57 (+6d) |  |
| 167 | **Implementación** | 2014-08-14 17:57 → 2014-08-20 17:57 (+6d) | 2014-08-27 17:57 → 2014-09-02 17:57 (+6d) |  |
| 168 | Elaboracion de documentación para usuarios y videos tutoriales | 2014-08-14 17:57 → 2014-08-20 17:57 (+6d) | 2014-08-27 17:57 → 2014-09-02 17:57 (+6d) |  |
| 169 | **Despliegue** | 2014-08-27 17:57 → 2014-09-02 17:57 (+6d) | 2014-09-10 17:57 → 2014-09-16 17:57 (+6d) |  |
| 170 | Modelo de despliegue | 2014-08-27 17:57 → 2014-09-02 17:57 (+6d) | 2014-09-02 19:57 → 2014-09-04 19:57 (+2d) |  |
| 171 | Integración y puesta a punto del sistema | 2014-09-02 19:57 → 2014-09-04 19:57 (+2d) | 2014-09-10 17:57 → 2014-09-16 17:57 (+6d) |  |
| 172 | **Gestión del Proyecto** | 2014-09-10 17:57 → 2014-09-16 17:57 (+6d) | 2014-09-18 18:57 → 2014-09-24 18:57 (+6d) |  |
| 173 | Actualización de Riesgos | 2014-09-10 17:57 → 2014-09-16 17:57 (+6d) | 2014-09-10 18:57 → 2014-09-16 18:57 (+6d) |  |
| 174 | Revisión de planificacion (posible replanificación) | 2014-09-10 18:57 → 2014-09-16 18:57 (+6d) | 2014-09-10 19:57 → 2014-09-16 19:57 (+6d) |  |
| 175 | Análisis de resultados del proyecto | 2014-09-10 19:57 → 2014-09-16 19:57 (+6d) | 2014-09-18 18:57 → 2014-09-24 18:57 (+6d) |  |
| 176 | **Gestión de Configuración** | 2014-09-18 18:57 → 2014-09-24 18:57 (+6d) | 2014-09-18 20:57 → 2014-09-24 20:57 (+6d) |  |
| 177 | Versionado de todos los proyectos | 2014-09-18 18:57 → 2014-09-24 18:57 (+6d) | 2014-09-18 20:57 → 2014-09-24 20:57 (+6d) |  |
| 178 | Revisión de versionado de documentos modificados | 2014-09-18 18:57 → 2014-09-24 18:57 (+6d) | 2014-09-18 20:57 → 2014-09-24 20:57 (+6d) |  |
| 179 | Lanzamiento de producto | 2014-09-18 20:57 → 2014-09-24 20:57 (+6d) | 2014-09-18 20:57 → 2014-09-24 20:57 (+6d) |  |
| 180 | Fin de Proyecto | 2014-09-18 20:57 → 2014-09-24 20:57 (+6d) | 2014-09-18 20:57 → 2014-09-24 20:57 (+6d) |  |
| 181 | **Informe de avance mensual** |  |  | 8% → 15% |
| 183 | Informe de avance mensual 2 | 2013-09-25 09:00 A | 2013-09-25 13:00 A | 0% → 100% |

## Version 14 (data date 2013-08-28, saved 2014-03-20, file Informe1.mpp)

Note of the change: Informe 2 terminado

Last finish 2014-09-24 → 2014-09-18 (-6d). Complete tasks 15 → 10.

Changed:

| ID | Task | Start | Finish | Duration | Complete | Total float |
| --- | --- | --- | --- | --- | --- | --- |
| 1 | **RestApp** |  | 2014-09-24 20:57 → 2014-09-18 20:57 (-6d) | 69.99d → 68.99d | 10% → 6% |  |
| 2 | **INICIO** |  | 2013-10-01 19:57 → 2013-09-25 19:57 (-6d) | 11.37d → 10.37d | 96% → 61% |  |
| 3 | **Iteración I1** |  | 2013-10-01 19:57 → 2013-09-25 19:57 (-6d) | 11.37d → 10.37d | 96% → 61% |  |
| 14 | **Gestión del Proyecto** |  | 2013-09-24 17:57 A → 2013-09-18 19:57 (-6d) | 6.12d → 5.38d | 100% → 53% | none → 0d |
| 17 | Gestión de riesgos (definición) | 2013-08-29 19:57 A → 2013-08-29 19:57 | 2013-09-05 17:57 A → 2013-09-04 19:57 (-1d) | 10h → 8h | 100% → 0% | none → 0d |
| 18 | Gestión de configuración (definición) | 2013-09-05 17:57 A → 2013-09-04 19:57 (-1d) | 2013-09-18 19:57 A → 2013-09-17 19:57 (-1d) | 10h → 8h | 100% → 0% | none → 0d |
| 19 | Presentación Inicial | 2013-09-18 19:57 A → 2013-09-17 19:57 (-1d) | 2013-09-24 17:57 A → 2013-09-18 19:57 (-6d) | 6h → 0.5d | 100% → 0% | none → 0d |
| 20 | **Gestión de configuración** | 2013-09-24 17:57 A → 2013-09-18 19:57 (-6d) | 2013-09-26 19:57 A → 2013-09-24 19:57 (-2d) | 1.25d → 1d | 100% → 0% | none → 0d |
| 21 | Preparación del ambiente de versionado | 2013-09-24 17:57 A → 2013-09-18 19:57 (-6d) | 2013-09-26 19:57 A → 2013-09-24 19:57 (-2d) | 10h → 8h | 100% → 0% | none → 0d |
| 22 | **Ambiente** | 2013-09-26 19:57 → 2013-09-24 19:57 (-2d) | 2013-10-01 19:57 → 2013-09-25 19:57 (-6d) |  |  |  |
| 23 | Identificación y evaluación de herramientas | 2013-09-26 19:57 → 2013-09-24 19:57 (-2d) | 2013-10-01 19:57 → 2013-09-25 19:57 (-6d) |  |  |  |
| 24 | Objetivos del ciclo de vida | 2013-10-01 19:57 → 2013-09-25 19:57 (-6d) | 2013-10-01 19:57 → 2013-09-25 19:57 (-6d) |  |  |  |
| 25 | **ELABORACIÓN** | 2013-10-01 19:57 → 2013-09-25 19:57 (-6d) | 2014-03-25 19:57 → 2014-03-19 19:57 (-6d) |  |  |  |
| 26 | **Iteración E1** | 2013-10-01 19:57 → 2013-09-25 19:57 (-6d) | 2013-11-07 20:57 → 2013-11-05 20:57 (-2d) |  |  |  |
| 27 | **Modelo de Negocio** | 2013-10-01 19:57 → 2013-09-25 19:57 (-6d) | 2013-10-03 18:57 → 2013-10-01 18:57 (-2d) |  |  |  |
| 28 | Entendimiento del Modelo de Negocio | 2013-10-01 19:57 → 2013-09-25 19:57 (-6d) | 2013-10-03 18:57 → 2013-10-01 18:57 (-2d) |  |  |  |
| 29 | **Requerimientos** | 2013-10-03 18:57 → 2013-10-01 18:57 (-2d) | 2013-10-10 18:57 → 2013-10-08 18:57 (-2d) |  |  |  |
| 30 | Definicón de nuevos requerimientos | 2013-10-03 18:57 → 2013-10-01 18:57 (-2d) | 2013-10-03 20:57 → 2013-10-01 20:57 (-2d) |  |  |  |
| 31 | Documentación de requerimientos según estandar | 2013-10-03 20:57 → 2013-10-01 20:57 (-2d) | 2013-10-09 17:57 → 2013-10-03 17:57 (-6d) |  |  |  |
| 32 | Jerarquización de requerimientos | 2013-10-09 17:57 → 2013-10-03 17:57 (-6d) | 2013-10-10 18:57 → 2013-10-08 18:57 (-2d) |  |  |  |
| 33 | **Análisis/Diseño** | 2013-10-10 18:57 → 2013-10-08 18:57 (-2d) | 2013-10-17 18:57 → 2013-10-15 18:57 (-2d) |  |  |  |
| 34 | Refinación de Modelo de Casos de Usos | 2013-10-10 18:57 → 2013-10-08 18:57 (-2d) | 2013-10-10 20:57 → 2013-10-08 20:57 (-2d) |  |  |  |
| 35 | Definición preliminar de Diagrama de clases | 2013-10-10 20:57 → 2013-10-08 20:57 (-2d) | 2013-10-17 18:57 → 2013-10-15 18:57 (-2d) |  |  |  |
| 36 | **Implementación** | 2013-10-17 18:57 → 2013-10-15 18:57 (-2d) | 2013-11-06 18:57 → 2013-10-31 18:57 (-6d) |  |  |  |
| 37 | Desarrollo prototipos independientes de prueba | 2013-10-17 18:57 → 2013-10-15 18:57 (-2d) | 2013-11-06 18:57 → 2013-10-31 18:57 (-6d) |  |  |  |
| 38 | **Gestión del Proyecto** | 2013-11-06 18:57 → 2013-10-31 18:57 (-6d) | 2013-11-06 20:57 → 2013-10-31 20:57 (-6d) |  |  |  |
| 39 | Actualización y priorización de Riesgos | 2013-11-06 18:57 → 2013-10-31 18:57 (-6d) | 2013-11-06 19:57 → 2013-10-31 19:57 (-6d) |  |  |  |
| 40 | Refinación del Plan de Proyecto | 2013-11-06 19:57 → 2013-10-31 19:57 (-6d) | 2013-11-06 20:57 → 2013-10-31 20:57 (-6d) |  |  |  |
| 41 | **Gestión de Configuración** | 2013-11-06 20:57 → 2013-10-31 20:57 (-6d) | 2013-11-07 17:57 → 2013-11-05 17:57 (-2d) |  |  |  |
| 42 | Revisión de versionado de documentos modificados | 2013-11-06 20:57 → 2013-10-31 20:57 (-6d) | 2013-11-07 17:57 → 2013-11-05 17:57 (-2d) |  |  |  |
| 43 | **Ambiente** | 2013-11-07 17:57 → 2013-11-05 17:57 (-2d) | 2013-11-07 20:57 → 2013-11-05 20:57 (-2d) |  |  |  |
| 44 | Identificación de Tecnología | 2013-11-07 17:57 → 2013-11-05 17:57 (-2d) | 2013-11-07 20:57 → 2013-11-05 20:57 (-2d) |  |  |  |
| 45 | **Iteración E2** | 2013-11-07 20:57 → 2013-11-05 20:57 (-2d) | 2014-02-06 19:57 → 2014-02-04 19:57 (-2d) |  |  |  |
| 46 | **Modelo de Negocio** | 2013-11-07 20:57 → 2013-11-05 20:57 (-2d) | 2013-11-13 17:57 → 2013-11-07 17:57 (-6d) |  |  |  |
| 47 | Refinación del Modelo de Negocio | 2013-11-07 20:57 → 2013-11-05 20:57 (-2d) | 2013-11-13 17:57 → 2013-11-07 17:57 (-6d) |  |  |  |
| 48 | **Requerimientos** | 2013-11-13 17:57 → 2013-11-07 17:57 (-6d) | 2013-11-14 17:57 → 2013-11-12 17:57 (-2d) |  |  |  |
| 49 | Validación de requerimientos | 2013-11-13 17:57 → 2013-11-07 17:57 (-6d) | 2013-11-13 20:57 → 2013-11-07 20:57 (-6d) |  |  |  |
| 50 | Mapeo de Requerimientos a Casos de Uso | 2013-11-13 17:57 → 2013-11-07 17:57 (-6d) | 2013-11-14 17:57 → 2013-11-12 17:57 (-2d) |  |  |  |
| 51 | **Análisis/Diseño** | 2013-11-14 17:57 → 2013-11-12 17:57 (-2d) | 2013-12-12 17:57 → 2013-12-10 17:57 (-2d) |  |  |  |
| 52 | Definición Inicial de diagrama de Clases | 2013-11-14 17:57 → 2013-11-12 17:57 (-2d) | 2013-11-20 19:57 → 2013-11-14 19:57 (-6d) |  |  |  |
| 53 | Definición inicial del Modelo de Datos | 2013-11-20 19:57 → 2013-11-14 19:57 (-6d) | 2013-11-26 19:57 → 2013-11-20 19:57 (-6d) |  |  |  |
| 54 | Definición inicial de Diagrama de Actividades | 2013-11-26 19:57 → 2013-11-20 19:57 (-6d) | 2013-11-28 19:57 → 2013-11-26 19:57 (-2d) |  |  |  |
| 55 | Definición inicial de Diagramas de Secuencia | 2013-11-28 19:57 → 2013-11-26 19:57 (-2d) | 2013-12-12 17:57 → 2013-12-10 17:57 (-2d) |  |  |  |
| 56 | **Implementación** | 2013-12-12 17:57 → 2013-12-10 17:57 (-2d) | 2014-02-04 19:57 → 2013-12-11 19:57 (-55d) |  |  |  |
| 57 | Mejoramientos de prototipos | 2013-12-12 17:57 → 2013-12-10 17:57 (-2d) | 2014-02-04 19:57 → 2013-12-11 19:57 (-55d) |  |  |  |
| 58 | **Gestión del Proyecto** | 2014-02-04 19:57 → 2013-12-11 19:57 (-55d) | 2014-02-05 17:57 → 2013-12-12 17:57 (-55d) |  |  |  |
| 59 | Validación del Plan de proyecto | 2014-02-04 19:57 → 2013-12-11 19:57 (-55d) | 2014-02-05 17:57 → 2013-12-12 17:57 (-55d) |  |  |  |
| 60 | **Gestión de Configuración** | 2014-02-05 17:57 → 2013-12-12 17:57 (-55d) | 2014-02-05 18:57 → 2013-12-12 18:57 (-55d) |  |  |  |
| 61 | Versionado de los prototipos | 2014-02-05 17:57 → 2013-12-12 17:57 (-55d) | 2014-02-05 18:57 → 2013-12-12 18:57 (-55d) |  |  |  |
| 62 | Revisión de versionado de documentos modificados | 2014-02-05 17:57 → 2013-12-12 17:57 (-55d) | 2014-02-05 18:57 → 2013-12-12 18:57 (-55d) |  |  |  |
| 63 | **Ambiente** | 2014-02-05 18:57 → 2013-12-12 18:57 (-55d) | 2014-02-06 19:57 → 2014-02-04 19:57 (-2d) |  |  |  |
| 64 | Preparación del ambiente de desarrollo | 2014-02-05 18:57 → 2013-12-12 18:57 (-55d) | 2014-02-06 19:57 → 2014-02-04 19:57 (-2d) |  |  |  |
| 65 | **Iteración E3** | 2014-02-06 19:57 → 2014-02-04 19:57 (-2d) | 2014-03-25 19:57 → 2014-03-19 19:57 (-6d) |  |  |  |
| 66 | **Requerimientos** | 2014-02-06 19:57 → 2014-02-04 19:57 (-2d) | 2014-02-26 18:57 → 2014-02-05 18:57 (-21d) |  |  |  |
| 67 | Validacion de Mapeo de Requerimientos a Casos de Uso | 2014-02-06 19:57 → 2014-02-04 19:57 (-2d) | 2014-02-26 18:57 → 2014-02-05 18:57 (-21d) |  |  |  |
| 68 | **Análisis/Diseño** | 2014-02-26 18:57 → 2014-02-05 18:57 (-21d) | 2014-03-18 20:57 → 2014-03-12 20:57 (-6d) |  |  |  |
| 69 | Refinación de Diagrama de Casos de Uso | 2014-02-26 18:57 → 2014-02-05 18:57 (-21d) | 2014-02-27 20:57 → 2014-02-06 20:57 (-21d) |  |  |  |
| 70 | Refinación de Diagrama de Clases | 2014-02-27 20:57 → 2014-02-06 20:57 (-21d) | 2014-03-12 18:57 → 2014-02-27 18:57 (-13d) |  |  |  |
| 71 | Refinación del Modelo de Datos | 2014-03-12 18:57 → 2014-02-27 18:57 (-13d) | 2014-03-13 18:57 → 2014-03-11 18:57 (-2d) |  |  |  |
| 72 | Descripción de casos de uso mas importantes | 2014-03-13 18:57 → 2014-03-11 18:57 (-2d) | 2014-03-18 20:57 → 2014-03-12 20:57 (-6d) |  |  |  |
| 73 | **Implementación** | 2014-03-18 20:57 → 2014-03-12 20:57 (-6d) | 2014-03-20 20:57 → 2014-03-18 20:57 (-2d) |  |  |  |
| 74 | Definición de interfaces de comunicación entre plataformas | 2014-03-18 20:57 → 2014-03-12 20:57 (-6d) | 2014-03-20 20:57 → 2014-03-18 20:57 (-2d) |  |  |  |
| 75 | **Gestión del Proyecto** | 2014-03-20 20:57 → 2014-03-18 20:57 (-2d) | 2014-03-25 18:57 → 2014-03-19 18:57 (-6d) |  |  |  |
| 76 | Actualización de planes de prevención y contigencia para nuevos Riesgos | 2014-03-20 20:57 → 2014-03-18 20:57 (-2d) | 2014-03-25 18:57 → 2014-03-19 18:57 (-6d) |  |  |  |
| 77 | **Gestión de Configuración** | 2014-03-25 18:57 → 2014-03-19 18:57 (-6d) | 2014-03-25 19:57 → 2014-03-19 19:57 (-6d) |  |  |  |
| 78 | Revisión de versionado de documentos modificados | 2014-03-25 18:57 → 2014-03-19 18:57 (-6d) | 2014-03-25 19:57 → 2014-03-19 19:57 (-6d) |  |  |  |
| 79 | Arquitectura del ciclo de vida | 2014-03-25 19:57 → 2014-03-19 19:57 (-6d) | 2014-03-25 19:57 → 2014-03-19 19:57 (-6d) |  |  |  |
| 80 | **CONSTRUCCIÓN** | 2014-03-25 19:57 → 2014-03-19 19:57 (-6d) | 2014-08-20 17:57 → 2014-08-14 17:57 (-6d) |  |  |  |
| 81 | **Iteración C1** | 2014-03-25 19:57 → 2014-03-19 19:57 (-6d) | 2014-04-09 19:57 → 2014-04-03 19:57 (-6d) |  |  |  |
| 82 | **Análisis/Diseño** | 2014-03-25 19:57 → 2014-03-19 19:57 (-6d) | 2014-03-27 19:57 → 2014-03-25 19:57 (-2d) |  |  |  |

| ID | Task | Start | Finish |
| --- | --- | --- | --- |
| 83 | Refinación de Diagramas de Actividad | 2014-03-25 19:57 → 2014-03-19 19:57 (-6d) | 2014-03-26 19:57 → 2014-03-20 19:57 (-6d) |
| 84 | Refinación de Diagramas de Secuencia | 2014-03-26 19:57 → 2014-03-20 19:57 (-6d) | 2014-03-27 19:57 → 2014-03-25 19:57 (-2d) |
| 85 | **Implementación** | 2014-03-27 19:57 → 2014-03-25 19:57 (-2d) | 2014-04-08 18:57 → 2014-04-02 18:57 (-6d) |
| 86 | Construcción de Base de Datos | 2014-03-27 19:57 → 2014-03-25 19:57 (-2d) | 2014-04-02 19:57 → 2014-03-27 19:57 (-6d) |
| 87 | Definición de Interfaz de Usuario | 2014-04-02 19:57 → 2014-03-27 19:57 (-6d) | 2014-04-08 18:57 → 2014-04-02 18:57 (-6d) |
| 88 | **Gestión del Proyecto** | 2014-04-08 18:57 → 2014-04-02 18:57 (-6d) | 2014-04-09 18:57 → 2014-04-03 18:57 (-6d) |
| 89 | Actualización de Riesgos | 2014-04-08 18:57 → 2014-04-02 18:57 (-6d) | 2014-04-08 19:57 → 2014-04-02 19:57 (-6d) |
| 90 | Revisión de planificacion (posible replanificación) | 2014-04-08 19:57 → 2014-04-02 19:57 (-6d) | 2014-04-09 18:57 → 2014-04-03 18:57 (-6d) |
| 91 | **Gestión de Configuración** | 2014-04-09 18:57 → 2014-04-03 18:57 (-6d) | 2014-04-09 19:57 → 2014-04-03 19:57 (-6d) |
| 92 | Versionado de prototipos | 2014-04-09 18:57 → 2014-04-03 18:57 (-6d) | 2014-04-09 19:57 → 2014-04-03 19:57 (-6d) |
| 93 | Revisión de versionado de documentos modificados | 2014-04-09 18:57 → 2014-04-03 18:57 (-6d) | 2014-04-09 19:57 → 2014-04-03 19:57 (-6d) |
| 94 | **Iteración C2** | 2014-04-09 19:57 → 2014-04-03 19:57 (-6d) | 2014-05-01 19:57 → 2014-04-29 19:57 (-2d) |
| 95 | **Análisis/Diseño** | 2014-04-09 19:57 → 2014-04-03 19:57 (-6d) | 2014-04-16 20:57 → 2014-04-10 20:57 (-6d) |
| 96 | Definición inicial del Modelo de componentes | 2014-04-09 19:57 → 2014-04-03 19:57 (-6d) | 2014-04-15 20:57 → 2014-04-09 20:57 (-6d) |
| 97 | Refinación de Diagramas de clases (agregado de operaciones) | 2014-04-15 20:57 → 2014-04-09 20:57 (-6d) | 2014-04-16 20:57 → 2014-04-10 20:57 (-6d) |
| 98 | **Implementación** | 2014-04-16 20:57 → 2014-04-10 20:57 (-6d) | 2014-04-29 19:57 → 2014-04-23 19:57 (-6d) |
| 99 | Codificación de Interfaz de usuario (FrontEnd) | 2014-04-16 20:57 → 2014-04-10 20:57 (-6d) | 2014-04-29 18:57 → 2014-04-23 18:57 (-6d) |
| 100 | Codificación de Interfaz de usuario (BackEnd) | 2014-04-16 20:57 → 2014-04-10 20:57 (-6d) | 2014-04-29 19:57 → 2014-04-23 19:57 (-6d) |
| 101 | Codificación de Interfaz de usuario (Android) | 2014-04-16 20:57 → 2014-04-10 20:57 (-6d) | 2014-04-29 19:57 → 2014-04-23 19:57 (-6d) |
| 102 | **Gestión del Proyecto** | 2014-04-29 19:57 → 2014-04-23 19:57 (-6d) | 2014-05-01 17:57 → 2014-04-29 17:57 (-2d) |
| 103 | Actualización de Riesgos | 2014-04-29 19:57 → 2014-04-23 19:57 (-6d) | 2014-04-30 18:57 → 2014-04-24 18:57 (-6d) |
| 104 | Revisión de planificacion (posible replanificación) | 2014-04-30 18:57 → 2014-04-24 18:57 (-6d) | 2014-05-01 17:57 → 2014-04-29 17:57 (-2d) |
| 105 | **Gestión de Configuración** | 2014-05-01 17:57 → 2014-04-29 17:57 (-2d) | 2014-05-01 19:57 → 2014-04-29 19:57 (-2d) |
| 106 | Versionado de interfaz de usuario | 2014-05-01 17:57 → 2014-04-29 17:57 (-2d) | 2014-05-01 18:57 → 2014-04-29 18:57 (-2d) |
| 107 | Revisión de versionado de documentos modificados | 2014-05-01 18:57 → 2014-04-29 18:57 (-2d) | 2014-05-01 19:57 → 2014-04-29 19:57 (-2d) |
| 108 | **Iteración C3** | 2014-05-01 19:57 → 2014-04-29 19:57 (-2d) | 2014-05-20 19:57 → 2014-05-14 19:57 (-6d) |
| 109 | **Análisis/Diseño** | 2014-05-01 19:57 → 2014-04-29 19:57 (-2d) | 2014-05-06 18:57 → 2014-04-30 18:57 (-6d) |
| 110 | Refinación del Modelo de componentes | 2014-05-01 19:57 → 2014-04-29 19:57 (-2d) | 2014-05-06 18:57 → 2014-04-30 18:57 (-6d) |
| 111 | **Implementación** | 2014-05-06 18:57 → 2014-04-30 18:57 (-6d) | 2014-05-15 19:57 → 2014-05-13 19:57 (-2d) |
| 112 | Codificacion de logeo de usuario (FrontEnd) | 2014-05-06 18:57 → 2014-04-30 18:57 (-6d) | 2014-05-15 19:57 → 2014-05-13 19:57 (-2d) |
| 113 | Codificación de seguridad [Roles y Usuario] (BackEnd) | 2014-05-06 18:57 → 2014-04-30 18:57 (-6d) | 2014-05-15 18:57 → 2014-05-13 18:57 (-2d) |
| 114 | Codificación de Local Storage (Android) | 2014-05-06 18:57 → 2014-04-30 18:57 (-6d) | 2014-05-15 18:57 → 2014-05-13 18:57 (-2d) |
| 115 | **Gestión del Proyecto** | 2014-05-15 19:57 → 2014-05-13 19:57 (-2d) | 2014-05-20 18:57 → 2014-05-14 18:57 (-6d) |
| 116 | Actualización de Riesgos | 2014-05-15 19:57 → 2014-05-13 19:57 (-2d) | 2014-05-20 18:57 → 2014-05-14 18:57 (-6d) |
| 117 | Revisión de planificacion (posible replanificación) | 2014-05-15 19:57 → 2014-05-13 19:57 (-2d) | 2014-05-20 18:57 → 2014-05-14 18:57 (-6d) |
| 118 | **Gestión de Configuración** | 2014-05-20 18:57 → 2014-05-14 18:57 (-6d) | 2014-05-20 19:57 → 2014-05-14 19:57 (-6d) |
| 119 | Versionado de todos los proyectos | 2014-05-20 18:57 → 2014-05-14 18:57 (-6d) | 2014-05-20 19:57 → 2014-05-14 19:57 (-6d) |
| 120 | Revisión de versionado de documentos modificados | 2014-05-20 18:57 → 2014-05-14 18:57 (-6d) | 2014-05-20 19:57 → 2014-05-14 19:57 (-6d) |
| 121 | **Iteración C4** | 2014-05-20 19:57 → 2014-05-14 19:57 (-6d) | 2014-06-10 18:57 → 2014-06-04 18:57 (-6d) |
| 122 | **Análisis/Diseño** | 2014-05-20 19:57 → 2014-05-14 19:57 (-6d) | 2014-05-21 19:57 → 2014-05-15 19:57 (-6d) |
| 123 | Refinación del Modelo de Datos | 2014-05-20 19:57 → 2014-05-14 19:57 (-6d) | 2014-05-21 19:57 → 2014-05-15 19:57 (-6d) |
| 124 | **Implementación** | 2014-05-21 19:57 → 2014-05-15 19:57 (-6d) | 2014-06-05 19:57 → 2014-06-03 19:57 (-2d) |
| 125 | Codificación de Gestión de reservas online (FrontEnd) | 2014-05-21 19:57 → 2014-05-15 19:57 (-6d) | 2014-06-05 19:57 → 2014-06-03 19:57 (-2d) |
| 126 | Codificación de ABM principales (BackEnd) | 2014-05-21 19:57 → 2014-05-15 19:57 (-6d) | 2014-06-05 17:57 → 2014-06-03 17:57 (-2d) |
| 127 | Codificación de ABM principales (Android) | 2014-05-21 19:57 → 2014-05-15 19:57 (-6d) | 2014-06-05 19:57 → 2014-06-03 19:57 (-2d) |
| 128 | **Gestión del Proyecto** | 2014-06-05 19:57 → 2014-06-03 19:57 (-2d) | 2014-06-10 17:57 → 2014-06-04 17:57 (-6d) |
| 129 | Actualización de Riesgos | 2014-06-05 19:57 → 2014-06-03 19:57 (-2d) | 2014-06-10 17:57 → 2014-06-04 17:57 (-6d) |
| 130 | Revisión de planificacion (posible replanificación) | 2014-06-05 19:57 → 2014-06-03 19:57 (-2d) | 2014-06-05 20:57 → 2014-06-03 20:57 (-2d) |
| 131 | **Gestión de Configuración** | 2014-06-10 17:57 → 2014-06-04 17:57 (-6d) | 2014-06-10 18:57 → 2014-06-04 18:57 (-6d) |
| 132 | Versionado de todos los proyectos | 2014-06-10 17:57 → 2014-06-04 17:57 (-6d) | 2014-06-10 18:57 → 2014-06-04 18:57 (-6d) |
| 133 | Revisión de versionado de documentos modificados | 2014-06-10 17:57 → 2014-06-04 17:57 (-6d) | 2014-06-10 18:57 → 2014-06-04 18:57 (-6d) |
| 134 | **Iteración C5** | 2014-06-10 18:57 → 2014-06-04 18:57 (-6d) | 2014-07-16 18:57 → 2014-07-10 18:57 (-6d) |
| 135 | **Análisis/Diseño** | 2014-06-10 18:57 → 2014-06-04 18:57 (-6d) | 2014-06-11 20:57 → 2014-06-05 20:57 (-6d) |
| 136 | Revisión de Diagramas y Modelos de Análisis/Diseño | 2014-06-10 18:57 → 2014-06-04 18:57 (-6d) | 2014-06-11 20:57 → 2014-06-05 20:57 (-6d) |
| 137 | **Implementación** | 2014-06-11 20:57 → 2014-06-05 20:57 (-6d) | 2014-07-09 17:57 → 2014-07-03 17:57 (-6d) |
| 138 | Codificación de Calculos de tiempos de espera (FrontEnd) | 2014-06-11 20:57 → 2014-06-05 20:57 (-6d) | 2014-07-08 19:57 → 2014-07-02 19:57 (-6d) |
| 139 | Codificación de Funciones básicas (BackEnd) | 2014-06-11 20:57 → 2014-06-05 20:57 (-6d) | 2014-07-08 19:57 → 2014-07-02 19:57 (-6d) |
| 140 | Codificación de visualizador de ordenes (Android) | 2014-06-11 20:57 → 2014-06-05 20:57 (-6d) | 2014-07-09 17:57 → 2014-07-03 17:57 (-6d) |
| 141 | **Pruebas** | 2014-07-09 17:57 → 2014-07-03 17:57 (-6d) | 2014-07-15 19:57 → 2014-07-09 19:57 (-6d) |
| 142 | Pruebas de Funcionalidad (para las 3 aplicaciones) | 2014-07-09 17:57 → 2014-07-03 17:57 (-6d) | 2014-07-15 19:57 → 2014-07-09 19:57 (-6d) |
| 143 | **Gestión del Proyecto** | 2014-07-15 19:57 → 2014-07-09 19:57 (-6d) | 2014-07-16 17:57 → 2014-07-10 17:57 (-6d) |
| 144 | Actualización de Riesgos | 2014-07-15 19:57 → 2014-07-09 19:57 (-6d) | 2014-07-16 17:57 → 2014-07-10 17:57 (-6d) |
| 145 | Revisión de planificacion (posible replanificación) | 2014-07-15 19:57 → 2014-07-09 19:57 (-6d) | 2014-07-15 20:57 → 2014-07-09 20:57 (-6d) |
| 146 | **Gestión de Configuración** | 2014-07-16 17:57 → 2014-07-10 17:57 (-6d) | 2014-07-16 18:57 → 2014-07-10 18:57 (-6d) |
| 147 | Versionado de todos los proyectos | 2014-07-16 17:57 → 2014-07-10 17:57 (-6d) | 2014-07-16 18:57 → 2014-07-10 18:57 (-6d) |
| 148 | Revisión de versionado de documentos modificados | 2014-07-16 17:57 → 2014-07-10 17:57 (-6d) | 2014-07-16 18:57 → 2014-07-10 18:57 (-6d) |
| 149 | **Iteración C6** | 2014-07-16 18:57 → 2014-07-10 18:57 (-6d) | 2014-08-20 17:57 → 2014-08-14 17:57 (-6d) |
| 150 | **Análisis/Diseño** | 2014-07-16 18:57 → 2014-07-10 18:57 (-6d) | 2014-07-22 18:57 → 2014-07-16 18:57 (-6d) |
| 151 | Revisión de Diagramas y Modelos de Análisis/Diseño | 2014-07-16 18:57 → 2014-07-10 18:57 (-6d) | 2014-07-22 18:57 → 2014-07-16 18:57 (-6d) |
| 152 | **Implementación** | 2014-07-22 18:57 → 2014-07-16 18:57 (-6d) | 2014-08-12 20:57 → 2014-08-06 20:57 (-6d) |

| ID | Task | Start | Finish | Complete |
| --- | --- | --- | --- | --- |
| 153 | Codificación de Calculos de tiempos de espera (FrontEnd) | 2014-07-22 18:57 → 2014-07-16 18:57 (-6d) | 2014-08-12 20:57 → 2014-08-06 20:57 (-6d) |  |
| 154 | Codificación de visualizador de Ordenes (BackEnd) | 2014-07-22 18:57 → 2014-07-16 18:57 (-6d) | 2014-08-12 18:57 → 2014-08-06 18:57 (-6d) |  |
| 155 | Codificación de personalización gráfica (Android) | 2014-07-22 18:57 → 2014-07-16 18:57 (-6d) | 2014-08-12 20:57 → 2014-08-06 20:57 (-6d) |  |
| 156 | **Pruebas** | 2014-08-12 20:57 → 2014-08-06 20:57 (-6d) | 2014-08-19 18:57 → 2014-08-13 18:57 (-6d) |  |
| 157 | Pruebas de comunicación de interfaces y pruebas de funcionalidad | 2014-08-12 20:57 → 2014-08-06 20:57 (-6d) | 2014-08-19 18:57 → 2014-08-13 18:57 (-6d) |  |
| 158 | **Gestión del Proyecto** | 2014-08-19 18:57 → 2014-08-13 18:57 (-6d) | 2014-08-19 19:57 → 2014-08-13 19:57 (-6d) |  |
| 159 | Actualización de Riesgos | 2014-08-19 18:57 → 2014-08-13 18:57 (-6d) | 2014-08-19 19:57 → 2014-08-13 19:57 (-6d) |  |
| 160 | Revisión de planificacion (posible replanificación) | 2014-08-19 18:57 → 2014-08-13 18:57 (-6d) | 2014-08-19 19:57 → 2014-08-13 19:57 (-6d) |  |
| 161 | **Gestión de Configuración** | 2014-08-19 19:57 → 2014-08-13 19:57 (-6d) | 2014-08-20 17:57 → 2014-08-14 17:57 (-6d) |  |
| 162 | Versionado de todos los proyectos | 2014-08-19 19:57 → 2014-08-13 19:57 (-6d) | 2014-08-20 17:57 → 2014-08-14 17:57 (-6d) |  |
| 163 | Revisión de versionado de documentos modificados | 2014-08-19 19:57 → 2014-08-13 19:57 (-6d) | 2014-08-20 17:57 → 2014-08-14 17:57 (-6d) |  |
| 164 | Capacidad Operacional Inicial | 2014-08-20 17:57 → 2014-08-14 17:57 (-6d) | 2014-08-20 17:57 → 2014-08-14 17:57 (-6d) |  |
| 165 | **TRANSICIÓN** | 2014-08-20 17:57 → 2014-08-14 17:57 (-6d) | 2014-09-24 20:57 → 2014-09-18 20:57 (-6d) |  |
| 166 | **Iteración T1** | 2014-08-20 17:57 → 2014-08-14 17:57 (-6d) | 2014-09-24 20:57 → 2014-09-18 20:57 (-6d) |  |
| 167 | **Implementación** | 2014-08-20 17:57 → 2014-08-14 17:57 (-6d) | 2014-09-02 17:57 → 2014-08-27 17:57 (-6d) |  |
| 168 | Elaboracion de documentación para usuarios y videos tutoriales | 2014-08-20 17:57 → 2014-08-14 17:57 (-6d) | 2014-09-02 17:57 → 2014-08-27 17:57 (-6d) |  |
| 169 | **Despliegue** | 2014-09-02 17:57 → 2014-08-27 17:57 (-6d) | 2014-09-16 17:57 → 2014-09-10 17:57 (-6d) |  |
| 170 | Modelo de despliegue | 2014-09-02 17:57 → 2014-08-27 17:57 (-6d) | 2014-09-04 19:57 → 2014-09-02 19:57 (-2d) |  |
| 171 | Integración y puesta a punto del sistema | 2014-09-04 19:57 → 2014-09-02 19:57 (-2d) | 2014-09-16 17:57 → 2014-09-10 17:57 (-6d) |  |
| 172 | **Gestión del Proyecto** | 2014-09-16 17:57 → 2014-09-10 17:57 (-6d) | 2014-09-24 18:57 → 2014-09-18 18:57 (-6d) |  |
| 173 | Actualización de Riesgos | 2014-09-16 17:57 → 2014-09-10 17:57 (-6d) | 2014-09-16 18:57 → 2014-09-10 18:57 (-6d) |  |
| 174 | Revisión de planificacion (posible replanificación) | 2014-09-16 18:57 → 2014-09-10 18:57 (-6d) | 2014-09-16 19:57 → 2014-09-10 19:57 (-6d) |  |
| 175 | Análisis de resultados del proyecto | 2014-09-16 19:57 → 2014-09-10 19:57 (-6d) | 2014-09-24 18:57 → 2014-09-18 18:57 (-6d) |  |
| 176 | **Gestión de Configuración** | 2014-09-24 18:57 → 2014-09-18 18:57 (-6d) | 2014-09-24 20:57 → 2014-09-18 20:57 (-6d) |  |
| 177 | Versionado de todos los proyectos | 2014-09-24 18:57 → 2014-09-18 18:57 (-6d) | 2014-09-24 20:57 → 2014-09-18 20:57 (-6d) |  |
| 178 | Revisión de versionado de documentos modificados | 2014-09-24 18:57 → 2014-09-18 18:57 (-6d) | 2014-09-24 20:57 → 2014-09-18 20:57 (-6d) |  |
| 179 | Lanzamiento de producto | 2014-09-24 20:57 → 2014-09-18 20:57 (-6d) | 2014-09-24 20:57 → 2014-09-18 20:57 (-6d) |  |
| 180 | Fin de Proyecto | 2014-09-24 20:57 → 2014-09-18 20:57 (-6d) | 2014-09-24 20:57 → 2014-09-18 20:57 (-6d) |  |
| 181 | **Informe de avance mensual** |  |  | 15% → 8% |
| 183 | Informe de avance mensual 2 | 2013-09-25 09:00 A → 2013-09-25 09:00 | 2013-09-25 13:00 A → 2013-09-25 13:00 | 100% → 0% |

## Version 15 (data date 2013-07-29, saved 2014-03-26, file Informe4.mpp)

Note of the change: Informe 4

Last finish 2014-09-18 → 2014-10-02 (+14d). Complete tasks 10 → 36.

Changed:

| ID | Task | Start | Finish | Duration | Complete | Total float |
| --- | --- | --- | --- | --- | --- | --- |
| 1 | **RestApp** |  | 2014-09-18 20:57 → 2014-10-02 17:27 (+14d) | 68.99d → 71.56d | 6% → 23% |  |
| 2 | **INICIO** |  | 2013-09-25 19:57 → 2013-10-01 19:57 A (+6d) | 10.37d → 11.37d | 61% → 100% | 0d → none |
| 3 | **Iteración I1** |  | 2013-09-25 19:57 → 2013-10-01 19:57 A (+6d) | 10.37d → 11.37d | 61% → 100% | 0d → none |
| 14 | **Gestión del Proyecto** |  | 2013-09-18 19:57 → 2013-09-24 17:57 A (+6d) | 5.38d → 6.12d | 53% → 100% | 0d → none |
| 17 | Gestión de riesgos (definición) | 2013-08-29 19:57 A | 2013-09-04 19:57 → 2013-09-05 17:57 A (+1d) | 8h → 10h | 0% → 100% | 0d → none |
| 18 | Gestión de configuración (definición) | 2013-09-04 19:57 → 2013-09-05 17:57 A (+1d) | 2013-09-17 19:57 → 2013-09-18 19:57 A (+1d) | 8h → 10h | 0% → 100% | 0d → none |
| 19 | Presentación Inicial | 2013-09-17 19:57 → 2013-09-18 19:57 A (+1d) | 2013-09-18 19:57 → 2013-09-24 17:57 A (+6d) | 0.5d → 6h | 0% → 100% | 0d → none |
| 20 | **Gestión de configuración** | 2013-09-18 19:57 → 2013-09-24 17:57 A (+6d) | 2013-09-24 19:57 → 2013-09-26 19:57 A (+2d) | 1d → 1.25d | 0% → 100% | 0d → none |
| 21 | Preparación del ambiente de versionado | 2013-09-18 19:57 → 2013-09-24 17:57 A (+6d) | 2013-09-24 19:57 → 2013-09-26 19:57 A (+2d) | 8h → 10h | 0% → 100% | 0d → none |
| 22 | **Ambiente** | 2013-09-24 19:57 → 2013-09-26 19:57 A (+2d) | 2013-09-25 19:57 → 2013-10-01 19:57 A (+6d) |  | 0% → 100% | 0d → none |
| 23 | Identificación y evaluación de herramientas | 2013-09-24 19:57 → 2013-09-26 19:57 A (+2d) | 2013-09-25 19:57 → 2013-10-01 19:57 A (+6d) |  | 0% → 100% | 0d → none |
| 24 | Objetivos del ciclo de vida | 2013-09-25 19:57 → 2013-10-01 19:57 A (+6d) | 2013-09-25 19:57 → 2013-10-01 19:57 A (+6d) |  | 0% → 100% | 0d → none |
| 25 | **ELABORACIÓN** | 2013-09-25 19:57 → 2013-10-01 19:57 A (+6d) | 2014-03-19 19:57 → 2014-04-01 20:27 (+13d) | 19d → 20.56d | 0% → 64% |  |
| 26 | **Iteración E1** | 2013-09-25 19:57 → 2013-10-01 19:57 A (+6d) | 2013-11-05 20:57 → 2013-11-14 17:27 A (+9d) | 7.12d → 8.19d | 0% → 100% | 0d → none |
| 27 | **Modelo de Negocio** | 2013-09-25 19:57 → 2013-10-01 19:57 A (+6d) | 2013-10-01 18:57 → 2013-10-03 19:57 A (+2d) | 0.88d → 1d | 0% → 100% | 0d → none |
| 28 | Entendimiento del Modelo de Negocio | 2013-09-25 19:57 → 2013-10-01 19:57 A (+6d) | 2013-10-01 18:57 → 2013-10-03 19:57 A (+2d) | 7h → 8h | 0% → 100% | 0d → none |
| 29 | **Requerimientos** | 2013-10-01 18:57 → 2013-10-03 19:57 A (+2d) | 2013-10-08 18:57 → 2013-10-15 19:57 A (+7d) | 1.5d → 2d | 0% → 100% | 0d → none |
| 30 | Definicón de nuevos requerimientos | 2013-10-01 18:57 → 2013-10-03 19:57 A (+2d) | 2013-10-01 20:57 → 2013-10-08 18:57 A (+7d) | 2h → 3h | 0% → 100% | 0d → none |
| 31 | Documentación de requerimientos según estandar | 2013-10-01 20:57 → 2013-10-08 18:57 A (+7d) | 2013-10-03 17:57 → 2013-10-10 18:57 A (+7d) | 5h → 8h | 0% → 100% | 0d → none |
| 32 | Jerarquización de requerimientos | 2013-10-03 17:57 → 2013-10-10 18:57 A (+7d) | 2013-10-08 18:57 → 2013-10-15 19:57 A (+7d) |  | 0% → 100% | 0d → none |
| 33 | **Análisis/Diseño** | 2013-10-08 18:57 → 2013-10-15 19:57 A (+7d) | 2013-10-15 18:57 → 2013-10-30 18:27 A (+15d) | 1.5d → 1.81d | 0% → 100% | 0d → none |
| 34 | Refinación de Modelo de Casos de Usos | 2013-10-08 18:57 → 2013-10-15 19:57 A (+7d) | 2013-10-08 20:57 → 2013-10-16 18:57 A (+8d) | 2h → 3h | 0% → 100% | 0d → none |
| 35 | Definición preliminar de Diagrama de clases | 2013-10-08 20:57 → 2013-10-16 18:57 A (+8d) | 2013-10-15 18:57 → 2013-10-30 18:27 A (+15d) | 10h → 11.5h | 0% → 100% | 0d → none |
| 36 | **Implementación** | 2013-10-15 18:57 → 2013-10-30 18:27 A (+15d) | 2013-10-31 18:57 → 2013-11-12 20:27 A (+12d) | 2.5d → 2.75d | 0% → 100% | 0d → none |
| 37 | Desarrollo prototipos independientes de prueba | 2013-10-15 18:57 → 2013-10-30 18:27 A (+15d) | 2013-10-31 18:57 → 2013-11-12 20:27 A (+12d) | 20h → 22h | 0% → 100% | 0d → none |
| 38 | **Gestión del Proyecto** | 2013-10-31 18:57 → 2013-11-12 20:27 A (+12d) | 2013-10-31 20:57 → 2013-11-13 18:57 A (+13d) | 0.25d → 0.31d | 0% → 100% | 0d → none |
| 39 | Actualización y priorización de Riesgos | 2013-10-31 18:57 → 2013-11-12 20:27 A (+12d) | 2013-10-31 19:57 → 2013-11-12 20:57 A (+12d) | 1h → 0.5h | 0% → 100% | 0d → none |
| 40 | Refinación del Plan de Proyecto | 2013-10-31 19:57 → 2013-11-12 20:57 A (+12d) | 2013-10-31 20:57 → 2013-11-13 18:57 A (+13d) | 1h → 2h | 0% → 100% | 0d → none |
| 41 | **Gestión de Configuración** | 2013-10-31 20:57 → 2013-11-13 18:57 A (+13d) | 2013-11-05 17:57 → 2013-11-13 19:27 A (+8d) | 0.12d → 0.06d | 0% → 100% | 0d → none |
| 42 | Revisión de versionado de documentos modificados | 2013-10-31 20:57 → 2013-11-13 18:57 A (+13d) | 2013-11-05 17:57 → 2013-11-13 19:27 A (+8d) | 1h → 0.5h | 0% → 100% | 0d → none |
| 43 | **Ambiente** | 2013-11-05 17:57 → 2013-11-13 19:27 A (+8d) | 2013-11-05 20:57 → 2013-11-14 17:27 A (+9d) | 0.38d → 0.25d | 0% → 100% | 0d → none |
| 44 | Identificación de Tecnología | 2013-11-05 17:57 → 2013-11-13 19:27 A (+8d) | 2013-11-05 20:57 → 2013-11-14 17:27 A (+9d) | 3h → 2h | 0% → 100% | 0d → none |
| 45 | **Iteración E2** | 2013-11-05 20:57 → 2013-11-14 17:27 A (+9d) | 2014-02-04 19:57 → 2014-03-11 20:27 (+35d) | 7.38d → 7.88d | 0% → 62% |  |
| 46 | **Modelo de Negocio** | 2013-11-05 20:57 → 2013-11-14 17:27 A (+9d) | 2013-11-07 17:57 → 2013-11-19 18:27 A (+12d) |  | 0% → 100% | 0d → none |
| 47 | Refinación del Modelo de Negocio | 2013-11-05 20:57 → 2013-11-14 17:27 A (+9d) | 2013-11-07 17:57 → 2013-11-19 18:27 A (+12d) |  | 0% → 100% | 0d → none |
| 48 | **Requerimientos** | 2013-11-07 17:57 → 2013-11-19 18:27 A (+12d) | 2013-11-12 17:57 → 2013-11-20 17:27 A (+8d) | 0.5d → 0.38d | 0% → 100% | 0d → none |
| 49 | Validación de requerimientos | 2013-11-07 17:57 → 2013-11-19 18:27 A (+12d) | 2013-11-07 20:57 → 2013-11-20 17:27 A (+13d) |  | 0% → 100% | 0.12d → none |
| 50 | Mapeo de Requerimientos a Casos de Uso | 2013-11-07 17:57 → 2013-11-19 18:27 A (+12d) | 2013-11-12 17:57 → 2013-11-19 20:27 A (+7d) | 4h → 2h | 0% → 100% | 0d → none |
| 51 | **Análisis/Diseño** | 2013-11-12 17:57 → 2013-11-20 17:27 A (+8d) | 2013-12-10 17:57 → 2014-02-06 18:27 (+58d) | 4.5d → 5.12d | 0% → 76% |  |
| 52 | Definición Inicial de diagrama de Clases | 2013-11-12 17:57 → 2013-11-20 17:27 A (+8d) | 2013-11-14 19:57 → 2013-11-26 20:27 A (+12d) | 10h → 11h | 0% → 100% | 0d → none |
| 53 | Definición inicial del Modelo de Datos | 2013-11-14 19:57 → 2013-11-26 20:27 A (+12d) | 2013-11-20 19:57 → 2013-12-10 17:27 A (+20d) | 8h → 9h | 0% → 100% | 0d → none |
| 54 | Definición inicial de Diagrama de Actividades | 2013-11-20 19:57 → 2013-12-10 17:27 A (+20d) | 2013-11-26 19:57 → 2013-12-12 20:27 A (+16d) | 8h → 11h | 0% → 100% | 0d → none |
| 55 | Definición inicial de Diagramas de Secuencia | 2013-11-26 19:57 → 2013-12-12 20:27 (+16d) | 2013-12-10 17:57 → 2014-02-06 18:27 (+58d) |  |  |  |
| 56 | **Implementación** | 2013-12-10 17:57 → 2014-02-06 18:27 (+58d) | 2013-12-11 19:57 → 2014-02-26 20:27 (+77d) |  |  |  |
| 57 | Mejoramientos de prototipos | 2013-12-10 17:57 → 2014-02-06 18:27 (+58d) | 2013-12-11 19:57 → 2014-02-26 20:27 (+77d) |  |  |  |
| 58 | **Gestión del Proyecto** | 2013-12-11 19:57 → 2014-02-26 20:27 (+77d) | 2013-12-12 17:57 → 2014-02-27 18:27 (+77d) |  |  |  |
| 59 | Validación del Plan de proyecto | 2013-12-11 19:57 → 2014-02-26 20:27 (+77d) | 2013-12-12 17:57 → 2014-02-27 18:27 (+77d) |  |  |  |
| 60 | **Gestión de Configuración** | 2013-12-12 17:57 → 2014-02-27 18:27 (+77d) | 2013-12-12 18:57 → 2014-02-27 19:27 (+77d) |  |  |  |
| 61 | Versionado de los prototipos | 2013-12-12 17:57 → 2014-02-27 18:27 (+77d) | 2013-12-12 18:57 → 2014-02-27 19:27 (+77d) |  |  |  |
| 62 | Revisión de versionado de documentos modificados | 2013-12-12 17:57 → 2014-02-27 18:27 (+77d) | 2013-12-12 18:57 → 2014-02-27 19:27 (+77d) |  |  |  |
| 63 | **Ambiente** | 2013-12-12 18:57 → 2014-02-27 19:27 (+77d) | 2014-02-04 19:57 → 2014-03-11 20:27 (+35d) |  |  |  |
| 64 | Preparación del ambiente de desarrollo | 2013-12-12 18:57 → 2014-02-27 19:27 (+77d) | 2014-02-04 19:57 → 2014-03-11 20:27 (+35d) |  |  |  |
| 65 | **Iteración E3** | 2014-02-04 19:57 → 2014-03-11 20:27 (+35d) | 2014-03-19 19:57 → 2014-04-01 20:27 (+13d) |  |  |  |
| 66 | **Requerimientos** | 2014-02-04 19:57 → 2014-03-11 20:27 (+35d) | 2014-02-05 18:57 → 2014-03-12 19:27 (+35d) |  |  |  |
| 67 | Validacion de Mapeo de Requerimientos a Casos de Uso | 2014-02-04 19:57 → 2014-03-11 20:27 (+35d) | 2014-02-05 18:57 → 2014-03-12 19:27 (+35d) |  |  |  |
| 68 | **Análisis/Diseño** | 2014-02-05 18:57 → 2014-03-12 19:27 (+35d) | 2014-03-12 20:57 → 2014-03-26 17:27 (+14d) |  |  |  |
| 69 | Refinación de Diagrama de Casos de Uso | 2014-02-05 18:57 → 2014-03-12 19:27 (+35d) | 2014-02-06 20:57 → 2014-03-18 17:27 (+40d) |  |  |  |
| 70 | Refinación de Diagrama de Clases | 2014-02-06 20:57 → 2014-03-18 17:27 (+40d) | 2014-02-27 18:57 → 2014-03-19 19:27 (+20d) |  |  |  |
| 71 | Refinación del Modelo de Datos | 2014-02-27 18:57 → 2014-03-19 19:27 (+20d) | 2014-03-11 18:57 → 2014-03-20 19:27 (+9d) |  |  |  |
| 72 | Descripción de casos de uso mas importantes | 2014-03-11 18:57 → 2014-03-20 19:27 (+9d) | 2014-03-12 20:57 → 2014-03-26 17:27 (+14d) |  |  |  |
| 73 | **Implementación** | 2014-03-12 20:57 → 2014-03-26 17:27 (+14d) | 2014-03-18 20:57 → 2014-04-01 17:27 (+14d) |  |  |  |
| 74 | Definición de interfaces de comunicación entre plataformas | 2014-03-12 20:57 → 2014-03-26 17:27 (+14d) | 2014-03-18 20:57 → 2014-04-01 17:27 (+14d) |  |  |  |
| 75 | **Gestión del Proyecto** | 2014-03-18 20:57 → 2014-04-01 17:27 (+14d) | 2014-03-19 18:57 → 2014-04-01 19:27 (+13d) |  |  |  |
| 76 | Actualización de planes de prevención y contigencia para nuevos Riesgos | 2014-03-18 20:57 → 2014-04-01 17:27 (+14d) | 2014-03-19 18:57 → 2014-04-01 19:27 (+13d) |  |  |  |
| 77 | **Gestión de Configuración** | 2014-03-19 18:57 → 2014-04-01 19:27 (+13d) | 2014-03-19 19:57 → 2014-04-01 20:27 (+13d) |  |  |  |
| 78 | Revisión de versionado de documentos modificados | 2014-03-19 18:57 → 2014-04-01 19:27 (+13d) | 2014-03-19 19:57 → 2014-04-01 20:27 (+13d) |  |  |  |
| 79 | Arquitectura del ciclo de vida | 2014-03-19 19:57 → 2014-04-01 20:27 (+13d) | 2014-03-19 19:57 → 2014-04-01 20:27 (+13d) |  |  |  |
| 80 | **CONSTRUCCIÓN** | 2014-03-19 19:57 → 2014-04-01 20:27 (+13d) | 2014-08-14 17:57 → 2014-08-27 18:27 (+13d) |  |  |  |
| 81 | **Iteración C1** | 2014-03-19 19:57 → 2014-04-01 20:27 (+13d) | 2014-04-03 19:57 → 2014-04-16 20:27 (+13d) |  |  |  |
| 82 | **Análisis/Diseño** | 2014-03-19 19:57 → 2014-04-01 20:27 (+13d) | 2014-03-25 19:57 → 2014-04-03 20:27 (+9d) |  |  |  |

| ID | Task | Start | Finish |
| --- | --- | --- | --- |
| 83 | Refinación de Diagramas de Actividad | 2014-03-19 19:57 → 2014-04-01 20:27 (+13d) | 2014-03-20 19:57 → 2014-04-02 20:27 (+13d) |
| 84 | Refinación de Diagramas de Secuencia | 2014-03-20 19:57 → 2014-04-02 20:27 (+13d) | 2014-03-25 19:57 → 2014-04-03 20:27 (+9d) |
| 85 | **Implementación** | 2014-03-25 19:57 → 2014-04-03 20:27 (+9d) | 2014-04-02 18:57 → 2014-04-15 19:27 (+13d) |
| 86 | Construcción de Base de Datos | 2014-03-25 19:57 → 2014-04-03 20:27 (+9d) | 2014-03-27 19:57 → 2014-04-09 20:27 (+13d) |
| 87 | Definición de Interfaz de Usuario | 2014-03-27 19:57 → 2014-04-09 20:27 (+13d) | 2014-04-02 18:57 → 2014-04-15 19:27 (+13d) |
| 88 | **Gestión del Proyecto** | 2014-04-02 18:57 → 2014-04-15 19:27 (+13d) | 2014-04-03 18:57 → 2014-04-16 19:27 (+13d) |
| 89 | Actualización de Riesgos | 2014-04-02 18:57 → 2014-04-15 19:27 (+13d) | 2014-04-02 19:57 → 2014-04-15 20:27 (+13d) |
| 90 | Revisión de planificacion (posible replanificación) | 2014-04-02 19:57 → 2014-04-15 20:27 (+13d) | 2014-04-03 18:57 → 2014-04-16 19:27 (+13d) |
| 91 | **Gestión de Configuración** | 2014-04-03 18:57 → 2014-04-16 19:27 (+13d) | 2014-04-03 19:57 → 2014-04-16 20:27 (+13d) |
| 92 | Versionado de prototipos | 2014-04-03 18:57 → 2014-04-16 19:27 (+13d) | 2014-04-03 19:57 → 2014-04-16 20:27 (+13d) |
| 93 | Revisión de versionado de documentos modificados | 2014-04-03 18:57 → 2014-04-16 19:27 (+13d) | 2014-04-03 19:57 → 2014-04-16 20:27 (+13d) |
| 94 | **Iteración C2** | 2014-04-03 19:57 → 2014-04-16 20:27 (+13d) | 2014-04-29 19:57 → 2014-05-08 20:27 (+9d) |
| 95 | **Análisis/Diseño** | 2014-04-03 19:57 → 2014-04-16 20:27 (+13d) | 2014-04-10 20:57 → 2014-04-24 17:27 (+14d) |
| 96 | Definición inicial del Modelo de componentes | 2014-04-03 19:57 → 2014-04-16 20:27 (+13d) | 2014-04-09 20:57 → 2014-04-23 17:27 (+14d) |
| 97 | Refinación de Diagramas de clases (agregado de operaciones) | 2014-04-09 20:57 → 2014-04-23 17:27 (+14d) | 2014-04-10 20:57 → 2014-04-24 17:27 (+14d) |
| 98 | **Implementación** | 2014-04-10 20:57 → 2014-04-24 17:27 (+14d) | 2014-04-23 19:57 → 2014-05-06 20:27 (+13d) |
| 99 | Codificación de Interfaz de usuario (FrontEnd) | 2014-04-10 20:57 → 2014-04-24 17:27 (+14d) | 2014-04-23 18:57 → 2014-05-06 19:27 (+13d) |
| 100 | Codificación de Interfaz de usuario (BackEnd) | 2014-04-10 20:57 → 2014-04-24 17:27 (+14d) | 2014-04-23 19:57 → 2014-05-06 20:27 (+13d) |
| 101 | Codificación de Interfaz de usuario (Android) | 2014-04-10 20:57 → 2014-04-24 17:27 (+14d) | 2014-04-23 19:57 → 2014-05-06 20:27 (+13d) |
| 102 | **Gestión del Proyecto** | 2014-04-23 19:57 → 2014-05-06 20:27 (+13d) | 2014-04-29 17:57 → 2014-05-08 18:27 (+9d) |
| 103 | Actualización de Riesgos | 2014-04-23 19:57 → 2014-05-06 20:27 (+13d) | 2014-04-24 18:57 → 2014-05-07 19:27 (+13d) |
| 104 | Revisión de planificacion (posible replanificación) | 2014-04-24 18:57 → 2014-05-07 19:27 (+13d) | 2014-04-29 17:57 → 2014-05-08 18:27 (+9d) |
| 105 | **Gestión de Configuración** | 2014-04-29 17:57 → 2014-05-08 18:27 (+9d) | 2014-04-29 19:57 → 2014-05-08 20:27 (+9d) |
| 106 | Versionado de interfaz de usuario | 2014-04-29 17:57 → 2014-05-08 18:27 (+9d) | 2014-04-29 18:57 → 2014-05-08 19:27 (+9d) |
| 107 | Revisión de versionado de documentos modificados | 2014-04-29 18:57 → 2014-05-08 19:27 (+9d) | 2014-04-29 19:57 → 2014-05-08 20:27 (+9d) |
| 108 | **Iteración C3** | 2014-04-29 19:57 → 2014-05-08 20:27 (+9d) | 2014-05-14 19:57 → 2014-05-27 20:27 (+13d) |
| 109 | **Análisis/Diseño** | 2014-04-29 19:57 → 2014-05-08 20:27 (+9d) | 2014-04-30 18:57 → 2014-05-13 19:27 (+13d) |
| 110 | Refinación del Modelo de componentes | 2014-04-29 19:57 → 2014-05-08 20:27 (+9d) | 2014-04-30 18:57 → 2014-05-13 19:27 (+13d) |
| 111 | **Implementación** | 2014-04-30 18:57 → 2014-05-13 19:27 (+13d) | 2014-05-13 19:57 → 2014-05-22 20:27 (+9d) |
| 112 | Codificacion de logeo de usuario (FrontEnd) | 2014-04-30 18:57 → 2014-05-13 19:27 (+13d) | 2014-05-13 19:57 → 2014-05-22 20:27 (+9d) |
| 113 | Codificación de seguridad [Roles y Usuario] (BackEnd) | 2014-04-30 18:57 → 2014-05-13 19:27 (+13d) | 2014-05-13 18:57 → 2014-05-22 19:27 (+9d) |
| 114 | Codificación de Local Storage (Android) | 2014-04-30 18:57 → 2014-05-13 19:27 (+13d) | 2014-05-13 18:57 → 2014-05-22 19:27 (+9d) |
| 115 | **Gestión del Proyecto** | 2014-05-13 19:57 → 2014-05-22 20:27 (+9d) | 2014-05-14 18:57 → 2014-05-27 19:27 (+13d) |
| 116 | Actualización de Riesgos | 2014-05-13 19:57 → 2014-05-22 20:27 (+9d) | 2014-05-14 18:57 → 2014-05-27 19:27 (+13d) |
| 117 | Revisión de planificacion (posible replanificación) | 2014-05-13 19:57 → 2014-05-22 20:27 (+9d) | 2014-05-14 18:57 → 2014-05-27 19:27 (+13d) |
| 118 | **Gestión de Configuración** | 2014-05-14 18:57 → 2014-05-27 19:27 (+13d) | 2014-05-14 19:57 → 2014-05-27 20:27 (+13d) |
| 119 | Versionado de todos los proyectos | 2014-05-14 18:57 → 2014-05-27 19:27 (+13d) | 2014-05-14 19:57 → 2014-05-27 20:27 (+13d) |
| 120 | Revisión de versionado de documentos modificados | 2014-05-14 18:57 → 2014-05-27 19:27 (+13d) | 2014-05-14 19:57 → 2014-05-27 20:27 (+13d) |
| 121 | **Iteración C4** | 2014-05-14 19:57 → 2014-05-27 20:27 (+13d) | 2014-06-04 18:57 → 2014-06-17 19:27 (+13d) |
| 122 | **Análisis/Diseño** | 2014-05-14 19:57 → 2014-05-27 20:27 (+13d) | 2014-05-15 19:57 → 2014-05-28 20:27 (+13d) |
| 123 | Refinación del Modelo de Datos | 2014-05-14 19:57 → 2014-05-27 20:27 (+13d) | 2014-05-15 19:57 → 2014-05-28 20:27 (+13d) |
| 124 | **Implementación** | 2014-05-15 19:57 → 2014-05-28 20:27 (+13d) | 2014-06-03 19:57 → 2014-06-12 20:27 (+9d) |
| 125 | Codificación de Gestión de reservas online (FrontEnd) | 2014-05-15 19:57 → 2014-05-28 20:27 (+13d) | 2014-06-03 19:57 → 2014-06-12 20:27 (+9d) |
| 126 | Codificación de ABM principales (BackEnd) | 2014-05-15 19:57 → 2014-05-28 20:27 (+13d) | 2014-06-03 17:57 → 2014-06-12 18:27 (+9d) |
| 127 | Codificación de ABM principales (Android) | 2014-05-15 19:57 → 2014-05-28 20:27 (+13d) | 2014-06-03 19:57 → 2014-06-12 20:27 (+9d) |
| 128 | **Gestión del Proyecto** | 2014-06-03 19:57 → 2014-06-12 20:27 (+9d) | 2014-06-04 17:57 → 2014-06-17 18:27 (+13d) |
| 129 | Actualización de Riesgos | 2014-06-03 19:57 → 2014-06-12 20:27 (+9d) | 2014-06-04 17:57 → 2014-06-17 18:27 (+13d) |
| 130 | Revisión de planificacion (posible replanificación) | 2014-06-03 19:57 → 2014-06-12 20:27 (+9d) | 2014-06-03 20:57 → 2014-06-17 17:27 (+14d) |
| 131 | **Gestión de Configuración** | 2014-06-04 17:57 → 2014-06-17 18:27 (+13d) | 2014-06-04 18:57 → 2014-06-17 19:27 (+13d) |
| 132 | Versionado de todos los proyectos | 2014-06-04 17:57 → 2014-06-17 18:27 (+13d) | 2014-06-04 18:57 → 2014-06-17 19:27 (+13d) |
| 133 | Revisión de versionado de documentos modificados | 2014-06-04 17:57 → 2014-06-17 18:27 (+13d) | 2014-06-04 18:57 → 2014-06-17 19:27 (+13d) |
| 134 | **Iteración C5** | 2014-06-04 18:57 → 2014-06-17 19:27 (+13d) | 2014-07-10 18:57 → 2014-07-23 19:27 (+13d) |
| 135 | **Análisis/Diseño** | 2014-06-04 18:57 → 2014-06-17 19:27 (+13d) | 2014-06-05 20:57 → 2014-06-19 17:27 (+14d) |
| 136 | Revisión de Diagramas y Modelos de Análisis/Diseño | 2014-06-04 18:57 → 2014-06-17 19:27 (+13d) | 2014-06-05 20:57 → 2014-06-19 17:27 (+14d) |
| 137 | **Implementación** | 2014-06-05 20:57 → 2014-06-19 17:27 (+14d) | 2014-07-03 17:57 → 2014-07-16 18:27 (+13d) |
| 138 | Codificación de Calculos de tiempos de espera (FrontEnd) | 2014-06-05 20:57 → 2014-06-19 17:27 (+14d) | 2014-07-02 19:57 → 2014-07-15 20:27 (+13d) |
| 139 | Codificación de Funciones básicas (BackEnd) | 2014-06-05 20:57 → 2014-06-19 17:27 (+14d) | 2014-07-02 19:57 → 2014-07-15 20:27 (+13d) |
| 140 | Codificación de visualizador de ordenes (Android) | 2014-06-05 20:57 → 2014-06-19 17:27 (+14d) | 2014-07-03 17:57 → 2014-07-16 18:27 (+13d) |
| 141 | **Pruebas** | 2014-07-03 17:57 → 2014-07-16 18:27 (+13d) | 2014-07-09 19:57 → 2014-07-22 20:27 (+13d) |
| 142 | Pruebas de Funcionalidad (para las 3 aplicaciones) | 2014-07-03 17:57 → 2014-07-16 18:27 (+13d) | 2014-07-09 19:57 → 2014-07-22 20:27 (+13d) |
| 143 | **Gestión del Proyecto** | 2014-07-09 19:57 → 2014-07-22 20:27 (+13d) | 2014-07-10 17:57 → 2014-07-23 18:27 (+13d) |
| 144 | Actualización de Riesgos | 2014-07-09 19:57 → 2014-07-22 20:27 (+13d) | 2014-07-10 17:57 → 2014-07-23 18:27 (+13d) |
| 145 | Revisión de planificacion (posible replanificación) | 2014-07-09 19:57 → 2014-07-22 20:27 (+13d) | 2014-07-09 20:57 → 2014-07-23 17:27 (+14d) |
| 146 | **Gestión de Configuración** | 2014-07-10 17:57 → 2014-07-23 18:27 (+13d) | 2014-07-10 18:57 → 2014-07-23 19:27 (+13d) |
| 147 | Versionado de todos los proyectos | 2014-07-10 17:57 → 2014-07-23 18:27 (+13d) | 2014-07-10 18:57 → 2014-07-23 19:27 (+13d) |
| 148 | Revisión de versionado de documentos modificados | 2014-07-10 17:57 → 2014-07-23 18:27 (+13d) | 2014-07-10 18:57 → 2014-07-23 19:27 (+13d) |
| 149 | **Iteración C6** | 2014-07-10 18:57 → 2014-07-23 19:27 (+13d) | 2014-08-14 17:57 → 2014-08-27 18:27 (+13d) |
| 150 | **Análisis/Diseño** | 2014-07-10 18:57 → 2014-07-23 19:27 (+13d) | 2014-07-16 18:57 → 2014-07-29 19:27 (+13d) |
| 151 | Revisión de Diagramas y Modelos de Análisis/Diseño | 2014-07-10 18:57 → 2014-07-23 19:27 (+13d) | 2014-07-16 18:57 → 2014-07-29 19:27 (+13d) |
| 152 | **Implementación** | 2014-07-16 18:57 → 2014-07-29 19:27 (+13d) | 2014-08-06 20:57 → 2014-08-20 17:27 (+14d) |

| ID | Task | Start | Finish | Complete | Other |
| --- | --- | --- | --- | --- | --- |
| 153 | Codificación de Calculos de tiempos de espera (FrontEnd) | 2014-07-16 18:57 → 2014-07-29 19:27 (+13d) | 2014-08-06 20:57 → 2014-08-20 17:27 (+14d) |  |  |
| 154 | Codificación de visualizador de Ordenes (BackEnd) | 2014-07-16 18:57 → 2014-07-29 19:27 (+13d) | 2014-08-06 18:57 → 2014-08-19 19:27 (+13d) |  |  |
| 155 | Codificación de personalización gráfica (Android) | 2014-07-16 18:57 → 2014-07-29 19:27 (+13d) | 2014-08-06 20:57 → 2014-08-20 17:27 (+14d) |  |  |
| 156 | **Pruebas** | 2014-08-06 20:57 → 2014-08-20 17:27 (+14d) | 2014-08-13 18:57 → 2014-08-26 19:27 (+13d) |  |  |
| 157 | Pruebas de comunicación de interfaces y pruebas de funcionalidad | 2014-08-06 20:57 → 2014-08-20 17:27 (+14d) | 2014-08-13 18:57 → 2014-08-26 19:27 (+13d) |  |  |
| 158 | **Gestión del Proyecto** | 2014-08-13 18:57 → 2014-08-26 19:27 (+13d) | 2014-08-13 19:57 → 2014-08-26 20:27 (+13d) |  |  |
| 159 | Actualización de Riesgos | 2014-08-13 18:57 → 2014-08-26 19:27 (+13d) | 2014-08-13 19:57 → 2014-08-26 20:27 (+13d) |  |  |
| 160 | Revisión de planificacion (posible replanificación) | 2014-08-13 18:57 → 2014-08-26 19:27 (+13d) | 2014-08-13 19:57 → 2014-08-26 20:27 (+13d) |  |  |
| 161 | **Gestión de Configuración** | 2014-08-13 19:57 → 2014-08-26 20:27 (+13d) | 2014-08-14 17:57 → 2014-08-27 18:27 (+13d) |  |  |
| 162 | Versionado de todos los proyectos | 2014-08-13 19:57 → 2014-08-26 20:27 (+13d) | 2014-08-14 17:57 → 2014-08-27 18:27 (+13d) |  |  |
| 163 | Revisión de versionado de documentos modificados | 2014-08-13 19:57 → 2014-08-26 20:27 (+13d) | 2014-08-14 17:57 → 2014-08-27 18:27 (+13d) |  |  |
| 164 | Capacidad Operacional Inicial | 2014-08-14 17:57 → 2014-08-27 18:27 (+13d) | 2014-08-14 17:57 → 2014-08-27 18:27 (+13d) |  |  |
| 165 | **TRANSICIÓN** | 2014-08-14 17:57 → 2014-08-27 18:27 (+13d) | 2014-09-18 20:57 → 2014-10-02 17:27 (+14d) |  |  |
| 166 | **Iteración T1** | 2014-08-14 17:57 → 2014-08-27 18:27 (+13d) | 2014-09-18 20:57 → 2014-10-02 17:27 (+14d) |  |  |
| 167 | **Implementación** | 2014-08-14 17:57 → 2014-08-27 18:27 (+13d) | 2014-08-27 17:57 → 2014-09-09 18:27 (+13d) |  |  |
| 168 | Elaboracion de documentación para usuarios y videos tutoriales | 2014-08-14 17:57 → 2014-08-27 18:27 (+13d) | 2014-08-27 17:57 → 2014-09-09 18:27 (+13d) |  |  |
| 169 | **Despliegue** | 2014-08-27 17:57 → 2014-09-09 18:27 (+13d) | 2014-09-10 17:57 → 2014-09-23 18:27 (+13d) |  |  |
| 170 | Modelo de despliegue | 2014-08-27 17:57 → 2014-09-09 18:27 (+13d) | 2014-09-02 19:57 → 2014-09-11 20:27 (+9d) |  |  |
| 171 | Integración y puesta a punto del sistema | 2014-09-02 19:57 → 2014-09-11 20:27 (+9d) | 2014-09-10 17:57 → 2014-09-23 18:27 (+13d) |  |  |
| 172 | **Gestión del Proyecto** | 2014-09-10 17:57 → 2014-09-23 18:27 (+13d) | 2014-09-18 18:57 → 2014-10-01 19:27 (+13d) |  |  |
| 173 | Actualización de Riesgos | 2014-09-10 17:57 → 2014-09-23 18:27 (+13d) | 2014-09-10 18:57 → 2014-09-23 19:27 (+13d) |  |  |
| 174 | Revisión de planificacion (posible replanificación) | 2014-09-10 18:57 → 2014-09-23 19:27 (+13d) | 2014-09-10 19:57 → 2014-09-23 20:27 (+13d) |  |  |
| 175 | Análisis de resultados del proyecto | 2014-09-10 19:57 → 2014-09-23 20:27 (+13d) | 2014-09-18 18:57 → 2014-10-01 19:27 (+13d) |  |  |
| 176 | **Gestión de Configuración** | 2014-09-18 18:57 → 2014-10-01 19:27 (+13d) | 2014-09-18 20:57 → 2014-10-02 17:27 (+14d) |  |  |
| 177 | Versionado de todos los proyectos | 2014-09-18 18:57 → 2014-10-01 19:27 (+13d) | 2014-09-18 20:57 → 2014-10-02 17:27 (+14d) |  |  |
| 178 | Revisión de versionado de documentos modificados | 2014-09-18 18:57 → 2014-10-01 19:27 (+13d) | 2014-09-18 20:57 → 2014-10-02 17:27 (+14d) |  |  |
| 179 | Lanzamiento de producto | 2014-09-18 20:57 → 2014-10-02 17:27 (+14d) | 2014-09-18 20:57 → 2014-10-02 17:27 (+14d) |  |  |
| 180 | Fin de Proyecto | 2014-09-18 20:57 → 2014-10-02 17:27 (+14d) | 2014-09-18 20:57 → 2014-10-02 17:27 (+14d) |  |  |
| 181 | **Informe de avance mensual** |  |  | 8% → 31% |  |
| 183 | Informe de avance mensual 2 | 2013-09-25 09:00 A | 2013-09-25 13:00 A | 0% → 100% |  |
| 184 | Informe de avance mensual 3 | 2013-10-30 09:00 A | 2013-10-30 13:00 A | 0% → 100% |  |
| 185 | Informe de avance mensual 4 | 2013-11-27 09:00 → 2013-12-10 09:00 A (+13d) | 2013-11-27 13:00 → 2013-12-10 13:00 A (+13d) | 0% → 100% | constraint start no earlier than 2013-11-27 09:00 → start no earlier than 2013-12-10 09:00 |

## Version 16 (data date 2013-10-02, saved 2014-03-26, file Informe2.mpp)

Note of the change: Informe 4

Last finish 2014-10-02 → 2014-09-24 (-8d). Complete tasks 36 → 15.

Changed:

| ID | Task | Start | Finish | Duration | Complete | Total float |
| --- | --- | --- | --- | --- | --- | --- |
| 1 | **RestApp** |  | 2014-10-02 17:27 → 2014-09-24 20:57 (-8d) | 71.56d → 69.99d | 23% → 10% |  |
| 2 | **INICIO** |  | 2013-10-01 19:57 A → 2013-10-01 19:57 |  | 100% → 96% | none → 0d |
| 3 | **Iteración I1** |  | 2013-10-01 19:57 A → 2013-10-01 19:57 |  | 100% → 96% | none → 0d |
| 22 | **Ambiente** | 2013-09-26 19:57 A → 2013-09-26 19:57 | 2013-10-01 19:57 A → 2013-10-01 19:57 |  | 100% → 0% | none → 0d |
| 23 | Identificación y evaluación de herramientas | 2013-09-26 19:57 A → 2013-09-26 19:57 | 2013-10-01 19:57 A → 2013-10-01 19:57 |  | 100% → 0% | none → 0d |
| 24 | Objetivos del ciclo de vida | 2013-10-01 19:57 A → 2013-10-01 19:57 | 2013-10-01 19:57 A → 2013-10-01 19:57 |  | 100% → 0% | none → 0d |
| 25 | **ELABORACIÓN** | 2013-10-01 19:57 A → 2013-10-01 19:57 | 2014-04-01 20:27 → 2014-03-25 19:57 (-7d) | 20.56d → 19d | 64% → 0% |  |
| 26 | **Iteración E1** | 2013-10-01 19:57 A → 2013-10-01 19:57 | 2013-11-14 17:27 A → 2013-11-07 20:57 (-7d) | 8.19d → 7.12d | 100% → 0% | none → 0d |
| 27 | **Modelo de Negocio** | 2013-10-01 19:57 A → 2013-10-01 19:57 | 2013-10-03 19:57 A → 2013-10-03 18:57 | 1d → 0.88d | 100% → 0% | none → 0d |
| 28 | Entendimiento del Modelo de Negocio | 2013-10-01 19:57 A → 2013-10-01 19:57 | 2013-10-03 19:57 A → 2013-10-03 18:57 | 8h → 7h | 100% → 0% | none → 0d |
| 29 | **Requerimientos** | 2013-10-03 19:57 A → 2013-10-03 18:57 | 2013-10-15 19:57 A → 2013-10-10 18:57 (-5d) | 2d → 1.5d | 100% → 0% | none → 0d |
| 30 | Definicón de nuevos requerimientos | 2013-10-03 19:57 A → 2013-10-03 18:57 | 2013-10-08 18:57 A → 2013-10-03 20:57 (-5d) | 3h → 2h | 100% → 0% | none → 0d |
| 31 | Documentación de requerimientos según estandar | 2013-10-08 18:57 A → 2013-10-03 20:57 (-5d) | 2013-10-10 18:57 A → 2013-10-09 17:57 (-1d) | 8h → 5h | 100% → 0% | none → 0d |
| 32 | Jerarquización de requerimientos | 2013-10-10 18:57 A → 2013-10-09 17:57 (-1d) | 2013-10-15 19:57 A → 2013-10-10 18:57 (-5d) |  | 100% → 0% | none → 0d |
| 33 | **Análisis/Diseño** | 2013-10-15 19:57 A → 2013-10-10 18:57 (-5d) | 2013-10-30 18:27 A → 2013-10-17 18:57 (-13d) | 1.81d → 1.5d | 100% → 0% | none → 0d |
| 34 | Refinación de Modelo de Casos de Usos | 2013-10-15 19:57 A → 2013-10-10 18:57 (-5d) | 2013-10-16 18:57 A → 2013-10-10 20:57 (-6d) | 3h → 2h | 100% → 0% | none → 0d |
| 35 | Definición preliminar de Diagrama de clases | 2013-10-16 18:57 A → 2013-10-10 20:57 (-6d) | 2013-10-30 18:27 A → 2013-10-17 18:57 (-13d) | 11.5h → 10h | 100% → 0% | none → 0d |
| 36 | **Implementación** | 2013-10-30 18:27 A → 2013-10-17 18:57 (-13d) | 2013-11-12 20:27 A → 2013-11-06 18:57 (-6d) | 2.75d → 2.5d | 100% → 0% | none → 0d |
| 37 | Desarrollo prototipos independientes de prueba | 2013-10-30 18:27 A → 2013-10-17 18:57 (-13d) | 2013-11-12 20:27 A → 2013-11-06 18:57 (-6d) | 22h → 20h | 100% → 0% | none → 0d |
| 38 | **Gestión del Proyecto** | 2013-11-12 20:27 A → 2013-11-06 18:57 (-6d) | 2013-11-13 18:57 A → 2013-11-06 20:57 (-7d) | 0.31d → 0.25d | 100% → 0% | none → 0d |
| 39 | Actualización y priorización de Riesgos | 2013-11-12 20:27 A → 2013-11-06 18:57 (-6d) | 2013-11-12 20:57 A → 2013-11-06 19:57 (-6d) | 0.5h → 1h | 100% → 0% | none → 0d |
| 40 | Refinación del Plan de Proyecto | 2013-11-12 20:57 A → 2013-11-06 19:57 (-6d) | 2013-11-13 18:57 A → 2013-11-06 20:57 (-7d) | 2h → 1h | 100% → 0% | none → 0d |
| 41 | **Gestión de Configuración** | 2013-11-13 18:57 A → 2013-11-06 20:57 (-7d) | 2013-11-13 19:27 A → 2013-11-07 17:57 (-6d) | 0.06d → 0.12d | 100% → 0% | none → 0d |
| 42 | Revisión de versionado de documentos modificados | 2013-11-13 18:57 A → 2013-11-06 20:57 (-7d) | 2013-11-13 19:27 A → 2013-11-07 17:57 (-6d) | 0.5h → 1h | 100% → 0% | none → 0d |
| 43 | **Ambiente** | 2013-11-13 19:27 A → 2013-11-07 17:57 (-6d) | 2013-11-14 17:27 A → 2013-11-07 20:57 (-7d) | 0.25d → 0.38d | 100% → 0% | none → 0d |
| 44 | Identificación de Tecnología | 2013-11-13 19:27 A → 2013-11-07 17:57 (-6d) | 2013-11-14 17:27 A → 2013-11-07 20:57 (-7d) | 2h → 3h | 100% → 0% | none → 0d |
| 45 | **Iteración E2** | 2013-11-14 17:27 A → 2013-11-07 20:57 (-7d) | 2014-03-11 20:27 → 2014-02-06 19:57 (-33d) | 7.88d → 7.38d | 62% → 0% |  |
| 46 | **Modelo de Negocio** | 2013-11-14 17:27 A → 2013-11-07 20:57 (-7d) | 2013-11-19 18:27 A → 2013-11-13 17:57 (-6d) |  | 100% → 0% | none → 0d |
| 47 | Refinación del Modelo de Negocio | 2013-11-14 17:27 A → 2013-11-07 20:57 (-7d) | 2013-11-19 18:27 A → 2013-11-13 17:57 (-6d) |  | 100% → 0% | none → 0d |
| 48 | **Requerimientos** | 2013-11-19 18:27 A → 2013-11-13 17:57 (-6d) | 2013-11-20 17:27 A → 2013-11-14 17:57 (-6d) | 0.38d → 0.5d | 100% → 0% | none → 0d |
| 49 | Validación de requerimientos | 2013-11-19 18:27 A → 2013-11-13 17:57 (-6d) | 2013-11-20 17:27 A → 2013-11-13 20:57 (-7d) |  | 100% → 0% | none → 0.12d |
| 50 | Mapeo de Requerimientos a Casos de Uso | 2013-11-19 18:27 A → 2013-11-13 17:57 (-6d) | 2013-11-19 20:27 A → 2013-11-14 17:57 (-5d) | 2h → 4h | 100% → 0% | none → 0d |
| 51 | **Análisis/Diseño** | 2013-11-20 17:27 A → 2013-11-14 17:57 (-6d) | 2014-02-06 18:27 → 2013-12-12 17:57 (-56d) | 5.12d → 4.5d | 76% → 0% |  |
| 52 | Definición Inicial de diagrama de Clases | 2013-11-20 17:27 A → 2013-11-14 17:57 (-6d) | 2013-11-26 20:27 A → 2013-11-20 19:57 (-6d) | 11h → 10h | 100% → 0% | none → 0d |
| 53 | Definición inicial del Modelo de Datos | 2013-11-26 20:27 A → 2013-11-20 19:57 (-6d) | 2013-12-10 17:27 A → 2013-11-26 19:57 (-14d) | 9h → 8h | 100% → 0% | none → 0d |
| 54 | Definición inicial de Diagrama de Actividades | 2013-12-10 17:27 A → 2013-11-26 19:57 (-14d) | 2013-12-12 20:27 A → 2013-11-28 19:57 (-14d) | 11h → 8h | 100% → 0% | none → 0d |
| 55 | Definición inicial de Diagramas de Secuencia | 2013-12-12 20:27 → 2013-11-28 19:57 (-14d) | 2014-02-06 18:27 → 2013-12-12 17:57 (-56d) |  |  |  |
| 56 | **Implementación** | 2014-02-06 18:27 → 2013-12-12 17:57 (-56d) | 2014-02-26 20:27 → 2014-02-04 19:57 (-22d) |  |  |  |
| 57 | Mejoramientos de prototipos | 2014-02-06 18:27 → 2013-12-12 17:57 (-56d) | 2014-02-26 20:27 → 2014-02-04 19:57 (-22d) |  |  |  |
| 58 | **Gestión del Proyecto** | 2014-02-26 20:27 → 2014-02-04 19:57 (-22d) | 2014-02-27 18:27 → 2014-02-05 17:57 (-22d) |  |  |  |
| 59 | Validación del Plan de proyecto | 2014-02-26 20:27 → 2014-02-04 19:57 (-22d) | 2014-02-27 18:27 → 2014-02-05 17:57 (-22d) |  |  |  |
| 60 | **Gestión de Configuración** | 2014-02-27 18:27 → 2014-02-05 17:57 (-22d) | 2014-02-27 19:27 → 2014-02-05 18:57 (-22d) |  |  |  |
| 61 | Versionado de los prototipos | 2014-02-27 18:27 → 2014-02-05 17:57 (-22d) | 2014-02-27 19:27 → 2014-02-05 18:57 (-22d) |  |  |  |
| 62 | Revisión de versionado de documentos modificados | 2014-02-27 18:27 → 2014-02-05 17:57 (-22d) | 2014-02-27 19:27 → 2014-02-05 18:57 (-22d) |  |  |  |
| 63 | **Ambiente** | 2014-02-27 19:27 → 2014-02-05 18:57 (-22d) | 2014-03-11 20:27 → 2014-02-06 19:57 (-33d) |  |  |  |
| 64 | Preparación del ambiente de desarrollo | 2014-02-27 19:27 → 2014-02-05 18:57 (-22d) | 2014-03-11 20:27 → 2014-02-06 19:57 (-33d) |  |  |  |
| 65 | **Iteración E3** | 2014-03-11 20:27 → 2014-02-06 19:57 (-33d) | 2014-04-01 20:27 → 2014-03-25 19:57 (-7d) |  |  |  |
| 66 | **Requerimientos** | 2014-03-11 20:27 → 2014-02-06 19:57 (-33d) | 2014-03-12 19:27 → 2014-02-26 18:57 (-14d) |  |  |  |
| 67 | Validacion de Mapeo de Requerimientos a Casos de Uso | 2014-03-11 20:27 → 2014-02-06 19:57 (-33d) | 2014-03-12 19:27 → 2014-02-26 18:57 (-14d) |  |  |  |
| 68 | **Análisis/Diseño** | 2014-03-12 19:27 → 2014-02-26 18:57 (-14d) | 2014-03-26 17:27 → 2014-03-18 20:57 (-8d) |  |  |  |
| 69 | Refinación de Diagrama de Casos de Uso | 2014-03-12 19:27 → 2014-02-26 18:57 (-14d) | 2014-03-18 17:27 → 2014-02-27 20:57 (-19d) |  |  |  |
| 70 | Refinación de Diagrama de Clases | 2014-03-18 17:27 → 2014-02-27 20:57 (-19d) | 2014-03-19 19:27 → 2014-03-12 18:57 (-7d) |  |  |  |
| 71 | Refinación del Modelo de Datos | 2014-03-19 19:27 → 2014-03-12 18:57 (-7d) | 2014-03-20 19:27 → 2014-03-13 18:57 (-7d) |  |  |  |
| 72 | Descripción de casos de uso mas importantes | 2014-03-20 19:27 → 2014-03-13 18:57 (-7d) | 2014-03-26 17:27 → 2014-03-18 20:57 (-8d) |  |  |  |
| 73 | **Implementación** | 2014-03-26 17:27 → 2014-03-18 20:57 (-8d) | 2014-04-01 17:27 → 2014-03-20 20:57 (-12d) |  |  |  |
| 74 | Definición de interfaces de comunicación entre plataformas | 2014-03-26 17:27 → 2014-03-18 20:57 (-8d) | 2014-04-01 17:27 → 2014-03-20 20:57 (-12d) |  |  |  |
| 75 | **Gestión del Proyecto** | 2014-04-01 17:27 → 2014-03-20 20:57 (-12d) | 2014-04-01 19:27 → 2014-03-25 18:57 (-7d) |  |  |  |
| 76 | Actualización de planes de prevención y contigencia para nuevos Riesgos | 2014-04-01 17:27 → 2014-03-20 20:57 (-12d) | 2014-04-01 19:27 → 2014-03-25 18:57 (-7d) |  |  |  |
| 77 | **Gestión de Configuración** | 2014-04-01 19:27 → 2014-03-25 18:57 (-7d) | 2014-04-01 20:27 → 2014-03-25 19:57 (-7d) |  |  |  |
| 78 | Revisión de versionado de documentos modificados | 2014-04-01 19:27 → 2014-03-25 18:57 (-7d) | 2014-04-01 20:27 → 2014-03-25 19:57 (-7d) |  |  |  |
| 79 | Arquitectura del ciclo de vida | 2014-04-01 20:27 → 2014-03-25 19:57 (-7d) | 2014-04-01 20:27 → 2014-03-25 19:57 (-7d) |  |  |  |
| 80 | **CONSTRUCCIÓN** | 2014-04-01 20:27 → 2014-03-25 19:57 (-7d) | 2014-08-27 18:27 → 2014-08-20 17:57 (-7d) |  |  |  |
| 81 | **Iteración C1** | 2014-04-01 20:27 → 2014-03-25 19:57 (-7d) | 2014-04-16 20:27 → 2014-04-09 19:57 (-7d) |  |  |  |
| 82 | **Análisis/Diseño** | 2014-04-01 20:27 → 2014-03-25 19:57 (-7d) | 2014-04-03 20:27 → 2014-03-27 19:57 (-7d) |  |  |  |
| 83 | Refinación de Diagramas de Actividad | 2014-04-01 20:27 → 2014-03-25 19:57 (-7d) | 2014-04-02 20:27 → 2014-03-26 19:57 (-7d) |  |  |  |
| 84 | Refinación de Diagramas de Secuencia | 2014-04-02 20:27 → 2014-03-26 19:57 (-7d) | 2014-04-03 20:27 → 2014-03-27 19:57 (-7d) |  |  |  |
| 85 | **Implementación** | 2014-04-03 20:27 → 2014-03-27 19:57 (-7d) | 2014-04-15 19:27 → 2014-04-08 18:57 (-7d) |  |  |  |
| 86 | Construcción de Base de Datos | 2014-04-03 20:27 → 2014-03-27 19:57 (-7d) | 2014-04-09 20:27 → 2014-04-02 19:57 (-7d) |  |  |  |
| 87 | Definición de Interfaz de Usuario | 2014-04-09 20:27 → 2014-04-02 19:57 (-7d) | 2014-04-15 19:27 → 2014-04-08 18:57 (-7d) |  |  |  |
| 88 | **Gestión del Proyecto** | 2014-04-15 19:27 → 2014-04-08 18:57 (-7d) | 2014-04-16 19:27 → 2014-04-09 18:57 (-7d) |  |  |  |

| ID | Task | Start | Finish |
| --- | --- | --- | --- |
| 89 | Actualización de Riesgos | 2014-04-15 19:27 → 2014-04-08 18:57 (-7d) | 2014-04-15 20:27 → 2014-04-08 19:57 (-7d) |
| 90 | Revisión de planificacion (posible replanificación) | 2014-04-15 20:27 → 2014-04-08 19:57 (-7d) | 2014-04-16 19:27 → 2014-04-09 18:57 (-7d) |
| 91 | **Gestión de Configuración** | 2014-04-16 19:27 → 2014-04-09 18:57 (-7d) | 2014-04-16 20:27 → 2014-04-09 19:57 (-7d) |
| 92 | Versionado de prototipos | 2014-04-16 19:27 → 2014-04-09 18:57 (-7d) | 2014-04-16 20:27 → 2014-04-09 19:57 (-7d) |
| 93 | Revisión de versionado de documentos modificados | 2014-04-16 19:27 → 2014-04-09 18:57 (-7d) | 2014-04-16 20:27 → 2014-04-09 19:57 (-7d) |
| 94 | **Iteración C2** | 2014-04-16 20:27 → 2014-04-09 19:57 (-7d) | 2014-05-08 20:27 → 2014-05-01 19:57 (-7d) |
| 95 | **Análisis/Diseño** | 2014-04-16 20:27 → 2014-04-09 19:57 (-7d) | 2014-04-24 17:27 → 2014-04-16 20:57 (-8d) |
| 96 | Definición inicial del Modelo de componentes | 2014-04-16 20:27 → 2014-04-09 19:57 (-7d) | 2014-04-23 17:27 → 2014-04-15 20:57 (-8d) |
| 97 | Refinación de Diagramas de clases (agregado de operaciones) | 2014-04-23 17:27 → 2014-04-15 20:57 (-8d) | 2014-04-24 17:27 → 2014-04-16 20:57 (-8d) |
| 98 | **Implementación** | 2014-04-24 17:27 → 2014-04-16 20:57 (-8d) | 2014-05-06 20:27 → 2014-04-29 19:57 (-7d) |
| 99 | Codificación de Interfaz de usuario (FrontEnd) | 2014-04-24 17:27 → 2014-04-16 20:57 (-8d) | 2014-05-06 19:27 → 2014-04-29 18:57 (-7d) |
| 100 | Codificación de Interfaz de usuario (BackEnd) | 2014-04-24 17:27 → 2014-04-16 20:57 (-8d) | 2014-05-06 20:27 → 2014-04-29 19:57 (-7d) |
| 101 | Codificación de Interfaz de usuario (Android) | 2014-04-24 17:27 → 2014-04-16 20:57 (-8d) | 2014-05-06 20:27 → 2014-04-29 19:57 (-7d) |
| 102 | **Gestión del Proyecto** | 2014-05-06 20:27 → 2014-04-29 19:57 (-7d) | 2014-05-08 18:27 → 2014-05-01 17:57 (-7d) |
| 103 | Actualización de Riesgos | 2014-05-06 20:27 → 2014-04-29 19:57 (-7d) | 2014-05-07 19:27 → 2014-04-30 18:57 (-7d) |
| 104 | Revisión de planificacion (posible replanificación) | 2014-05-07 19:27 → 2014-04-30 18:57 (-7d) | 2014-05-08 18:27 → 2014-05-01 17:57 (-7d) |
| 105 | **Gestión de Configuración** | 2014-05-08 18:27 → 2014-05-01 17:57 (-7d) | 2014-05-08 20:27 → 2014-05-01 19:57 (-7d) |
| 106 | Versionado de interfaz de usuario | 2014-05-08 18:27 → 2014-05-01 17:57 (-7d) | 2014-05-08 19:27 → 2014-05-01 18:57 (-7d) |
| 107 | Revisión de versionado de documentos modificados | 2014-05-08 19:27 → 2014-05-01 18:57 (-7d) | 2014-05-08 20:27 → 2014-05-01 19:57 (-7d) |
| 108 | **Iteración C3** | 2014-05-08 20:27 → 2014-05-01 19:57 (-7d) | 2014-05-27 20:27 → 2014-05-20 19:57 (-7d) |
| 109 | **Análisis/Diseño** | 2014-05-08 20:27 → 2014-05-01 19:57 (-7d) | 2014-05-13 19:27 → 2014-05-06 18:57 (-7d) |
| 110 | Refinación del Modelo de componentes | 2014-05-08 20:27 → 2014-05-01 19:57 (-7d) | 2014-05-13 19:27 → 2014-05-06 18:57 (-7d) |
| 111 | **Implementación** | 2014-05-13 19:27 → 2014-05-06 18:57 (-7d) | 2014-05-22 20:27 → 2014-05-15 19:57 (-7d) |
| 112 | Codificacion de logeo de usuario (FrontEnd) | 2014-05-13 19:27 → 2014-05-06 18:57 (-7d) | 2014-05-22 20:27 → 2014-05-15 19:57 (-7d) |
| 113 | Codificación de seguridad [Roles y Usuario] (BackEnd) | 2014-05-13 19:27 → 2014-05-06 18:57 (-7d) | 2014-05-22 19:27 → 2014-05-15 18:57 (-7d) |
| 114 | Codificación de Local Storage (Android) | 2014-05-13 19:27 → 2014-05-06 18:57 (-7d) | 2014-05-22 19:27 → 2014-05-15 18:57 (-7d) |
| 115 | **Gestión del Proyecto** | 2014-05-22 20:27 → 2014-05-15 19:57 (-7d) | 2014-05-27 19:27 → 2014-05-20 18:57 (-7d) |
| 116 | Actualización de Riesgos | 2014-05-22 20:27 → 2014-05-15 19:57 (-7d) | 2014-05-27 19:27 → 2014-05-20 18:57 (-7d) |
| 117 | Revisión de planificacion (posible replanificación) | 2014-05-22 20:27 → 2014-05-15 19:57 (-7d) | 2014-05-27 19:27 → 2014-05-20 18:57 (-7d) |
| 118 | **Gestión de Configuración** | 2014-05-27 19:27 → 2014-05-20 18:57 (-7d) | 2014-05-27 20:27 → 2014-05-20 19:57 (-7d) |
| 119 | Versionado de todos los proyectos | 2014-05-27 19:27 → 2014-05-20 18:57 (-7d) | 2014-05-27 20:27 → 2014-05-20 19:57 (-7d) |
| 120 | Revisión de versionado de documentos modificados | 2014-05-27 19:27 → 2014-05-20 18:57 (-7d) | 2014-05-27 20:27 → 2014-05-20 19:57 (-7d) |
| 121 | **Iteración C4** | 2014-05-27 20:27 → 2014-05-20 19:57 (-7d) | 2014-06-17 19:27 → 2014-06-10 18:57 (-7d) |
| 122 | **Análisis/Diseño** | 2014-05-27 20:27 → 2014-05-20 19:57 (-7d) | 2014-05-28 20:27 → 2014-05-21 19:57 (-7d) |
| 123 | Refinación del Modelo de Datos | 2014-05-27 20:27 → 2014-05-20 19:57 (-7d) | 2014-05-28 20:27 → 2014-05-21 19:57 (-7d) |
| 124 | **Implementación** | 2014-05-28 20:27 → 2014-05-21 19:57 (-7d) | 2014-06-12 20:27 → 2014-06-05 19:57 (-7d) |
| 125 | Codificación de Gestión de reservas online (FrontEnd) | 2014-05-28 20:27 → 2014-05-21 19:57 (-7d) | 2014-06-12 20:27 → 2014-06-05 19:57 (-7d) |
| 126 | Codificación de ABM principales (BackEnd) | 2014-05-28 20:27 → 2014-05-21 19:57 (-7d) | 2014-06-12 18:27 → 2014-06-05 17:57 (-7d) |
| 127 | Codificación de ABM principales (Android) | 2014-05-28 20:27 → 2014-05-21 19:57 (-7d) | 2014-06-12 20:27 → 2014-06-05 19:57 (-7d) |
| 128 | **Gestión del Proyecto** | 2014-06-12 20:27 → 2014-06-05 19:57 (-7d) | 2014-06-17 18:27 → 2014-06-10 17:57 (-7d) |
| 129 | Actualización de Riesgos | 2014-06-12 20:27 → 2014-06-05 19:57 (-7d) | 2014-06-17 18:27 → 2014-06-10 17:57 (-7d) |
| 130 | Revisión de planificacion (posible replanificación) | 2014-06-12 20:27 → 2014-06-05 19:57 (-7d) | 2014-06-17 17:27 → 2014-06-05 20:57 (-12d) |
| 131 | **Gestión de Configuración** | 2014-06-17 18:27 → 2014-06-10 17:57 (-7d) | 2014-06-17 19:27 → 2014-06-10 18:57 (-7d) |
| 132 | Versionado de todos los proyectos | 2014-06-17 18:27 → 2014-06-10 17:57 (-7d) | 2014-06-17 19:27 → 2014-06-10 18:57 (-7d) |
| 133 | Revisión de versionado de documentos modificados | 2014-06-17 18:27 → 2014-06-10 17:57 (-7d) | 2014-06-17 19:27 → 2014-06-10 18:57 (-7d) |
| 134 | **Iteración C5** | 2014-06-17 19:27 → 2014-06-10 18:57 (-7d) | 2014-07-23 19:27 → 2014-07-16 18:57 (-7d) |
| 135 | **Análisis/Diseño** | 2014-06-17 19:27 → 2014-06-10 18:57 (-7d) | 2014-06-19 17:27 → 2014-06-11 20:57 (-8d) |
| 136 | Revisión de Diagramas y Modelos de Análisis/Diseño | 2014-06-17 19:27 → 2014-06-10 18:57 (-7d) | 2014-06-19 17:27 → 2014-06-11 20:57 (-8d) |
| 137 | **Implementación** | 2014-06-19 17:27 → 2014-06-11 20:57 (-8d) | 2014-07-16 18:27 → 2014-07-09 17:57 (-7d) |
| 138 | Codificación de Calculos de tiempos de espera (FrontEnd) | 2014-06-19 17:27 → 2014-06-11 20:57 (-8d) | 2014-07-15 20:27 → 2014-07-08 19:57 (-7d) |
| 139 | Codificación de Funciones básicas (BackEnd) | 2014-06-19 17:27 → 2014-06-11 20:57 (-8d) | 2014-07-15 20:27 → 2014-07-08 19:57 (-7d) |
| 140 | Codificación de visualizador de ordenes (Android) | 2014-06-19 17:27 → 2014-06-11 20:57 (-8d) | 2014-07-16 18:27 → 2014-07-09 17:57 (-7d) |
| 141 | **Pruebas** | 2014-07-16 18:27 → 2014-07-09 17:57 (-7d) | 2014-07-22 20:27 → 2014-07-15 19:57 (-7d) |
| 142 | Pruebas de Funcionalidad (para las 3 aplicaciones) | 2014-07-16 18:27 → 2014-07-09 17:57 (-7d) | 2014-07-22 20:27 → 2014-07-15 19:57 (-7d) |
| 143 | **Gestión del Proyecto** | 2014-07-22 20:27 → 2014-07-15 19:57 (-7d) | 2014-07-23 18:27 → 2014-07-16 17:57 (-7d) |
| 144 | Actualización de Riesgos | 2014-07-22 20:27 → 2014-07-15 19:57 (-7d) | 2014-07-23 18:27 → 2014-07-16 17:57 (-7d) |
| 145 | Revisión de planificacion (posible replanificación) | 2014-07-22 20:27 → 2014-07-15 19:57 (-7d) | 2014-07-23 17:27 → 2014-07-15 20:57 (-8d) |
| 146 | **Gestión de Configuración** | 2014-07-23 18:27 → 2014-07-16 17:57 (-7d) | 2014-07-23 19:27 → 2014-07-16 18:57 (-7d) |
| 147 | Versionado de todos los proyectos | 2014-07-23 18:27 → 2014-07-16 17:57 (-7d) | 2014-07-23 19:27 → 2014-07-16 18:57 (-7d) |
| 148 | Revisión de versionado de documentos modificados | 2014-07-23 18:27 → 2014-07-16 17:57 (-7d) | 2014-07-23 19:27 → 2014-07-16 18:57 (-7d) |
| 149 | **Iteración C6** | 2014-07-23 19:27 → 2014-07-16 18:57 (-7d) | 2014-08-27 18:27 → 2014-08-20 17:57 (-7d) |
| 150 | **Análisis/Diseño** | 2014-07-23 19:27 → 2014-07-16 18:57 (-7d) | 2014-07-29 19:27 → 2014-07-22 18:57 (-7d) |
| 151 | Revisión de Diagramas y Modelos de Análisis/Diseño | 2014-07-23 19:27 → 2014-07-16 18:57 (-7d) | 2014-07-29 19:27 → 2014-07-22 18:57 (-7d) |
| 152 | **Implementación** | 2014-07-29 19:27 → 2014-07-22 18:57 (-7d) | 2014-08-20 17:27 → 2014-08-12 20:57 (-8d) |
| 153 | Codificación de Calculos de tiempos de espera (FrontEnd) | 2014-07-29 19:27 → 2014-07-22 18:57 (-7d) | 2014-08-20 17:27 → 2014-08-12 20:57 (-8d) |
| 154 | Codificación de visualizador de Ordenes (BackEnd) | 2014-07-29 19:27 → 2014-07-22 18:57 (-7d) | 2014-08-19 19:27 → 2014-08-12 18:57 (-7d) |
| 155 | Codificación de personalización gráfica (Android) | 2014-07-29 19:27 → 2014-07-22 18:57 (-7d) | 2014-08-20 17:27 → 2014-08-12 20:57 (-8d) |
| 156 | **Pruebas** | 2014-08-20 17:27 → 2014-08-12 20:57 (-8d) | 2014-08-26 19:27 → 2014-08-19 18:57 (-7d) |
| 157 | Pruebas de comunicación de interfaces y pruebas de funcionalidad | 2014-08-20 17:27 → 2014-08-12 20:57 (-8d) | 2014-08-26 19:27 → 2014-08-19 18:57 (-7d) |
| 158 | **Gestión del Proyecto** | 2014-08-26 19:27 → 2014-08-19 18:57 (-7d) | 2014-08-26 20:27 → 2014-08-19 19:57 (-7d) |

| ID | Task | Start | Finish | Complete | Other |
| --- | --- | --- | --- | --- | --- |
| 159 | Actualización de Riesgos | 2014-08-26 19:27 → 2014-08-19 18:57 (-7d) | 2014-08-26 20:27 → 2014-08-19 19:57 (-7d) |  |  |
| 160 | Revisión de planificacion (posible replanificación) | 2014-08-26 19:27 → 2014-08-19 18:57 (-7d) | 2014-08-26 20:27 → 2014-08-19 19:57 (-7d) |  |  |
| 161 | **Gestión de Configuración** | 2014-08-26 20:27 → 2014-08-19 19:57 (-7d) | 2014-08-27 18:27 → 2014-08-20 17:57 (-7d) |  |  |
| 162 | Versionado de todos los proyectos | 2014-08-26 20:27 → 2014-08-19 19:57 (-7d) | 2014-08-27 18:27 → 2014-08-20 17:57 (-7d) |  |  |
| 163 | Revisión de versionado de documentos modificados | 2014-08-26 20:27 → 2014-08-19 19:57 (-7d) | 2014-08-27 18:27 → 2014-08-20 17:57 (-7d) |  |  |
| 164 | Capacidad Operacional Inicial | 2014-08-27 18:27 → 2014-08-20 17:57 (-7d) | 2014-08-27 18:27 → 2014-08-20 17:57 (-7d) |  |  |
| 165 | **TRANSICIÓN** | 2014-08-27 18:27 → 2014-08-20 17:57 (-7d) | 2014-10-02 17:27 → 2014-09-24 20:57 (-8d) |  |  |
| 166 | **Iteración T1** | 2014-08-27 18:27 → 2014-08-20 17:57 (-7d) | 2014-10-02 17:27 → 2014-09-24 20:57 (-8d) |  |  |
| 167 | **Implementación** | 2014-08-27 18:27 → 2014-08-20 17:57 (-7d) | 2014-09-09 18:27 → 2014-09-02 17:57 (-7d) |  |  |
| 168 | Elaboracion de documentación para usuarios y videos tutoriales | 2014-08-27 18:27 → 2014-08-20 17:57 (-7d) | 2014-09-09 18:27 → 2014-09-02 17:57 (-7d) |  |  |
| 169 | **Despliegue** | 2014-09-09 18:27 → 2014-09-02 17:57 (-7d) | 2014-09-23 18:27 → 2014-09-16 17:57 (-7d) |  |  |
| 170 | Modelo de despliegue | 2014-09-09 18:27 → 2014-09-02 17:57 (-7d) | 2014-09-11 20:27 → 2014-09-04 19:57 (-7d) |  |  |
| 171 | Integración y puesta a punto del sistema | 2014-09-11 20:27 → 2014-09-04 19:57 (-7d) | 2014-09-23 18:27 → 2014-09-16 17:57 (-7d) |  |  |
| 172 | **Gestión del Proyecto** | 2014-09-23 18:27 → 2014-09-16 17:57 (-7d) | 2014-10-01 19:27 → 2014-09-24 18:57 (-7d) |  |  |
| 173 | Actualización de Riesgos | 2014-09-23 18:27 → 2014-09-16 17:57 (-7d) | 2014-09-23 19:27 → 2014-09-16 18:57 (-7d) |  |  |
| 174 | Revisión de planificacion (posible replanificación) | 2014-09-23 19:27 → 2014-09-16 18:57 (-7d) | 2014-09-23 20:27 → 2014-09-16 19:57 (-7d) |  |  |
| 175 | Análisis de resultados del proyecto | 2014-09-23 20:27 → 2014-09-16 19:57 (-7d) | 2014-10-01 19:27 → 2014-09-24 18:57 (-7d) |  |  |
| 176 | **Gestión de Configuración** | 2014-10-01 19:27 → 2014-09-24 18:57 (-7d) | 2014-10-02 17:27 → 2014-09-24 20:57 (-8d) |  |  |
| 177 | Versionado de todos los proyectos | 2014-10-01 19:27 → 2014-09-24 18:57 (-7d) | 2014-10-02 17:27 → 2014-09-24 20:57 (-8d) |  |  |
| 178 | Revisión de versionado de documentos modificados | 2014-10-01 19:27 → 2014-09-24 18:57 (-7d) | 2014-10-02 17:27 → 2014-09-24 20:57 (-8d) |  |  |
| 179 | Lanzamiento de producto | 2014-10-02 17:27 → 2014-09-24 20:57 (-8d) | 2014-10-02 17:27 → 2014-09-24 20:57 (-8d) |  |  |
| 180 | Fin de Proyecto | 2014-10-02 17:27 → 2014-09-24 20:57 (-8d) | 2014-10-02 17:27 → 2014-09-24 20:57 (-8d) |  |  |
| 181 | **Informe de avance mensual** |  |  | 31% → 15% |  |
| 184 | Informe de avance mensual 3 | 2013-10-30 09:00 A → 2013-10-30 09:00 | 2013-10-30 13:00 A → 2013-10-30 13:00 | 100% → 0% |  |
| 185 | Informe de avance mensual 4 | 2013-12-10 09:00 A → 2013-11-27 09:00 (-13d) | 2013-12-10 13:00 A → 2013-11-27 13:00 (-13d) | 100% → 0% | constraint start no earlier than 2013-12-10 09:00 → start no earlier than 2013-11-27 09:00 |

## Version 17 (data date 2013-10-30, saved 2014-03-26, file Informe3.mpp)

Note of the change: Informe 4

Last finish 2014-09-24 → 2014-09-30 (+6d). Complete tasks 15 → 24.

Changed:

| ID | Task | Start | Finish | Duration | Complete | Total float | Other |
| --- | --- | --- | --- | --- | --- | --- | --- |
| 1 | **RestApp** |  | 2014-09-24 20:57 → 2014-09-30 20:27 (+6d) | 69.99d → 70.93d | 10% → 15% |  |  |
| 2 | **INICIO** |  | 2013-10-01 19:57 A |  | 96% → 100% | 0d → none |  |
| 3 | **Iteración I1** |  | 2013-10-01 19:57 A |  | 96% → 100% | 0d → none |  |
| 22 | **Ambiente** | 2013-09-26 19:57 A | 2013-10-01 19:57 A |  | 0% → 100% | 0d → none |  |
| 23 | Identificación y evaluación de herramientas | 2013-09-26 19:57 A | 2013-10-01 19:57 A |  | 0% → 100% | 0d → none |  |
| 24 | Objetivos del ciclo de vida | 2013-10-01 19:57 A | 2013-10-01 19:57 A |  | 0% → 100% | 0d → none |  |
| 25 | **ELABORACIÓN** | 2013-10-01 19:57 A | 2014-03-25 19:57 → 2014-03-27 19:27 (+2d) | 19d → 19.94d | 0% → 24% |  |  |
| 26 | **Iteración E1** | 2013-10-01 19:57 A | 2013-11-07 20:57 → 2013-11-13 20:27 (+6d) | 7.12d → 8.06d | 0% → 60% |  |  |
| 27 | **Modelo de Negocio** | 2013-10-01 19:57 A | 2013-10-03 18:57 → 2013-10-03 19:57 A | 0.88d → 1d | 0% → 100% | 0d → none |  |
| 28 | Entendimiento del Modelo de Negocio | 2013-10-01 19:57 A | 2013-10-03 18:57 → 2013-10-03 19:57 A | 7h → 8h | 0% → 100% | 0d → none |  |
| 29 | **Requerimientos** | 2013-10-03 18:57 → 2013-10-03 19:57 A | 2013-10-10 18:57 → 2013-10-15 19:57 A (+5d) | 1.5d → 2d | 0% → 100% | 0d → none |  |
| 30 | Definicón de nuevos requerimientos | 2013-10-03 18:57 → 2013-10-03 19:57 A | 2013-10-03 20:57 → 2013-10-08 18:57 A (+5d) | 2h → 3h | 0% → 100% | 0d → none |  |
| 31 | Documentación de requerimientos según estandar | 2013-10-03 20:57 → 2013-10-08 18:57 A (+5d) | 2013-10-09 17:57 → 2013-10-10 18:57 A (+1d) | 5h → 8h | 0% → 100% | 0d → none |  |
| 32 | Jerarquización de requerimientos | 2013-10-09 17:57 → 2013-10-10 18:57 A (+1d) | 2013-10-10 18:57 → 2013-10-15 19:57 A (+5d) |  | 0% → 100% | 0d → none |  |
| 33 | **Análisis/Diseño** | 2013-10-10 18:57 → 2013-10-15 19:57 A (+5d) | 2013-10-17 18:57 → 2013-10-30 18:27 A (+13d) | 1.5d → 1.81d | 0% → 100% | 0d → none |  |
| 34 | Refinación de Modelo de Casos de Usos | 2013-10-10 18:57 → 2013-10-15 19:57 A (+5d) | 2013-10-10 20:57 → 2013-10-16 18:57 A (+6d) | 2h → 3h | 0% → 100% | 0d → none |  |
| 35 | Definición preliminar de Diagrama de clases | 2013-10-10 20:57 → 2013-10-16 18:57 A (+6d) | 2013-10-17 18:57 → 2013-10-30 18:27 A (+13d) | 10h → 11.5h | 0% → 100% | 0d → none |  |
| 36 | **Implementación** | 2013-10-17 18:57 → 2013-10-30 18:27 (+13d) | 2013-11-06 18:57 → 2013-11-12 18:27 (+6d) |  |  |  |  |
| 37 | Desarrollo prototipos independientes de prueba | 2013-10-17 18:57 → 2013-10-30 18:27 (+13d) | 2013-11-06 18:57 → 2013-11-12 18:27 (+6d) |  |  |  | baseline start 2013-10-15 20:00 → 2013-10-15 09:00 |
| 38 | **Gestión del Proyecto** | 2013-11-06 18:57 → 2013-11-12 18:27 (+6d) | 2013-11-06 20:57 → 2013-11-12 20:27 (+6d) |  |  |  |  |
| 39 | Actualización y priorización de Riesgos | 2013-11-06 18:57 → 2013-11-12 18:27 (+6d) | 2013-11-06 19:57 → 2013-11-12 19:27 (+6d) |  |  |  |  |
| 40 | Refinación del Plan de Proyecto | 2013-11-06 19:57 → 2013-11-12 19:27 (+6d) | 2013-11-06 20:57 → 2013-11-12 20:27 (+6d) |  |  |  |  |
| 41 | **Gestión de Configuración** | 2013-11-06 20:57 → 2013-11-12 20:27 (+6d) | 2013-11-07 17:57 → 2013-11-13 17:27 (+6d) |  |  |  |  |
| 42 | Revisión de versionado de documentos modificados | 2013-11-06 20:57 → 2013-11-12 20:27 (+6d) | 2013-11-07 17:57 → 2013-11-13 17:27 (+6d) |  |  |  |  |
| 43 | **Ambiente** | 2013-11-07 17:57 → 2013-11-13 17:27 (+6d) | 2013-11-07 20:57 → 2013-11-13 20:27 (+6d) |  |  |  |  |
| 44 | Identificación de Tecnología | 2013-11-07 17:57 → 2013-11-13 17:27 (+6d) | 2013-11-07 20:57 → 2013-11-13 20:27 (+6d) |  |  |  |  |
| 45 | **Iteración E2** | 2013-11-07 20:57 → 2013-11-13 20:27 (+6d) | 2014-02-06 19:57 → 2014-02-27 19:27 (+21d) |  |  |  |  |
| 46 | **Modelo de Negocio** | 2013-11-07 20:57 → 2013-11-13 20:27 (+6d) | 2013-11-13 17:57 → 2013-11-19 17:27 (+6d) |  |  |  |  |
| 47 | Refinación del Modelo de Negocio | 2013-11-07 20:57 → 2013-11-13 20:27 (+6d) | 2013-11-13 17:57 → 2013-11-19 17:27 (+6d) |  |  |  |  |
| 48 | **Requerimientos** | 2013-11-13 17:57 → 2013-11-19 17:27 (+6d) | 2013-11-14 17:57 → 2013-11-20 17:27 (+6d) |  |  |  |  |
| 49 | Validación de requerimientos | 2013-11-13 17:57 → 2013-11-19 17:27 (+6d) | 2013-11-13 20:57 → 2013-11-19 20:27 (+6d) |  |  |  |  |
| 50 | Mapeo de Requerimientos a Casos de Uso | 2013-11-13 17:57 → 2013-11-19 17:27 (+6d) | 2013-11-14 17:57 → 2013-11-20 17:27 (+6d) |  |  |  |  |
| 51 | **Análisis/Diseño** | 2013-11-14 17:57 → 2013-11-20 17:27 (+6d) | 2013-12-12 17:57 → 2014-02-05 17:27 (+55d) |  |  |  |  |
| 52 | Definición Inicial de diagrama de Clases | 2013-11-14 17:57 → 2013-11-20 17:27 (+6d) | 2013-11-20 19:57 → 2013-11-26 19:27 (+6d) |  |  |  |  |
| 53 | Definición inicial del Modelo de Datos | 2013-11-20 19:57 → 2013-11-26 19:27 (+6d) | 2013-11-26 19:57 → 2013-11-28 19:27 (+2d) |  |  |  |  |
| 54 | Definición inicial de Diagrama de Actividades | 2013-11-26 19:57 → 2013-11-28 19:27 (+2d) | 2013-11-28 19:57 → 2013-12-11 19:27 (+13d) |  |  |  |  |
| 55 | Definición inicial de Diagramas de Secuencia | 2013-11-28 19:57 → 2013-12-11 19:27 (+13d) | 2013-12-12 17:57 → 2014-02-05 17:27 (+55d) |  |  |  |  |
| 56 | **Implementación** | 2013-12-12 17:57 → 2014-02-05 17:27 (+55d) | 2014-02-04 19:57 → 2014-02-06 19:27 (+2d) |  |  |  |  |
| 57 | Mejoramientos de prototipos | 2013-12-12 17:57 → 2014-02-05 17:27 (+55d) | 2014-02-04 19:57 → 2014-02-06 19:27 (+2d) |  |  |  |  |
| 58 | **Gestión del Proyecto** | 2014-02-04 19:57 → 2014-02-06 19:27 (+2d) | 2014-02-05 17:57 → 2014-02-26 17:27 (+21d) |  |  |  |  |
| 59 | Validación del Plan de proyecto | 2014-02-04 19:57 → 2014-02-06 19:27 (+2d) | 2014-02-05 17:57 → 2014-02-26 17:27 (+21d) |  |  |  |  |
| 60 | **Gestión de Configuración** | 2014-02-05 17:57 → 2014-02-26 17:27 (+21d) | 2014-02-05 18:57 → 2014-02-26 18:27 (+21d) |  |  |  |  |
| 61 | Versionado de los prototipos | 2014-02-05 17:57 → 2014-02-26 17:27 (+21d) | 2014-02-05 18:57 → 2014-02-26 18:27 (+21d) |  |  |  |  |
| 62 | Revisión de versionado de documentos modificados | 2014-02-05 17:57 → 2014-02-26 17:27 (+21d) | 2014-02-05 18:57 → 2014-02-26 18:27 (+21d) |  |  |  |  |
| 63 | **Ambiente** | 2014-02-05 18:57 → 2014-02-26 18:27 (+21d) | 2014-02-06 19:57 → 2014-02-27 19:27 (+21d) |  |  |  |  |
| 64 | Preparación del ambiente de desarrollo | 2014-02-05 18:57 → 2014-02-26 18:27 (+21d) | 2014-02-06 19:57 → 2014-02-27 19:27 (+21d) |  |  |  |  |
| 65 | **Iteración E3** | 2014-02-06 19:57 → 2014-02-27 19:27 (+21d) | 2014-03-25 19:57 → 2014-03-27 19:27 (+2d) |  |  |  |  |
| 66 | **Requerimientos** | 2014-02-06 19:57 → 2014-02-27 19:27 (+21d) | 2014-02-26 18:57 → 2014-03-11 18:27 (+13d) |  |  |  |  |
| 67 | Validacion de Mapeo de Requerimientos a Casos de Uso | 2014-02-06 19:57 → 2014-02-27 19:27 (+21d) | 2014-02-26 18:57 → 2014-03-11 18:27 (+13d) |  |  |  |  |
| 68 | **Análisis/Diseño** | 2014-02-26 18:57 → 2014-03-11 18:27 (+13d) | 2014-03-18 20:57 → 2014-03-20 20:27 (+2d) |  |  |  |  |
| 69 | Refinación de Diagrama de Casos de Uso | 2014-02-26 18:57 → 2014-03-11 18:27 (+13d) | 2014-02-27 20:57 → 2014-03-12 20:27 (+13d) |  |  |  |  |
| 70 | Refinación de Diagrama de Clases | 2014-02-27 20:57 → 2014-03-12 20:27 (+13d) | 2014-03-12 18:57 → 2014-03-18 18:27 (+6d) |  |  |  |  |
| 71 | Refinación del Modelo de Datos | 2014-03-12 18:57 → 2014-03-18 18:27 (+6d) | 2014-03-13 18:57 → 2014-03-19 18:27 (+6d) |  |  |  |  |
| 72 | Descripción de casos de uso mas importantes | 2014-03-13 18:57 → 2014-03-19 18:27 (+6d) | 2014-03-18 20:57 → 2014-03-20 20:27 (+2d) |  |  |  |  |
| 73 | **Implementación** | 2014-03-18 20:57 → 2014-03-20 20:27 (+2d) | 2014-03-20 20:57 → 2014-03-26 20:27 (+6d) |  |  |  |  |
| 74 | Definición de interfaces de comunicación entre plataformas | 2014-03-18 20:57 → 2014-03-20 20:27 (+2d) | 2014-03-20 20:57 → 2014-03-26 20:27 (+6d) |  |  |  |  |
| 75 | **Gestión del Proyecto** | 2014-03-20 20:57 → 2014-03-26 20:27 (+6d) | 2014-03-25 18:57 → 2014-03-27 18:27 (+2d) |  |  |  |  |
| 76 | Actualización de planes de prevención y contigencia para nuevos Riesgos | 2014-03-20 20:57 → 2014-03-26 20:27 (+6d) | 2014-03-25 18:57 → 2014-03-27 18:27 (+2d) |  |  |  |  |
| 77 | **Gestión de Configuración** | 2014-03-25 18:57 → 2014-03-27 18:27 (+2d) | 2014-03-25 19:57 → 2014-03-27 19:27 (+2d) |  |  |  |  |
| 78 | Revisión de versionado de documentos modificados | 2014-03-25 18:57 → 2014-03-27 18:27 (+2d) | 2014-03-25 19:57 → 2014-03-27 19:27 (+2d) |  |  |  |  |
| 79 | Arquitectura del ciclo de vida | 2014-03-25 19:57 → 2014-03-27 19:27 (+2d) | 2014-03-25 19:57 → 2014-03-27 19:27 (+2d) |  |  |  |  |
| 80 | **CONSTRUCCIÓN** | 2014-03-25 19:57 → 2014-03-27 19:27 (+2d) | 2014-08-20 17:57 → 2014-08-26 17:27 (+6d) |  |  |  |  |
| 81 | **Iteración C1** | 2014-03-25 19:57 → 2014-03-27 19:27 (+2d) | 2014-04-09 19:57 → 2014-04-15 19:27 (+6d) |  |  |  |  |
| 82 | **Análisis/Diseño** | 2014-03-25 19:57 → 2014-03-27 19:27 (+2d) | 2014-03-27 19:57 → 2014-04-02 19:27 (+6d) |  |  |  |  |
| 83 | Refinación de Diagramas de Actividad | 2014-03-25 19:57 → 2014-03-27 19:27 (+2d) | 2014-03-26 19:57 → 2014-04-01 19:27 (+6d) |  |  |  |  |
| 84 | Refinación de Diagramas de Secuencia | 2014-03-26 19:57 → 2014-04-01 19:27 (+6d) | 2014-03-27 19:57 → 2014-04-02 19:27 (+6d) |  |  |  |  |
| 85 | **Implementación** | 2014-03-27 19:57 → 2014-04-02 19:27 (+6d) | 2014-04-08 18:57 → 2014-04-10 18:27 (+2d) |  |  |  |  |
| 86 | Construcción de Base de Datos | 2014-03-27 19:57 → 2014-04-02 19:27 (+6d) | 2014-04-02 19:57 → 2014-04-08 19:27 (+6d) |  |  |  |  |
| 87 | Definición de Interfaz de Usuario | 2014-04-02 19:57 → 2014-04-08 19:27 (+6d) | 2014-04-08 18:57 → 2014-04-10 18:27 (+2d) |  |  |  |  |
| 88 | **Gestión del Proyecto** | 2014-04-08 18:57 → 2014-04-10 18:27 (+2d) | 2014-04-09 18:57 → 2014-04-15 18:27 (+6d) |  |  |  |  |

| ID | Task | Start | Finish |
| --- | --- | --- | --- |
| 89 | Actualización de Riesgos | 2014-04-08 18:57 → 2014-04-10 18:27 (+2d) | 2014-04-08 19:57 → 2014-04-10 19:27 (+2d) |
| 90 | Revisión de planificacion (posible replanificación) | 2014-04-08 19:57 → 2014-04-10 19:27 (+2d) | 2014-04-09 18:57 → 2014-04-15 18:27 (+6d) |
| 91 | **Gestión de Configuración** | 2014-04-09 18:57 → 2014-04-15 18:27 (+6d) | 2014-04-09 19:57 → 2014-04-15 19:27 (+6d) |
| 92 | Versionado de prototipos | 2014-04-09 18:57 → 2014-04-15 18:27 (+6d) | 2014-04-09 19:57 → 2014-04-15 19:27 (+6d) |
| 93 | Revisión de versionado de documentos modificados | 2014-04-09 18:57 → 2014-04-15 18:27 (+6d) | 2014-04-09 19:57 → 2014-04-15 19:27 (+6d) |
| 94 | **Iteración C2** | 2014-04-09 19:57 → 2014-04-15 19:27 (+6d) | 2014-05-01 19:57 → 2014-05-07 19:27 (+6d) |
| 95 | **Análisis/Diseño** | 2014-04-09 19:57 → 2014-04-15 19:27 (+6d) | 2014-04-16 20:57 → 2014-04-22 20:27 (+6d) |
| 96 | Definición inicial del Modelo de componentes | 2014-04-09 19:57 → 2014-04-15 19:27 (+6d) | 2014-04-15 20:57 → 2014-04-17 20:27 (+2d) |
| 97 | Refinación de Diagramas de clases (agregado de operaciones) | 2014-04-15 20:57 → 2014-04-17 20:27 (+2d) | 2014-04-16 20:57 → 2014-04-22 20:27 (+6d) |
| 98 | **Implementación** | 2014-04-16 20:57 → 2014-04-22 20:27 (+6d) | 2014-04-29 19:57 → 2014-05-01 19:27 (+2d) |
| 99 | Codificación de Interfaz de usuario (FrontEnd) | 2014-04-16 20:57 → 2014-04-22 20:27 (+6d) | 2014-04-29 18:57 → 2014-05-01 18:27 (+2d) |
| 100 | Codificación de Interfaz de usuario (BackEnd) | 2014-04-16 20:57 → 2014-04-22 20:27 (+6d) | 2014-04-29 19:57 → 2014-05-01 19:27 (+2d) |
| 101 | Codificación de Interfaz de usuario (Android) | 2014-04-16 20:57 → 2014-04-22 20:27 (+6d) | 2014-04-29 19:57 → 2014-05-01 19:27 (+2d) |
| 102 | **Gestión del Proyecto** | 2014-04-29 19:57 → 2014-05-01 19:27 (+2d) | 2014-05-01 17:57 → 2014-05-07 17:27 (+6d) |
| 103 | Actualización de Riesgos | 2014-04-29 19:57 → 2014-05-01 19:27 (+2d) | 2014-04-30 18:57 → 2014-05-06 18:27 (+6d) |
| 104 | Revisión de planificacion (posible replanificación) | 2014-04-30 18:57 → 2014-05-06 18:27 (+6d) | 2014-05-01 17:57 → 2014-05-07 17:27 (+6d) |
| 105 | **Gestión de Configuración** | 2014-05-01 17:57 → 2014-05-07 17:27 (+6d) | 2014-05-01 19:57 → 2014-05-07 19:27 (+6d) |
| 106 | Versionado de interfaz de usuario | 2014-05-01 17:57 → 2014-05-07 17:27 (+6d) | 2014-05-01 18:57 → 2014-05-07 18:27 (+6d) |
| 107 | Revisión de versionado de documentos modificados | 2014-05-01 18:57 → 2014-05-07 18:27 (+6d) | 2014-05-01 19:57 → 2014-05-07 19:27 (+6d) |
| 108 | **Iteración C3** | 2014-05-01 19:57 → 2014-05-07 19:27 (+6d) | 2014-05-20 19:57 → 2014-05-22 19:27 (+2d) |
| 109 | **Análisis/Diseño** | 2014-05-01 19:57 → 2014-05-07 19:27 (+6d) | 2014-05-06 18:57 → 2014-05-08 18:27 (+2d) |
| 110 | Refinación del Modelo de componentes | 2014-05-01 19:57 → 2014-05-07 19:27 (+6d) | 2014-05-06 18:57 → 2014-05-08 18:27 (+2d) |
| 111 | **Implementación** | 2014-05-06 18:57 → 2014-05-08 18:27 (+2d) | 2014-05-15 19:57 → 2014-05-21 19:27 (+6d) |
| 112 | Codificacion de logeo de usuario (FrontEnd) | 2014-05-06 18:57 → 2014-05-08 18:27 (+2d) | 2014-05-15 19:57 → 2014-05-21 19:27 (+6d) |
| 113 | Codificación de seguridad [Roles y Usuario] (BackEnd) | 2014-05-06 18:57 → 2014-05-08 18:27 (+2d) | 2014-05-15 18:57 → 2014-05-21 18:27 (+6d) |
| 114 | Codificación de Local Storage (Android) | 2014-05-06 18:57 → 2014-05-08 18:27 (+2d) | 2014-05-15 18:57 → 2014-05-21 18:27 (+6d) |
| 115 | **Gestión del Proyecto** | 2014-05-15 19:57 → 2014-05-21 19:27 (+6d) | 2014-05-20 18:57 → 2014-05-22 18:27 (+2d) |
| 116 | Actualización de Riesgos | 2014-05-15 19:57 → 2014-05-21 19:27 (+6d) | 2014-05-20 18:57 → 2014-05-22 18:27 (+2d) |
| 117 | Revisión de planificacion (posible replanificación) | 2014-05-15 19:57 → 2014-05-21 19:27 (+6d) | 2014-05-20 18:57 → 2014-05-22 18:27 (+2d) |
| 118 | **Gestión de Configuración** | 2014-05-20 18:57 → 2014-05-22 18:27 (+2d) | 2014-05-20 19:57 → 2014-05-22 19:27 (+2d) |
| 119 | Versionado de todos los proyectos | 2014-05-20 18:57 → 2014-05-22 18:27 (+2d) | 2014-05-20 19:57 → 2014-05-22 19:27 (+2d) |
| 120 | Revisión de versionado de documentos modificados | 2014-05-20 18:57 → 2014-05-22 18:27 (+2d) | 2014-05-20 19:57 → 2014-05-22 19:27 (+2d) |
| 121 | **Iteración C4** | 2014-05-20 19:57 → 2014-05-22 19:27 (+2d) | 2014-06-10 18:57 → 2014-06-12 18:27 (+2d) |
| 122 | **Análisis/Diseño** | 2014-05-20 19:57 → 2014-05-22 19:27 (+2d) | 2014-05-21 19:57 → 2014-05-27 19:27 (+6d) |
| 123 | Refinación del Modelo de Datos | 2014-05-20 19:57 → 2014-05-22 19:27 (+2d) | 2014-05-21 19:57 → 2014-05-27 19:27 (+6d) |
| 124 | **Implementación** | 2014-05-21 19:57 → 2014-05-27 19:27 (+6d) | 2014-06-05 19:57 → 2014-06-11 19:27 (+6d) |
| 125 | Codificación de Gestión de reservas online (FrontEnd) | 2014-05-21 19:57 → 2014-05-27 19:27 (+6d) | 2014-06-05 19:57 → 2014-06-11 19:27 (+6d) |
| 126 | Codificación de ABM principales (BackEnd) | 2014-05-21 19:57 → 2014-05-27 19:27 (+6d) | 2014-06-05 17:57 → 2014-06-11 17:27 (+6d) |
| 127 | Codificación de ABM principales (Android) | 2014-05-21 19:57 → 2014-05-27 19:27 (+6d) | 2014-06-05 19:57 → 2014-06-11 19:27 (+6d) |
| 128 | **Gestión del Proyecto** | 2014-06-05 19:57 → 2014-06-11 19:27 (+6d) | 2014-06-10 17:57 → 2014-06-12 17:27 (+2d) |
| 129 | Actualización de Riesgos | 2014-06-05 19:57 → 2014-06-11 19:27 (+6d) | 2014-06-10 17:57 → 2014-06-12 17:27 (+2d) |
| 130 | Revisión de planificacion (posible replanificación) | 2014-06-05 19:57 → 2014-06-11 19:27 (+6d) | 2014-06-05 20:57 → 2014-06-11 20:27 (+6d) |
| 131 | **Gestión de Configuración** | 2014-06-10 17:57 → 2014-06-12 17:27 (+2d) | 2014-06-10 18:57 → 2014-06-12 18:27 (+2d) |
| 132 | Versionado de todos los proyectos | 2014-06-10 17:57 → 2014-06-12 17:27 (+2d) | 2014-06-10 18:57 → 2014-06-12 18:27 (+2d) |
| 133 | Revisión de versionado de documentos modificados | 2014-06-10 17:57 → 2014-06-12 17:27 (+2d) | 2014-06-10 18:57 → 2014-06-12 18:27 (+2d) |
| 134 | **Iteración C5** | 2014-06-10 18:57 → 2014-06-12 18:27 (+2d) | 2014-07-16 18:57 → 2014-07-22 18:27 (+6d) |
| 135 | **Análisis/Diseño** | 2014-06-10 18:57 → 2014-06-12 18:27 (+2d) | 2014-06-11 20:57 → 2014-06-17 20:27 (+6d) |
| 136 | Revisión de Diagramas y Modelos de Análisis/Diseño | 2014-06-10 18:57 → 2014-06-12 18:27 (+2d) | 2014-06-11 20:57 → 2014-06-17 20:27 (+6d) |
| 137 | **Implementación** | 2014-06-11 20:57 → 2014-06-17 20:27 (+6d) | 2014-07-09 17:57 → 2014-07-15 17:27 (+6d) |
| 138 | Codificación de Calculos de tiempos de espera (FrontEnd) | 2014-06-11 20:57 → 2014-06-17 20:27 (+6d) | 2014-07-08 19:57 → 2014-07-10 19:27 (+2d) |
| 139 | Codificación de Funciones básicas (BackEnd) | 2014-06-11 20:57 → 2014-06-17 20:27 (+6d) | 2014-07-08 19:57 → 2014-07-10 19:27 (+2d) |
| 140 | Codificación de visualizador de ordenes (Android) | 2014-06-11 20:57 → 2014-06-17 20:27 (+6d) | 2014-07-09 17:57 → 2014-07-15 17:27 (+6d) |
| 141 | **Pruebas** | 2014-07-09 17:57 → 2014-07-15 17:27 (+6d) | 2014-07-15 19:57 → 2014-07-17 19:27 (+2d) |
| 142 | Pruebas de Funcionalidad (para las 3 aplicaciones) | 2014-07-09 17:57 → 2014-07-15 17:27 (+6d) | 2014-07-15 19:57 → 2014-07-17 19:27 (+2d) |
| 143 | **Gestión del Proyecto** | 2014-07-15 19:57 → 2014-07-17 19:27 (+2d) | 2014-07-16 17:57 → 2014-07-22 17:27 (+6d) |
| 144 | Actualización de Riesgos | 2014-07-15 19:57 → 2014-07-17 19:27 (+2d) | 2014-07-16 17:57 → 2014-07-22 17:27 (+6d) |
| 145 | Revisión de planificacion (posible replanificación) | 2014-07-15 19:57 → 2014-07-17 19:27 (+2d) | 2014-07-15 20:57 → 2014-07-17 20:27 (+2d) |
| 146 | **Gestión de Configuración** | 2014-07-16 17:57 → 2014-07-22 17:27 (+6d) | 2014-07-16 18:57 → 2014-07-22 18:27 (+6d) |
| 147 | Versionado de todos los proyectos | 2014-07-16 17:57 → 2014-07-22 17:27 (+6d) | 2014-07-16 18:57 → 2014-07-22 18:27 (+6d) |
| 148 | Revisión de versionado de documentos modificados | 2014-07-16 17:57 → 2014-07-22 17:27 (+6d) | 2014-07-16 18:57 → 2014-07-22 18:27 (+6d) |
| 149 | **Iteración C6** | 2014-07-16 18:57 → 2014-07-22 18:27 (+6d) | 2014-08-20 17:57 → 2014-08-26 17:27 (+6d) |
| 150 | **Análisis/Diseño** | 2014-07-16 18:57 → 2014-07-22 18:27 (+6d) | 2014-07-22 18:57 → 2014-07-24 18:27 (+2d) |
| 151 | Revisión de Diagramas y Modelos de Análisis/Diseño | 2014-07-16 18:57 → 2014-07-22 18:27 (+6d) | 2014-07-22 18:57 → 2014-07-24 18:27 (+2d) |
| 152 | **Implementación** | 2014-07-22 18:57 → 2014-07-24 18:27 (+2d) | 2014-08-12 20:57 → 2014-08-14 20:27 (+2d) |
| 153 | Codificación de Calculos de tiempos de espera (FrontEnd) | 2014-07-22 18:57 → 2014-07-24 18:27 (+2d) | 2014-08-12 20:57 → 2014-08-14 20:27 (+2d) |
| 154 | Codificación de visualizador de Ordenes (BackEnd) | 2014-07-22 18:57 → 2014-07-24 18:27 (+2d) | 2014-08-12 18:57 → 2014-08-14 18:27 (+2d) |
| 155 | Codificación de personalización gráfica (Android) | 2014-07-22 18:57 → 2014-07-24 18:27 (+2d) | 2014-08-12 20:57 → 2014-08-14 20:27 (+2d) |
| 156 | **Pruebas** | 2014-08-12 20:57 → 2014-08-14 20:27 (+2d) | 2014-08-19 18:57 → 2014-08-21 18:27 (+2d) |
| 157 | Pruebas de comunicación de interfaces y pruebas de funcionalidad | 2014-08-12 20:57 → 2014-08-14 20:27 (+2d) | 2014-08-19 18:57 → 2014-08-21 18:27 (+2d) |
| 158 | **Gestión del Proyecto** | 2014-08-19 18:57 → 2014-08-21 18:27 (+2d) | 2014-08-19 19:57 → 2014-08-21 19:27 (+2d) |

| ID | Task | Start | Finish | Complete |
| --- | --- | --- | --- | --- |
| 159 | Actualización de Riesgos | 2014-08-19 18:57 → 2014-08-21 18:27 (+2d) | 2014-08-19 19:57 → 2014-08-21 19:27 (+2d) |  |
| 160 | Revisión de planificacion (posible replanificación) | 2014-08-19 18:57 → 2014-08-21 18:27 (+2d) | 2014-08-19 19:57 → 2014-08-21 19:27 (+2d) |  |
| 161 | **Gestión de Configuración** | 2014-08-19 19:57 → 2014-08-21 19:27 (+2d) | 2014-08-20 17:57 → 2014-08-26 17:27 (+6d) |  |
| 162 | Versionado de todos los proyectos | 2014-08-19 19:57 → 2014-08-21 19:27 (+2d) | 2014-08-20 17:57 → 2014-08-26 17:27 (+6d) |  |
| 163 | Revisión de versionado de documentos modificados | 2014-08-19 19:57 → 2014-08-21 19:27 (+2d) | 2014-08-20 17:57 → 2014-08-26 17:27 (+6d) |  |
| 164 | Capacidad Operacional Inicial | 2014-08-20 17:57 → 2014-08-26 17:27 (+6d) | 2014-08-20 17:57 → 2014-08-26 17:27 (+6d) |  |
| 165 | **TRANSICIÓN** | 2014-08-20 17:57 → 2014-08-26 17:27 (+6d) | 2014-09-24 20:57 → 2014-09-30 20:27 (+6d) |  |
| 166 | **Iteración T1** | 2014-08-20 17:57 → 2014-08-26 17:27 (+6d) | 2014-09-24 20:57 → 2014-09-30 20:27 (+6d) |  |
| 167 | **Implementación** | 2014-08-20 17:57 → 2014-08-26 17:27 (+6d) | 2014-09-02 17:57 → 2014-09-04 17:27 (+2d) |  |
| 168 | Elaboracion de documentación para usuarios y videos tutoriales | 2014-08-20 17:57 → 2014-08-26 17:27 (+6d) | 2014-09-02 17:57 → 2014-09-04 17:27 (+2d) |  |
| 169 | **Despliegue** | 2014-09-02 17:57 → 2014-09-04 17:27 (+2d) | 2014-09-16 17:57 → 2014-09-18 17:27 (+2d) |  |
| 170 | Modelo de despliegue | 2014-09-02 17:57 → 2014-09-04 17:27 (+2d) | 2014-09-04 19:57 → 2014-09-10 19:27 (+6d) |  |
| 171 | Integración y puesta a punto del sistema | 2014-09-04 19:57 → 2014-09-10 19:27 (+6d) | 2014-09-16 17:57 → 2014-09-18 17:27 (+2d) |  |
| 172 | **Gestión del Proyecto** | 2014-09-16 17:57 → 2014-09-18 17:27 (+2d) | 2014-09-24 18:57 → 2014-09-30 18:27 (+6d) |  |
| 173 | Actualización de Riesgos | 2014-09-16 17:57 → 2014-09-18 17:27 (+2d) | 2014-09-16 18:57 → 2014-09-18 18:27 (+2d) |  |
| 174 | Revisión de planificacion (posible replanificación) | 2014-09-16 18:57 → 2014-09-18 18:27 (+2d) | 2014-09-16 19:57 → 2014-09-18 19:27 (+2d) |  |
| 175 | Análisis de resultados del proyecto | 2014-09-16 19:57 → 2014-09-18 19:27 (+2d) | 2014-09-24 18:57 → 2014-09-30 18:27 (+6d) |  |
| 176 | **Gestión de Configuración** | 2014-09-24 18:57 → 2014-09-30 18:27 (+6d) | 2014-09-24 20:57 → 2014-09-30 20:27 (+6d) |  |
| 177 | Versionado de todos los proyectos | 2014-09-24 18:57 → 2014-09-30 18:27 (+6d) | 2014-09-24 20:57 → 2014-09-30 20:27 (+6d) |  |
| 178 | Revisión de versionado de documentos modificados | 2014-09-24 18:57 → 2014-09-30 18:27 (+6d) | 2014-09-24 20:57 → 2014-09-30 20:27 (+6d) |  |
| 179 | Lanzamiento de producto | 2014-09-24 20:57 → 2014-09-30 20:27 (+6d) | 2014-09-24 20:57 → 2014-09-30 20:27 (+6d) |  |
| 180 | Fin de Proyecto | 2014-09-24 20:57 → 2014-09-30 20:27 (+6d) | 2014-09-24 20:57 → 2014-09-30 20:27 (+6d) |  |
| 181 | **Informe de avance mensual** |  |  | 15% → 23% |
| 184 | Informe de avance mensual 3 | 2013-10-30 09:00 A | 2013-10-30 13:00 A | 0% → 100% |

## Version 18 (data date 2014-03-28, saved 2014-03-28, file Informe6.mpp)

Note of the change: Informe 5 y 6 Completo

Last finish 2014-09-30 → 2014-09-11 (-19d). Complete tasks 24 → 62.

Removed: 194 Informe de avance mensual 13

Changed:

| ID | Task | Start | Finish | Duration | Complete | Total float | Other |
| --- | --- | --- | --- | --- | --- | --- | --- |
| 1 | **RestApp** |  | 2014-09-30 20:27 → 2014-09-11 18:57 (-19d) | 70.93d → 67.24d | 15% → 31% |  |  |
| 25 | **ELABORACIÓN** |  | 2014-03-27 19:27 → 2014-03-13 20:57 A (-14d) | 19.94d → 17.12d | 24% → 100% | 0d → none |  |
| 26 | **Iteración E1** |  | 2013-11-13 20:27 → 2013-11-14 17:27 A (+1d) | 8.06d → 8.19d | 60% → 100% | 0d → none |  |
| 36 | **Implementación** | 2013-10-30 18:27 A | 2013-11-12 18:27 → 2013-11-12 20:27 A | 2.5d → 2.75d | 0% → 100% | 0d → none |  |
| 37 | Desarrollo prototipos independientes de prueba | 2013-10-30 18:27 A | 2013-11-12 18:27 → 2013-11-12 20:27 A | 20h → 22h | 0% → 100% | 0d → none | baseline start 2013-10-15 09:00 → 2013-10-15 20:00 |
| 38 | **Gestión del Proyecto** | 2013-11-12 18:27 → 2013-11-12 20:27 A | 2013-11-12 20:27 → 2013-11-13 18:57 A (+1d) | 0.25d → 0.31d | 0% → 100% | 0d → none |  |
| 39 | Actualización y priorización de Riesgos | 2013-11-12 18:27 → 2013-11-12 20:27 A | 2013-11-12 19:27 → 2013-11-12 20:57 A | 1h → 0.5h | 0% → 100% | 0d → none |  |
| 40 | Refinación del Plan de Proyecto | 2013-11-12 19:27 → 2013-11-12 20:57 A | 2013-11-12 20:27 → 2013-11-13 18:57 A (+1d) | 1h → 2h | 0% → 100% | 0d → none |  |
| 41 | **Gestión de Configuración** | 2013-11-12 20:27 → 2013-11-13 18:57 A (+1d) | 2013-11-13 17:27 → 2013-11-13 19:27 A | 0.12d → 0.06d | 0% → 100% | 0d → none |  |
| 42 | Revisión de versionado de documentos modificados | 2013-11-12 20:27 → 2013-11-13 18:57 A (+1d) | 2013-11-13 17:27 → 2013-11-13 19:27 A | 1h → 0.5h | 0% → 100% | 0d → none |  |
| 43 | **Ambiente** | 2013-11-13 17:27 → 2013-11-13 19:27 A | 2013-11-13 20:27 → 2013-11-14 17:27 A (+1d) | 0.38d → 0.25d | 0% → 100% | 0d → none |  |
| 44 | Identificación de Tecnología | 2013-11-13 17:27 → 2013-11-13 19:27 A | 2013-11-13 20:27 → 2013-11-14 17:27 A (+1d) | 3h → 2h | 0% → 100% | 0d → none |  |
| 45 | **Iteración E2** | 2013-11-13 20:27 → 2013-11-14 17:27 A (+1d) | 2014-02-27 19:27 → 2014-02-27 17:27 A | 7.38d → 7d | 0% → 100% | 0d → none |  |
| 46 | **Modelo de Negocio** | 2013-11-13 20:27 → 2013-11-14 17:27 A (+1d) | 2013-11-19 17:27 → 2013-11-19 18:27 A |  | 0% → 100% | 0d → none |  |
| 47 | Refinación del Modelo de Negocio | 2013-11-13 20:27 → 2013-11-14 17:27 A (+1d) | 2013-11-19 17:27 → 2013-11-19 18:27 A |  | 0% → 100% | 0d → none |  |
| 48 | **Requerimientos** | 2013-11-19 17:27 → 2013-11-19 18:27 A | 2013-11-20 17:27 A | 0.5d → 0.38d | 0% → 100% | 0d → none |  |
| 49 | Validación de requerimientos | 2013-11-19 17:27 → 2013-11-19 18:27 A | 2013-11-19 20:27 → 2013-11-20 17:27 A (+1d) |  | 0% → 100% | 0.12d → none |  |
| 50 | Mapeo de Requerimientos a Casos de Uso | 2013-11-19 17:27 → 2013-11-19 18:27 A | 2013-11-20 17:27 → 2013-11-19 20:27 A (-1d) | 4h → 2h | 0% → 100% | 0d → none |  |
| 51 | **Análisis/Diseño** | 2013-11-20 17:27 A | 2014-02-05 17:27 → 2014-02-05 19:27 A | 4.5d → 4.75d | 0% → 100% | 0d → none |  |
| 52 | Definición Inicial de diagrama de Clases | 2013-11-20 17:27 A | 2013-11-26 19:27 → 2013-11-26 20:27 A | 10h → 11h | 0% → 100% | 0d → none |  |
| 53 | Definición inicial del Modelo de Datos | 2013-11-26 19:27 → 2013-11-26 20:27 A | 2013-11-28 19:27 → 2013-12-10 17:27 A (+12d) | 8h → 9h | 0% → 100% | 0d → none |  |
| 54 | Definición inicial de Diagrama de Actividades | 2013-11-28 19:27 → 2013-12-10 17:27 A (+12d) | 2013-12-11 19:27 → 2013-12-12 20:27 A (+1d) | 8h → 11h | 0% → 100% | 0d → none |  |
| 55 | Definición inicial de Diagramas de Secuencia | 2013-12-11 19:27 → 2013-12-12 20:27 A (+1d) | 2014-02-05 17:27 → 2014-02-05 19:27 A | 10h → 7h | 0% → 100% | 0d → none |  |
| 56 | **Implementación** | 2014-02-05 17:27 → 2014-02-05 19:27 A | 2014-02-06 19:27 A | 0.75d → 0.5d | 0% → 100% | 0d → none |  |
| 57 | Mejoramientos de prototipos | 2014-02-05 17:27 → 2014-02-05 19:27 A | 2014-02-06 19:27 A | 6h → 4h | 0% → 100% | 0d → none |  |
| 58 | **Gestión del Proyecto** | 2014-02-06 19:27 A | 2014-02-26 17:27 → 2014-02-06 20:27 A (-20d) | 0.25d → 0.12d | 0% → 100% | 0d → none |  |
| 59 | Validación del Plan de proyecto | 2014-02-06 19:27 A | 2014-02-26 17:27 → 2014-02-06 20:27 A (-20d) | 2h → 1h | 0% → 100% | 0d → none |  |
| 60 | **Gestión de Configuración** | 2014-02-26 17:27 → 2014-02-06 20:27 A (-20d) | 2014-02-26 18:27 → 2014-02-26 17:27 A |  | 0% → 100% | 0d → none |  |
| 61 | Versionado de los prototipos | 2014-02-26 17:27 → 2014-02-06 20:27 A (-20d) | 2014-02-26 18:27 → 2014-02-26 17:27 A |  | 0% → 100% | 0d → none |  |
| 62 | Revisión de versionado de documentos modificados | 2014-02-26 17:27 → 2014-02-06 20:27 A (-20d) | 2014-02-26 18:27 → 2014-02-06 20:57 A (-20d) | 1h → 0.5h | 0% → 100% | 0d → none |  |
| 63 | **Ambiente** | 2014-02-26 18:27 → 2014-02-26 17:27 A | 2014-02-27 19:27 → 2014-02-27 17:27 A | 0.62d → 0.5d | 0% → 100% | 0d → none |  |
| 64 | Preparación del ambiente de desarrollo | 2014-02-26 18:27 → 2014-02-26 17:27 A | 2014-02-27 19:27 → 2014-02-27 17:27 A | 5h → 4h | 0% → 100% | 0d → none |  |
| 65 | **Iteración E3** | 2014-02-27 19:27 → 2014-02-27 17:27 A | 2014-03-27 19:27 → 2014-03-13 20:57 A (-14d) | 4.5d → 1.94d | 0% → 100% | 0d → none |  |
| 66 | **Requerimientos** | 2014-02-27 19:27 → 2014-02-27 17:27 A | 2014-03-11 18:27 → 2014-02-27 18:27 A (-12d) | 0.38d → 0.12d | 0% → 100% | 0d → none |  |
| 67 | Validacion de Mapeo de Requerimientos a Casos de Uso | 2014-02-27 19:27 → 2014-02-27 17:27 A | 2014-03-11 18:27 → 2014-02-27 18:27 A (-12d) | 3h → 1h | 0% → 100% | 0d → none |  |
| 68 | **Análisis/Diseño** | 2014-03-11 18:27 → 2014-02-27 18:27 A (-12d) | 2014-03-20 20:27 → 2014-03-12 19:27 A (-8d) | 2.75d → 1.12d | 0% → 100% | 0d → none |  |
| 69 | Refinación de Diagrama de Casos de Uso | 2014-03-11 18:27 → 2014-02-27 18:27 A (-12d) | 2014-03-12 20:27 → 2014-02-27 20:27 A (-13d) | 6h → 2h | 0% → 100% | 0d → none |  |
| 70 | Refinación de Diagrama de Clases | 2014-03-12 20:27 → 2014-02-27 20:27 A (-13d) | 2014-03-18 18:27 → 2014-03-11 19:27 A (-7d) | 6h → 3h | 0% → 100% | 0d → none |  |
| 71 | Refinación del Modelo de Datos | 2014-03-18 18:27 → 2014-03-11 19:27 A (-7d) | 2014-03-19 18:27 → 2014-03-12 17:27 A (-7d) | 4h → 2h | 0% → 100% | 0d → none |  |
| 72 | Descripción de casos de uso mas importantes | 2014-03-19 18:27 → 2014-03-12 17:27 A (-7d) | 2014-03-20 20:27 → 2014-03-12 19:27 A (-8d) | 6h → 2h | 0% → 100% | 0d → none |  |
| 73 | **Implementación** | 2014-03-20 20:27 → 2014-03-12 19:27 A (-8d) | 2014-03-26 20:27 → 2014-03-13 18:27 A (-13d) | 1d → 0.38d | 0% → 100% | 0d → none |  |
| 74 | Definición de interfaces de comunicación entre plataformas | 2014-03-20 20:27 → 2014-03-12 19:27 A (-8d) | 2014-03-26 20:27 → 2014-03-13 18:27 A (-13d) | 8h → 3h | 0% → 100% | 0d → none |  |
| 75 | **Gestión del Proyecto** | 2014-03-26 20:27 → 2014-03-13 18:27 A (-13d) | 2014-03-27 18:27 → 2014-03-13 20:27 A (-14d) |  | 0% → 100% | 0d → none |  |
| 76 | Actualización de planes de prevención y contigencia para nuevos Riesgos | 2014-03-26 20:27 → 2014-03-13 18:27 A (-13d) | 2014-03-27 18:27 → 2014-03-13 20:27 A (-14d) |  | 0% → 100% | 0d → none |  |
| 77 | **Gestión de Configuración** | 2014-03-27 18:27 → 2014-03-13 20:27 A (-14d) | 2014-03-27 19:27 → 2014-03-13 20:57 A (-14d) | 0.12d → 0.06d | 0% → 100% | 0d → none |  |
| 78 | Revisión de versionado de documentos modificados | 2014-03-27 18:27 → 2014-03-13 20:27 A (-14d) | 2014-03-27 19:27 → 2014-03-13 20:57 A (-14d) | 1h → 0.5h | 0% → 100% | 0d → none |  |
| 79 | Arquitectura del ciclo de vida | 2014-03-27 19:27 → 2014-03-13 20:57 A (-14d) | 2014-03-27 19:27 → 2014-03-13 20:57 A (-14d) |  | 0% → 100% | 0d → none |  |
| 80 | **CONSTRUCCIÓN** | 2014-03-27 19:27 → 2014-03-13 20:57 A (-14d) | 2014-08-26 17:27 → 2014-08-06 19:57 (-20d) | 31.75d → 30.88d | 0% → 4% |  |  |
| 81 | **Iteración C1** | 2014-03-27 19:27 → 2014-03-13 20:57 A (-14d) | 2014-04-15 19:27 → 2014-03-27 17:57 A (-19d) | 3.5d → 2.62d | 0% → 100% | 0d → none |  |
| 82 | **Análisis/Diseño** | 2014-03-27 19:27 → 2014-03-13 20:57 A (-14d) | 2014-04-02 19:27 → 2014-03-18 20:57 A (-15d) | 1d → 0.5d | 0% → 100% | 0d → none |  |
| 83 | Refinación de Diagramas de Actividad | 2014-03-27 19:27 → 2014-03-13 20:57 A (-14d) | 2014-04-01 19:27 → 2014-03-18 18:57 A (-14d) | 4h → 2h | 0% → 100% | 0d → none |  |
| 84 | Refinación de Diagramas de Secuencia | 2014-04-01 19:27 → 2014-03-18 18:57 A (-14d) | 2014-04-02 19:27 → 2014-03-18 20:57 A (-15d) | 4h → 2h | 0% → 100% | 0d → none |  |
| 85 | **Implementación** | 2014-04-02 19:27 → 2014-03-18 20:57 A (-15d) | 2014-04-10 18:27 → 2014-03-25 19:57 A (-16d) | 1.88d → 1.38d | 0% → 100% | 0d → none |  |
| 86 | Construcción de Base de Datos | 2014-04-02 19:27 → 2014-03-18 20:57 A (-15d) | 2014-04-08 19:27 → 2014-03-20 18:57 A (-19d) | 8h → 6h | 0% → 100% | 0d → none |  |
| 87 | Definición de Interfaz de Usuario | 2014-04-08 19:27 → 2014-03-20 18:57 A (-19d) | 2014-04-10 18:27 → 2014-03-25 19:57 A (-16d) | 7h → 5h | 0% → 100% | 0d → none |  |
| 88 | **Gestión del Proyecto** | 2014-04-10 18:27 → 2014-03-25 19:57 A (-16d) | 2014-04-15 18:27 → 2014-03-26 20:57 A (-20d) | 0.5d → 0.62d | 0% → 100% | 0d → none |  |
| 89 | Actualización de Riesgos | 2014-04-10 18:27 → 2014-03-25 19:57 A (-16d) | 2014-04-10 19:27 → 2014-03-25 20:57 A (-16d) |  | 0% → 100% | 0d → none |  |
| 90 | Revisión de planificacion (posible replanificación) | 2014-04-10 19:27 → 2014-03-25 20:57 A (-16d) | 2014-04-15 18:27 → 2014-03-26 20:57 A (-20d) | 3h → 4h | 0% → 100% | 0d → none |  |
| 91 | **Gestión de Configuración** | 2014-04-15 18:27 → 2014-03-26 20:57 A (-20d) | 2014-04-15 19:27 → 2014-03-27 17:57 A (-19d) |  | 0% → 100% | 0d → none |  |
| 92 | Versionado de prototipos | 2014-04-15 18:27 → 2014-03-26 20:57 A (-20d) | 2014-04-15 19:27 → 2014-03-27 17:57 A (-19d) |  | 0% → 100% | 0d → none |  |
| 93 | Revisión de versionado de documentos modificados | 2014-04-15 18:27 → 2014-03-26 20:57 A (-20d) | 2014-04-15 19:27 → 2014-03-27 17:57 A (-19d) |  | 0% → 100% | 0d → none |  |
| 94 | **Iteración C2** | 2014-04-15 19:27 → 2014-03-27 17:57 (-19d) | 2014-05-07 19:27 → 2014-04-22 17:57 (-15d) |  |  |  |  |
| 95 | **Análisis/Diseño** | 2014-04-15 19:27 → 2014-03-27 17:57 (-19d) | 2014-04-22 20:27 → 2014-04-03 18:57 (-19d) |  |  |  |  |
| 96 | Definición inicial del Modelo de componentes | 2014-04-15 19:27 → 2014-03-27 17:57 (-19d) | 2014-04-17 20:27 → 2014-04-02 18:57 (-15d) |  |  |  |  |
| 97 | Refinación de Diagramas de clases (agregado de operaciones) | 2014-04-17 20:27 → 2014-04-02 18:57 (-15d) | 2014-04-22 20:27 → 2014-04-03 18:57 (-19d) |  |  |  |  |
| 98 | **Implementación** | 2014-04-22 20:27 → 2014-04-03 18:57 (-19d) | 2014-05-01 19:27 → 2014-04-16 17:57 (-15d) |  |  |  |  |
| 99 | Codificación de Interfaz de usuario (FrontEnd) | 2014-04-22 20:27 → 2014-04-03 18:57 (-19d) | 2014-05-01 18:27 → 2014-04-15 20:57 (-16d) |  |  |  |  |
| 100 | Codificación de Interfaz de usuario (BackEnd) | 2014-04-22 20:27 → 2014-04-03 18:57 (-19d) | 2014-05-01 19:27 → 2014-04-16 17:57 (-15d) |  |  |  |  |
| 101 | Codificación de Interfaz de usuario (Android) | 2014-04-22 20:27 → 2014-04-03 18:57 (-19d) | 2014-05-01 19:27 → 2014-04-16 17:57 (-15d) |  |  |  |  |
| 102 | **Gestión del Proyecto** | 2014-05-01 19:27 → 2014-04-16 17:57 (-15d) | 2014-05-07 17:27 → 2014-04-17 19:57 (-20d) |  |  |  |  |

| ID | Task | Start | Finish |
| --- | --- | --- | --- |
| 103 | Actualización de Riesgos | 2014-05-01 19:27 → 2014-04-16 17:57 (-15d) | 2014-05-06 18:27 → 2014-04-16 20:57 (-20d) |
| 104 | Revisión de planificacion (posible replanificación) | 2014-05-06 18:27 → 2014-04-16 20:57 (-20d) | 2014-05-07 17:27 → 2014-04-17 19:57 (-20d) |
| 105 | **Gestión de Configuración** | 2014-05-07 17:27 → 2014-04-17 19:57 (-20d) | 2014-05-07 19:27 → 2014-04-22 17:57 (-15d) |
| 106 | Versionado de interfaz de usuario | 2014-05-07 17:27 → 2014-04-17 19:57 (-20d) | 2014-05-07 18:27 → 2014-04-17 20:57 (-20d) |
| 107 | Revisión de versionado de documentos modificados | 2014-05-07 18:27 → 2014-04-17 20:57 (-20d) | 2014-05-07 19:27 → 2014-04-22 17:57 (-15d) |
| 108 | **Iteración C3** | 2014-05-07 19:27 → 2014-04-22 17:57 (-15d) | 2014-05-22 19:27 → 2014-05-07 17:57 (-15d) |
| 109 | **Análisis/Diseño** | 2014-05-07 19:27 → 2014-04-22 17:57 (-15d) | 2014-05-08 18:27 → 2014-04-22 20:57 (-16d) |
| 110 | Refinación del Modelo de componentes | 2014-05-07 19:27 → 2014-04-22 17:57 (-15d) | 2014-05-08 18:27 → 2014-04-22 20:57 (-16d) |
| 111 | **Implementación** | 2014-05-08 18:27 → 2014-04-22 20:57 (-16d) | 2014-05-21 19:27 → 2014-05-06 17:57 (-15d) |
| 112 | Codificacion de logeo de usuario (FrontEnd) | 2014-05-08 18:27 → 2014-04-22 20:57 (-16d) | 2014-05-21 19:27 → 2014-05-06 17:57 (-15d) |
| 113 | Codificación de seguridad [Roles y Usuario] (BackEnd) | 2014-05-08 18:27 → 2014-04-22 20:57 (-16d) | 2014-05-21 18:27 → 2014-05-01 20:57 (-20d) |
| 114 | Codificación de Local Storage (Android) | 2014-05-08 18:27 → 2014-04-22 20:57 (-16d) | 2014-05-21 18:27 → 2014-05-01 20:57 (-20d) |
| 115 | **Gestión del Proyecto** | 2014-05-21 19:27 → 2014-05-06 17:57 (-15d) | 2014-05-22 18:27 → 2014-05-06 20:57 (-16d) |
| 116 | Actualización de Riesgos | 2014-05-21 19:27 → 2014-05-06 17:57 (-15d) | 2014-05-22 18:27 → 2014-05-06 20:57 (-16d) |
| 117 | Revisión de planificacion (posible replanificación) | 2014-05-21 19:27 → 2014-05-06 17:57 (-15d) | 2014-05-22 18:27 → 2014-05-06 20:57 (-16d) |
| 118 | **Gestión de Configuración** | 2014-05-22 18:27 → 2014-05-06 20:57 (-16d) | 2014-05-22 19:27 → 2014-05-07 17:57 (-15d) |
| 119 | Versionado de todos los proyectos | 2014-05-22 18:27 → 2014-05-06 20:57 (-16d) | 2014-05-22 19:27 → 2014-05-07 17:57 (-15d) |
| 120 | Revisión de versionado de documentos modificados | 2014-05-22 18:27 → 2014-05-06 20:57 (-16d) | 2014-05-22 19:27 → 2014-05-07 17:57 (-15d) |
| 121 | **Iteración C4** | 2014-05-22 19:27 → 2014-05-07 17:57 (-15d) | 2014-06-12 18:27 → 2014-05-27 20:57 (-16d) |
| 122 | **Análisis/Diseño** | 2014-05-22 19:27 → 2014-05-07 17:57 (-15d) | 2014-05-27 19:27 → 2014-05-08 17:57 (-19d) |
| 123 | Refinación del Modelo de Datos | 2014-05-22 19:27 → 2014-05-07 17:57 (-15d) | 2014-05-27 19:27 → 2014-05-08 17:57 (-19d) |
| 124 | **Implementación** | 2014-05-27 19:27 → 2014-05-08 17:57 (-19d) | 2014-06-11 19:27 → 2014-05-27 17:57 (-15d) |
| 125 | Codificación de Gestión de reservas online (FrontEnd) | 2014-05-27 19:27 → 2014-05-08 17:57 (-19d) | 2014-06-11 19:27 → 2014-05-27 17:57 (-15d) |
| 126 | Codificación de ABM principales (BackEnd) | 2014-05-27 19:27 → 2014-05-08 17:57 (-19d) | 2014-06-11 17:27 → 2014-05-22 19:57 (-20d) |
| 127 | Codificación de ABM principales (Android) | 2014-05-27 19:27 → 2014-05-08 17:57 (-19d) | 2014-06-11 19:27 → 2014-05-27 17:57 (-15d) |
| 128 | **Gestión del Proyecto** | 2014-06-11 19:27 → 2014-05-27 17:57 (-15d) | 2014-06-12 17:27 → 2014-05-27 19:57 (-16d) |
| 129 | Actualización de Riesgos | 2014-06-11 19:27 → 2014-05-27 17:57 (-15d) | 2014-06-12 17:27 → 2014-05-27 19:57 (-16d) |
| 130 | Revisión de planificacion (posible replanificación) | 2014-06-11 19:27 → 2014-05-27 17:57 (-15d) | 2014-06-11 20:27 → 2014-05-27 18:57 (-15d) |
| 131 | **Gestión de Configuración** | 2014-06-12 17:27 → 2014-05-27 19:57 (-16d) | 2014-06-12 18:27 → 2014-05-27 20:57 (-16d) |
| 132 | Versionado de todos los proyectos | 2014-06-12 17:27 → 2014-05-27 19:57 (-16d) | 2014-06-12 18:27 → 2014-05-27 20:57 (-16d) |
| 133 | Revisión de versionado de documentos modificados | 2014-06-12 17:27 → 2014-05-27 19:57 (-16d) | 2014-06-12 18:27 → 2014-05-27 20:57 (-16d) |
| 134 | **Iteración C5** | 2014-06-12 18:27 → 2014-05-27 20:57 (-16d) | 2014-07-22 18:27 → 2014-07-02 20:57 (-20d) |
| 135 | **Análisis/Diseño** | 2014-06-12 18:27 → 2014-05-27 20:57 (-16d) | 2014-06-17 20:27 → 2014-05-29 18:57 (-19d) |
| 136 | Revisión de Diagramas y Modelos de Análisis/Diseño | 2014-06-12 18:27 → 2014-05-27 20:57 (-16d) | 2014-06-17 20:27 → 2014-05-29 18:57 (-19d) |
| 137 | **Implementación** | 2014-06-17 20:27 → 2014-05-29 18:57 (-19d) | 2014-07-15 17:27 → 2014-06-25 19:57 (-20d) |
| 138 | Codificación de Calculos de tiempos de espera (FrontEnd) | 2014-06-17 20:27 → 2014-05-29 18:57 (-19d) | 2014-07-10 19:27 → 2014-06-25 17:57 (-15d) |
| 139 | Codificación de Funciones básicas (BackEnd) | 2014-06-17 20:27 → 2014-05-29 18:57 (-19d) | 2014-07-10 19:27 → 2014-06-25 17:57 (-15d) |
| 140 | Codificación de visualizador de ordenes (Android) | 2014-06-17 20:27 → 2014-05-29 18:57 (-19d) | 2014-07-15 17:27 → 2014-06-25 19:57 (-20d) |
| 141 | **Pruebas** | 2014-07-15 17:27 → 2014-06-25 19:57 (-20d) | 2014-07-17 19:27 → 2014-07-02 17:57 (-15d) |
| 142 | Pruebas de Funcionalidad (para las 3 aplicaciones) | 2014-07-15 17:27 → 2014-06-25 19:57 (-20d) | 2014-07-17 19:27 → 2014-07-02 17:57 (-15d) |
| 143 | **Gestión del Proyecto** | 2014-07-17 19:27 → 2014-07-02 17:57 (-15d) | 2014-07-22 17:27 → 2014-07-02 19:57 (-20d) |
| 144 | Actualización de Riesgos | 2014-07-17 19:27 → 2014-07-02 17:57 (-15d) | 2014-07-22 17:27 → 2014-07-02 19:57 (-20d) |
| 145 | Revisión de planificacion (posible replanificación) | 2014-07-17 19:27 → 2014-07-02 17:57 (-15d) | 2014-07-17 20:27 → 2014-07-02 18:57 (-15d) |
| 146 | **Gestión de Configuración** | 2014-07-22 17:27 → 2014-07-02 19:57 (-20d) | 2014-07-22 18:27 → 2014-07-02 20:57 (-20d) |
| 147 | Versionado de todos los proyectos | 2014-07-22 17:27 → 2014-07-02 19:57 (-20d) | 2014-07-22 18:27 → 2014-07-02 20:57 (-20d) |
| 148 | Revisión de versionado de documentos modificados | 2014-07-22 17:27 → 2014-07-02 19:57 (-20d) | 2014-07-22 18:27 → 2014-07-02 20:57 (-20d) |
| 149 | **Iteración C6** | 2014-07-22 18:27 → 2014-07-02 20:57 (-20d) | 2014-08-26 17:27 → 2014-08-06 19:57 (-20d) |
| 150 | **Análisis/Diseño** | 2014-07-22 18:27 → 2014-07-02 20:57 (-20d) | 2014-07-24 18:27 → 2014-07-08 20:57 (-16d) |
| 151 | Revisión de Diagramas y Modelos de Análisis/Diseño | 2014-07-22 18:27 → 2014-07-02 20:57 (-20d) | 2014-07-24 18:27 → 2014-07-08 20:57 (-16d) |
| 152 | **Implementación** | 2014-07-24 18:27 → 2014-07-08 20:57 (-16d) | 2014-08-14 20:27 → 2014-07-30 18:57 (-15d) |
| 153 | Codificación de Calculos de tiempos de espera (FrontEnd) | 2014-07-24 18:27 → 2014-07-08 20:57 (-16d) | 2014-08-14 20:27 → 2014-07-30 18:57 (-15d) |
| 154 | Codificación de visualizador de Ordenes (BackEnd) | 2014-07-24 18:27 → 2014-07-08 20:57 (-16d) | 2014-08-14 18:27 → 2014-07-29 20:57 (-16d) |
| 155 | Codificación de personalización gráfica (Android) | 2014-07-24 18:27 → 2014-07-08 20:57 (-16d) | 2014-08-14 20:27 → 2014-07-30 18:57 (-15d) |
| 156 | **Pruebas** | 2014-08-14 20:27 → 2014-07-30 18:57 (-15d) | 2014-08-21 18:27 → 2014-08-05 20:57 (-16d) |
| 157 | Pruebas de comunicación de interfaces y pruebas de funcionalidad | 2014-08-14 20:27 → 2014-07-30 18:57 (-15d) | 2014-08-21 18:27 → 2014-08-05 20:57 (-16d) |
| 158 | **Gestión del Proyecto** | 2014-08-21 18:27 → 2014-08-05 20:57 (-16d) | 2014-08-21 19:27 → 2014-08-06 17:57 (-15d) |
| 159 | Actualización de Riesgos | 2014-08-21 18:27 → 2014-08-05 20:57 (-16d) | 2014-08-21 19:27 → 2014-08-06 17:57 (-15d) |
| 160 | Revisión de planificacion (posible replanificación) | 2014-08-21 18:27 → 2014-08-05 20:57 (-16d) | 2014-08-21 19:27 → 2014-08-06 17:57 (-15d) |
| 161 | **Gestión de Configuración** | 2014-08-21 19:27 → 2014-08-06 17:57 (-15d) | 2014-08-26 17:27 → 2014-08-06 19:57 (-20d) |
| 162 | Versionado de todos los proyectos | 2014-08-21 19:27 → 2014-08-06 17:57 (-15d) | 2014-08-26 17:27 → 2014-08-06 19:57 (-20d) |
| 163 | Revisión de versionado de documentos modificados | 2014-08-21 19:27 → 2014-08-06 17:57 (-15d) | 2014-08-26 17:27 → 2014-08-06 19:57 (-20d) |
| 164 | Capacidad Operacional Inicial | 2014-08-26 17:27 → 2014-08-06 19:57 (-20d) | 2014-08-26 17:27 → 2014-08-06 19:57 (-20d) |
| 165 | **TRANSICIÓN** | 2014-08-26 17:27 → 2014-08-06 19:57 (-20d) | 2014-09-30 20:27 → 2014-09-11 18:57 (-19d) |
| 166 | **Iteración T1** | 2014-08-26 17:27 → 2014-08-06 19:57 (-20d) | 2014-09-30 20:27 → 2014-09-11 18:57 (-19d) |
| 167 | **Implementación** | 2014-08-26 17:27 → 2014-08-06 19:57 (-20d) | 2014-09-04 17:27 → 2014-08-19 19:57 (-16d) |
| 168 | Elaboracion de documentación para usuarios y videos tutoriales | 2014-08-26 17:27 → 2014-08-06 19:57 (-20d) | 2014-09-04 17:27 → 2014-08-19 19:57 (-16d) |
| 169 | **Despliegue** | 2014-09-04 17:27 → 2014-08-19 19:57 (-16d) | 2014-09-18 17:27 → 2014-09-02 19:57 (-16d) |
| 170 | Modelo de despliegue | 2014-09-04 17:27 → 2014-08-19 19:57 (-16d) | 2014-09-10 19:27 → 2014-08-26 17:57 (-15d) |
| 171 | Integración y puesta a punto del sistema | 2014-09-10 19:27 → 2014-08-26 17:57 (-15d) | 2014-09-18 17:27 → 2014-09-02 19:57 (-16d) |
| 172 | **Gestión del Proyecto** | 2014-09-18 17:27 → 2014-09-02 19:57 (-16d) | 2014-09-30 18:27 → 2014-09-10 20:57 (-20d) |

| ID | Task | Start | Finish | Complete | Other |
| --- | --- | --- | --- | --- | --- |
| 173 | Actualización de Riesgos | 2014-09-18 17:27 → 2014-09-02 19:57 (-16d) | 2014-09-18 18:27 → 2014-09-02 20:57 (-16d) |  |  |
| 174 | Revisión de planificacion (posible replanificación) | 2014-09-18 18:27 → 2014-09-02 20:57 (-16d) | 2014-09-18 19:27 → 2014-09-03 17:57 (-15d) |  |  |
| 175 | Análisis de resultados del proyecto | 2014-09-18 19:27 → 2014-09-03 17:57 (-15d) | 2014-09-30 18:27 → 2014-09-10 20:57 (-20d) |  |  |
| 176 | **Gestión de Configuración** | 2014-09-30 18:27 → 2014-09-10 20:57 (-20d) | 2014-09-30 20:27 → 2014-09-11 18:57 (-19d) |  |  |
| 177 | Versionado de todos los proyectos | 2014-09-30 18:27 → 2014-09-10 20:57 (-20d) | 2014-09-30 20:27 → 2014-09-11 18:57 (-19d) |  |  |
| 178 | Revisión de versionado de documentos modificados | 2014-09-30 18:27 → 2014-09-10 20:57 (-20d) | 2014-09-30 20:27 → 2014-09-11 18:57 (-19d) |  |  |
| 179 | Lanzamiento de producto | 2014-09-30 20:27 → 2014-09-11 18:57 (-19d) | 2014-09-30 20:27 → 2014-09-11 18:57 (-19d) |  |  |
| 180 | Fin de Proyecto | 2014-09-30 20:27 → 2014-09-11 18:57 (-19d) | 2014-09-30 20:27 → 2014-09-11 18:57 (-19d) |  |  |
| 181 | **Informe de avance mensual** |  |  | 23% → 58% |  |
| 185 | Informe de avance mensual 4 | 2013-11-27 09:00 → 2013-12-10 09:00 A (+13d) | 2013-11-27 13:00 → 2013-12-10 13:00 A (+13d) | 0% → 100% | constraint start no earlier than 2013-11-27 09:00 → start no earlier than 2013-12-10 09:00 |
| 186 | Informe de avance mensual 5 | 2013-12-25 09:00 → 2014-02-27 09:00 A (+64d) | 2013-12-25 13:00 → 2014-02-27 13:00 A (+64d) | 0% → 100% | constraint start no earlier than 2013-12-25 09:00 → start no earlier than 2014-02-27 09:00 |
| 187 | Informe de avance mensual 6 | 2014-01-29 09:00 → 2014-03-27 09:00 A (+57d) | 2014-01-29 13:00 → 2014-03-27 13:00 A (+57d) | 0% → 100% | constraint start no earlier than 2014-01-29 09:00 → start no earlier than 2014-03-27 09:00 |
| 188 | Informe de avance mensual 7 | 2014-02-26 09:00 → 2014-03-26 09:00 A (+28d) | 2014-02-26 13:00 → 2014-03-26 13:00 A (+28d) | 0% → 100% | constraint start no earlier than 2014-02-26 09:00 → start no earlier than 2014-03-26 09:00; baseline start 2014-02-26 09:00 → 2014-03-26 09:00; baseline finish 2014-02-26 13:00 → 2014-03-26 13:00 |
| 189 | Informe de avance mensual 8 | 2014-03-26 09:00 → 2014-04-30 09:00 (+35d) | 2014-03-26 13:00 → 2014-04-30 13:00 (+35d) |  | constraint start no earlier than 2014-03-26 09:00 → start no earlier than 2014-04-30 09:00; baseline start 2014-03-26 09:00 → 2014-04-30 09:00; baseline finish 2014-03-26 13:00 → 2014-04-30 13:00 |
| 190 | Informe de avance mensual 9 | 2014-04-30 09:00 → 2014-05-28 09:00 (+28d) | 2014-04-30 13:00 → 2014-05-28 13:00 (+28d) |  | constraint start no earlier than 2014-04-30 09:00 → start no earlier than 2014-05-28 09:00; baseline start 2014-04-30 09:00 → 2014-05-28 09:00; baseline finish 2014-04-30 13:00 → 2014-05-28 13:00 |
| 191 | Informe de avance mensual 10 | 2014-05-28 09:00 → 2014-06-25 09:00 (+28d) | 2014-05-28 13:00 → 2014-06-25 13:00 (+28d) |  | constraint start no earlier than 2014-05-28 09:00 → start no earlier than 2014-06-25 09:00; baseline start 2014-05-28 09:00 → 2014-06-25 09:00; baseline finish 2014-05-28 13:00 → 2014-06-25 13:00 |
| 192 | Informe de avance mensual 11 | 2014-06-25 09:00 → 2014-07-30 09:00 (+35d) | 2014-06-25 13:00 → 2014-07-30 13:00 (+35d) |  | constraint start no earlier than 2014-06-25 09:00 → start no earlier than 2014-07-30 09:00; baseline start 2014-06-25 09:00 → 2014-07-30 09:00; baseline finish 2014-06-25 13:00 → 2014-07-30 13:00 |
| 193 | Informe de avance mensual 12 | 2014-07-30 09:00 → 2014-08-27 09:00 (+28d) | 2014-07-30 13:00 → 2014-08-27 13:00 (+28d) |  | constraint start no earlier than 2014-07-30 09:00 → start no earlier than 2014-08-27 09:00; baseline start 2014-07-30 09:00 → 2014-08-27 09:00; baseline finish 2014-07-30 13:00 → 2014-08-27 13:00 |

## Version 19 (data date 2014-02-27, saved 2014-03-28, file Informe5.mpp)

Note of the change: Informe 5 y 6 Completo

Last finish 2014-09-11 → 2014-09-30 (+19d). Complete tasks 62 → 43.

Removed: 193 Informe de avance mensual 12

Changed:

| ID | Task | Start | Finish | Duration | Complete | Total float |
| --- | --- | --- | --- | --- | --- | --- |
| 1 | **RestApp** |  | 2014-09-11 18:57 → 2014-09-30 18:27 (+19d) | 67.24d → 70.68d | 31% → 26% |  |
| 25 | **ELABORACIÓN** |  | 2014-03-13 20:57 A → 2014-03-27 17:27 (+14d) | 17.12d → 19.69d | 100% → 78% | none → 0d |
| 65 | **Iteración E3** | 2014-02-27 17:27 A → 2014-02-27 17:27 | 2014-03-13 20:57 A → 2014-03-27 17:27 (+14d) | 1.94d → 4.5d | 100% → 0% | none → 0d |
| 66 | **Requerimientos** | 2014-02-27 17:27 A → 2014-02-27 17:27 | 2014-02-27 18:27 A → 2014-02-27 20:27 | 0.12d → 0.38d | 100% → 0% | none → 0d |
| 67 | Validacion de Mapeo de Requerimientos a Casos de Uso | 2014-02-27 17:27 A → 2014-02-27 17:27 | 2014-02-27 18:27 A → 2014-02-27 20:27 | 1h → 3h | 100% → 0% | none → 0d |
| 68 | **Análisis/Diseño** | 2014-02-27 18:27 A → 2014-02-27 20:27 | 2014-03-12 19:27 A → 2014-03-20 18:27 (+8d) | 1.12d → 2.75d | 100% → 0% | none → 0d |
| 69 | Refinación de Diagrama de Casos de Uso | 2014-02-27 18:27 A → 2014-02-27 20:27 | 2014-02-27 20:27 A → 2014-03-12 18:27 (+13d) | 2h → 6h | 100% → 0% | none → 0d |
| 70 | Refinación de Diagrama de Clases | 2014-02-27 20:27 A → 2014-03-12 18:27 (+13d) | 2014-03-11 19:27 A → 2014-03-13 20:27 (+2d) | 3h → 6h | 100% → 0% | none → 0d |
| 71 | Refinación del Modelo de Datos | 2014-03-11 19:27 A → 2014-03-13 20:27 (+2d) | 2014-03-12 17:27 A → 2014-03-18 20:27 (+6d) | 2h → 4h | 100% → 0% | none → 0d |
| 72 | Descripción de casos de uso mas importantes | 2014-03-12 17:27 A → 2014-03-18 20:27 (+6d) | 2014-03-12 19:27 A → 2014-03-20 18:27 (+8d) | 2h → 6h | 100% → 0% | none → 0d |
| 73 | **Implementación** | 2014-03-12 19:27 A → 2014-03-20 18:27 (+8d) | 2014-03-13 18:27 A → 2014-03-26 18:27 (+13d) | 0.38d → 1d | 100% → 0% | none → 0d |
| 74 | Definición de interfaces de comunicación entre plataformas | 2014-03-12 19:27 A → 2014-03-20 18:27 (+8d) | 2014-03-13 18:27 A → 2014-03-26 18:27 (+13d) | 3h → 8h | 100% → 0% | none → 0d |
| 75 | **Gestión del Proyecto** | 2014-03-13 18:27 A → 2014-03-26 18:27 (+13d) | 2014-03-13 20:27 A → 2014-03-26 20:27 (+13d) |  | 100% → 0% | none → 0d |
| 76 | Actualización de planes de prevención y contigencia para nuevos Riesgos | 2014-03-13 18:27 A → 2014-03-26 18:27 (+13d) | 2014-03-13 20:27 A → 2014-03-26 20:27 (+13d) |  | 100% → 0% | none → 0d |
| 77 | **Gestión de Configuración** | 2014-03-13 20:27 A → 2014-03-26 20:27 (+13d) | 2014-03-13 20:57 A → 2014-03-27 17:27 (+14d) | 0.06d → 0.12d | 100% → 0% | none → 0d |
| 78 | Revisión de versionado de documentos modificados | 2014-03-13 20:27 A → 2014-03-26 20:27 (+13d) | 2014-03-13 20:57 A → 2014-03-27 17:27 (+14d) | 0.5h → 1h | 100% → 0% | none → 0d |
| 79 | Arquitectura del ciclo de vida | 2014-03-13 20:57 A → 2014-03-27 17:27 (+14d) | 2014-03-13 20:57 A → 2014-03-27 17:27 (+14d) |  | 100% → 0% | none → 0d |
| 80 | **CONSTRUCCIÓN** | 2014-03-13 20:57 A → 2014-03-27 17:27 (+14d) | 2014-08-06 19:57 → 2014-08-21 19:27 (+15d) | 30.88d → 31.75d | 4% → 0% |  |
| 81 | **Iteración C1** | 2014-03-13 20:57 A → 2014-03-27 17:27 (+14d) | 2014-03-27 17:57 A → 2014-04-15 17:27 (+19d) | 2.62d → 3.5d | 100% → 0% | none → 0d |
| 82 | **Análisis/Diseño** | 2014-03-13 20:57 A → 2014-03-27 17:27 (+14d) | 2014-03-18 20:57 A → 2014-04-02 17:27 (+15d) | 0.5d → 1d | 100% → 0% | none → 0d |
| 83 | Refinación de Diagramas de Actividad | 2014-03-13 20:57 A → 2014-03-27 17:27 (+14d) | 2014-03-18 18:57 A → 2014-04-01 17:27 (+14d) | 2h → 4h | 100% → 0% | none → 0d |
| 84 | Refinación de Diagramas de Secuencia | 2014-03-18 18:57 A → 2014-04-01 17:27 (+14d) | 2014-03-18 20:57 A → 2014-04-02 17:27 (+15d) | 2h → 4h | 100% → 0% | none → 0d |
| 85 | **Implementación** | 2014-03-18 20:57 A → 2014-04-02 17:27 (+15d) | 2014-03-25 19:57 A → 2014-04-09 20:27 (+15d) | 1.38d → 1.88d | 100% → 0% | none → 0d |
| 86 | Construcción de Base de Datos | 2014-03-18 20:57 A → 2014-04-02 17:27 (+15d) | 2014-03-20 18:57 A → 2014-04-08 17:27 (+19d) | 6h → 8h | 100% → 0% | none → 0d |
| 87 | Definición de Interfaz de Usuario | 2014-03-20 18:57 A → 2014-04-08 17:27 (+19d) | 2014-03-25 19:57 A → 2014-04-09 20:27 (+15d) | 5h → 7h | 100% → 0% | none → 0d |
| 88 | **Gestión del Proyecto** | 2014-03-25 19:57 A → 2014-04-09 20:27 (+15d) | 2014-03-26 20:57 A → 2014-04-10 20:27 (+15d) | 0.62d → 0.5d | 100% → 0% | none → 0d |
| 89 | Actualización de Riesgos | 2014-03-25 19:57 A → 2014-04-09 20:27 (+15d) | 2014-03-25 20:57 A → 2014-04-10 17:27 (+16d) |  | 100% → 0% | none → 0d |
| 90 | Revisión de planificacion (posible replanificación) | 2014-03-25 20:57 A → 2014-04-10 17:27 (+16d) | 2014-03-26 20:57 A → 2014-04-10 20:27 (+15d) | 4h → 3h | 100% → 0% | none → 0d |
| 91 | **Gestión de Configuración** | 2014-03-26 20:57 A → 2014-04-10 20:27 (+15d) | 2014-03-27 17:57 A → 2014-04-15 17:27 (+19d) |  | 100% → 0% | none → 0d |
| 92 | Versionado de prototipos | 2014-03-26 20:57 A → 2014-04-10 20:27 (+15d) | 2014-03-27 17:57 A → 2014-04-15 17:27 (+19d) |  | 100% → 0% | none → 0d |
| 93 | Revisión de versionado de documentos modificados | 2014-03-26 20:57 A → 2014-04-10 20:27 (+15d) | 2014-03-27 17:57 A → 2014-04-15 17:27 (+19d) |  | 100% → 0% | none → 0d |
| 94 | **Iteración C2** | 2014-03-27 17:57 → 2014-04-15 17:27 (+19d) | 2014-04-22 17:57 → 2014-05-07 17:27 (+15d) |  |  |  |
| 95 | **Análisis/Diseño** | 2014-03-27 17:57 → 2014-04-15 17:27 (+19d) | 2014-04-03 18:57 → 2014-04-22 18:27 (+19d) |  |  |  |
| 96 | Definición inicial del Modelo de componentes | 2014-03-27 17:57 → 2014-04-15 17:27 (+19d) | 2014-04-02 18:57 → 2014-04-17 18:27 (+15d) |  |  |  |
| 97 | Refinación de Diagramas de clases (agregado de operaciones) | 2014-04-02 18:57 → 2014-04-17 18:27 (+15d) | 2014-04-03 18:57 → 2014-04-22 18:27 (+19d) |  |  |  |
| 98 | **Implementación** | 2014-04-03 18:57 → 2014-04-22 18:27 (+19d) | 2014-04-16 17:57 → 2014-05-01 17:27 (+15d) |  |  |  |
| 99 | Codificación de Interfaz de usuario (FrontEnd) | 2014-04-03 18:57 → 2014-04-22 18:27 (+19d) | 2014-04-15 20:57 → 2014-04-30 20:27 (+15d) |  |  |  |
| 100 | Codificación de Interfaz de usuario (BackEnd) | 2014-04-03 18:57 → 2014-04-22 18:27 (+19d) | 2014-04-16 17:57 → 2014-05-01 17:27 (+15d) |  |  |  |
| 101 | Codificación de Interfaz de usuario (Android) | 2014-04-03 18:57 → 2014-04-22 18:27 (+19d) | 2014-04-16 17:57 → 2014-05-01 17:27 (+15d) |  |  |  |
| 102 | **Gestión del Proyecto** | 2014-04-16 17:57 → 2014-05-01 17:27 (+15d) | 2014-04-17 19:57 → 2014-05-06 19:27 (+19d) |  |  |  |
| 103 | Actualización de Riesgos | 2014-04-16 17:57 → 2014-05-01 17:27 (+15d) | 2014-04-16 20:57 → 2014-05-01 20:27 (+15d) |  |  |  |
| 104 | Revisión de planificacion (posible replanificación) | 2014-04-16 20:57 → 2014-05-01 20:27 (+15d) | 2014-04-17 19:57 → 2014-05-06 19:27 (+19d) |  |  |  |
| 105 | **Gestión de Configuración** | 2014-04-17 19:57 → 2014-05-06 19:27 (+19d) | 2014-04-22 17:57 → 2014-05-07 17:27 (+15d) |  |  |  |
| 106 | Versionado de interfaz de usuario | 2014-04-17 19:57 → 2014-05-06 19:27 (+19d) | 2014-04-17 20:57 → 2014-05-06 20:27 (+19d) |  |  |  |
| 107 | Revisión de versionado de documentos modificados | 2014-04-17 20:57 → 2014-05-06 20:27 (+19d) | 2014-04-22 17:57 → 2014-05-07 17:27 (+15d) |  |  |  |
| 108 | **Iteración C3** | 2014-04-22 17:57 → 2014-05-07 17:27 (+15d) | 2014-05-07 17:57 → 2014-05-22 17:27 (+15d) |  |  |  |
| 109 | **Análisis/Diseño** | 2014-04-22 17:57 → 2014-05-07 17:27 (+15d) | 2014-04-22 20:57 → 2014-05-07 20:27 (+15d) |  |  |  |
| 110 | Refinación del Modelo de componentes | 2014-04-22 17:57 → 2014-05-07 17:27 (+15d) | 2014-04-22 20:57 → 2014-05-07 20:27 (+15d) |  |  |  |
| 111 | **Implementación** | 2014-04-22 20:57 → 2014-05-07 20:27 (+15d) | 2014-05-06 17:57 → 2014-05-21 17:27 (+15d) |  |  |  |
| 112 | Codificacion de logeo de usuario (FrontEnd) | 2014-04-22 20:57 → 2014-05-07 20:27 (+15d) | 2014-05-06 17:57 → 2014-05-21 17:27 (+15d) |  |  |  |
| 113 | Codificación de seguridad [Roles y Usuario] (BackEnd) | 2014-04-22 20:57 → 2014-05-07 20:27 (+15d) | 2014-05-01 20:57 → 2014-05-20 20:27 (+19d) |  |  |  |
| 114 | Codificación de Local Storage (Android) | 2014-04-22 20:57 → 2014-05-07 20:27 (+15d) | 2014-05-01 20:57 → 2014-05-20 20:27 (+19d) |  |  |  |
| 115 | **Gestión del Proyecto** | 2014-05-06 17:57 → 2014-05-21 17:27 (+15d) | 2014-05-06 20:57 → 2014-05-21 20:27 (+15d) |  |  |  |
| 116 | Actualización de Riesgos | 2014-05-06 17:57 → 2014-05-21 17:27 (+15d) | 2014-05-06 20:57 → 2014-05-21 20:27 (+15d) |  |  |  |
| 117 | Revisión de planificacion (posible replanificación) | 2014-05-06 17:57 → 2014-05-21 17:27 (+15d) | 2014-05-06 20:57 → 2014-05-21 20:27 (+15d) |  |  |  |
| 118 | **Gestión de Configuración** | 2014-05-06 20:57 → 2014-05-21 20:27 (+15d) | 2014-05-07 17:57 → 2014-05-22 17:27 (+15d) |  |  |  |
| 119 | Versionado de todos los proyectos | 2014-05-06 20:57 → 2014-05-21 20:27 (+15d) | 2014-05-07 17:57 → 2014-05-22 17:27 (+15d) |  |  |  |
| 120 | Revisión de versionado de documentos modificados | 2014-05-06 20:57 → 2014-05-21 20:27 (+15d) | 2014-05-07 17:57 → 2014-05-22 17:27 (+15d) |  |  |  |
| 121 | **Iteración C4** | 2014-05-07 17:57 → 2014-05-22 17:27 (+15d) | 2014-05-27 20:57 → 2014-06-11 20:27 (+15d) |  |  |  |
| 122 | **Análisis/Diseño** | 2014-05-07 17:57 → 2014-05-22 17:27 (+15d) | 2014-05-08 17:57 → 2014-05-27 17:27 (+19d) |  |  |  |
| 123 | Refinación del Modelo de Datos | 2014-05-07 17:57 → 2014-05-22 17:27 (+15d) | 2014-05-08 17:57 → 2014-05-27 17:27 (+19d) |  |  |  |
| 124 | **Implementación** | 2014-05-08 17:57 → 2014-05-27 17:27 (+19d) | 2014-05-27 17:57 → 2014-06-11 17:27 (+15d) |  |  |  |
| 125 | Codificación de Gestión de reservas online (FrontEnd) | 2014-05-08 17:57 → 2014-05-27 17:27 (+19d) | 2014-05-27 17:57 → 2014-06-11 17:27 (+15d) |  |  |  |
| 126 | Codificación de ABM principales (BackEnd) | 2014-05-08 17:57 → 2014-05-27 17:27 (+19d) | 2014-05-22 19:57 → 2014-06-10 19:27 (+19d) |  |  |  |
| 127 | Codificación de ABM principales (Android) | 2014-05-08 17:57 → 2014-05-27 17:27 (+19d) | 2014-05-27 17:57 → 2014-06-11 17:27 (+15d) |  |  |  |
| 128 | **Gestión del Proyecto** | 2014-05-27 17:57 → 2014-06-11 17:27 (+15d) | 2014-05-27 19:57 → 2014-06-11 19:27 (+15d) |  |  |  |
| 129 | Actualización de Riesgos | 2014-05-27 17:57 → 2014-06-11 17:27 (+15d) | 2014-05-27 19:57 → 2014-06-11 19:27 (+15d) |  |  |  |
| 130 | Revisión de planificacion (posible replanificación) | 2014-05-27 17:57 → 2014-06-11 17:27 (+15d) | 2014-05-27 18:57 → 2014-06-11 18:27 (+15d) |  |  |  |
| 131 | **Gestión de Configuración** | 2014-05-27 19:57 → 2014-06-11 19:27 (+15d) | 2014-05-27 20:57 → 2014-06-11 20:27 (+15d) |  |  |  |
| 132 | Versionado de todos los proyectos | 2014-05-27 19:57 → 2014-06-11 19:27 (+15d) | 2014-05-27 20:57 → 2014-06-11 20:27 (+15d) |  |  |  |

| ID | Task | Start | Finish | Complete | Other |
| --- | --- | --- | --- | --- | --- |
| 133 | Revisión de versionado de documentos modificados | 2014-05-27 19:57 → 2014-06-11 19:27 (+15d) | 2014-05-27 20:57 → 2014-06-11 20:27 (+15d) |  |  |
| 134 | **Iteración C5** | 2014-05-27 20:57 → 2014-06-11 20:27 (+15d) | 2014-07-02 20:57 → 2014-07-17 20:27 (+15d) |  |  |
| 135 | **Análisis/Diseño** | 2014-05-27 20:57 → 2014-06-11 20:27 (+15d) | 2014-05-29 18:57 → 2014-06-17 18:27 (+19d) |  |  |
| 136 | Revisión de Diagramas y Modelos de Análisis/Diseño | 2014-05-27 20:57 → 2014-06-11 20:27 (+15d) | 2014-05-29 18:57 → 2014-06-17 18:27 (+19d) |  |  |
| 137 | **Implementación** | 2014-05-29 18:57 → 2014-06-17 18:27 (+19d) | 2014-06-25 19:57 → 2014-07-10 19:27 (+15d) |  |  |
| 138 | Codificación de Calculos de tiempos de espera (FrontEnd) | 2014-05-29 18:57 → 2014-06-17 18:27 (+19d) | 2014-06-25 17:57 → 2014-07-10 17:27 (+15d) |  |  |
| 139 | Codificación de Funciones básicas (BackEnd) | 2014-05-29 18:57 → 2014-06-17 18:27 (+19d) | 2014-06-25 17:57 → 2014-07-10 17:27 (+15d) |  |  |
| 140 | Codificación de visualizador de ordenes (Android) | 2014-05-29 18:57 → 2014-06-17 18:27 (+19d) | 2014-06-25 19:57 → 2014-07-10 19:27 (+15d) |  |  |
| 141 | **Pruebas** | 2014-06-25 19:57 → 2014-07-10 19:27 (+15d) | 2014-07-02 17:57 → 2014-07-17 17:27 (+15d) |  |  |
| 142 | Pruebas de Funcionalidad (para las 3 aplicaciones) | 2014-06-25 19:57 → 2014-07-10 19:27 (+15d) | 2014-07-02 17:57 → 2014-07-17 17:27 (+15d) |  |  |
| 143 | **Gestión del Proyecto** | 2014-07-02 17:57 → 2014-07-17 17:27 (+15d) | 2014-07-02 19:57 → 2014-07-17 19:27 (+15d) |  |  |
| 144 | Actualización de Riesgos | 2014-07-02 17:57 → 2014-07-17 17:27 (+15d) | 2014-07-02 19:57 → 2014-07-17 19:27 (+15d) |  |  |
| 145 | Revisión de planificacion (posible replanificación) | 2014-07-02 17:57 → 2014-07-17 17:27 (+15d) | 2014-07-02 18:57 → 2014-07-17 18:27 (+15d) |  |  |
| 146 | **Gestión de Configuración** | 2014-07-02 19:57 → 2014-07-17 19:27 (+15d) | 2014-07-02 20:57 → 2014-07-17 20:27 (+15d) |  |  |
| 147 | Versionado de todos los proyectos | 2014-07-02 19:57 → 2014-07-17 19:27 (+15d) | 2014-07-02 20:57 → 2014-07-17 20:27 (+15d) |  |  |
| 148 | Revisión de versionado de documentos modificados | 2014-07-02 19:57 → 2014-07-17 19:27 (+15d) | 2014-07-02 20:57 → 2014-07-17 20:27 (+15d) |  |  |
| 149 | **Iteración C6** | 2014-07-02 20:57 → 2014-07-17 20:27 (+15d) | 2014-08-06 19:57 → 2014-08-21 19:27 (+15d) |  |  |
| 150 | **Análisis/Diseño** | 2014-07-02 20:57 → 2014-07-17 20:27 (+15d) | 2014-07-08 20:57 → 2014-07-23 20:27 (+15d) |  |  |
| 151 | Revisión de Diagramas y Modelos de Análisis/Diseño | 2014-07-02 20:57 → 2014-07-17 20:27 (+15d) | 2014-07-08 20:57 → 2014-07-23 20:27 (+15d) |  |  |
| 152 | **Implementación** | 2014-07-08 20:57 → 2014-07-23 20:27 (+15d) | 2014-07-30 18:57 → 2014-08-14 18:27 (+15d) |  |  |
| 153 | Codificación de Calculos de tiempos de espera (FrontEnd) | 2014-07-08 20:57 → 2014-07-23 20:27 (+15d) | 2014-07-30 18:57 → 2014-08-14 18:27 (+15d) |  |  |
| 154 | Codificación de visualizador de Ordenes (BackEnd) | 2014-07-08 20:57 → 2014-07-23 20:27 (+15d) | 2014-07-29 20:57 → 2014-08-13 20:27 (+15d) |  |  |
| 155 | Codificación de personalización gráfica (Android) | 2014-07-08 20:57 → 2014-07-23 20:27 (+15d) | 2014-07-30 18:57 → 2014-08-14 18:27 (+15d) |  |  |
| 156 | **Pruebas** | 2014-07-30 18:57 → 2014-08-14 18:27 (+15d) | 2014-08-05 20:57 → 2014-08-20 20:27 (+15d) |  |  |
| 157 | Pruebas de comunicación de interfaces y pruebas de funcionalidad | 2014-07-30 18:57 → 2014-08-14 18:27 (+15d) | 2014-08-05 20:57 → 2014-08-20 20:27 (+15d) |  |  |
| 158 | **Gestión del Proyecto** | 2014-08-05 20:57 → 2014-08-20 20:27 (+15d) | 2014-08-06 17:57 → 2014-08-21 17:27 (+15d) |  |  |
| 159 | Actualización de Riesgos | 2014-08-05 20:57 → 2014-08-20 20:27 (+15d) | 2014-08-06 17:57 → 2014-08-21 17:27 (+15d) |  |  |
| 160 | Revisión de planificacion (posible replanificación) | 2014-08-05 20:57 → 2014-08-20 20:27 (+15d) | 2014-08-06 17:57 → 2014-08-21 17:27 (+15d) |  |  |
| 161 | **Gestión de Configuración** | 2014-08-06 17:57 → 2014-08-21 17:27 (+15d) | 2014-08-06 19:57 → 2014-08-21 19:27 (+15d) |  |  |
| 162 | Versionado de todos los proyectos | 2014-08-06 17:57 → 2014-08-21 17:27 (+15d) | 2014-08-06 19:57 → 2014-08-21 19:27 (+15d) |  |  |
| 163 | Revisión de versionado de documentos modificados | 2014-08-06 17:57 → 2014-08-21 17:27 (+15d) | 2014-08-06 19:57 → 2014-08-21 19:27 (+15d) |  |  |
| 164 | Capacidad Operacional Inicial | 2014-08-06 19:57 → 2014-08-21 19:27 (+15d) | 2014-08-06 19:57 → 2014-08-21 19:27 (+15d) |  |  |
| 165 | **TRANSICIÓN** | 2014-08-06 19:57 → 2014-08-21 19:27 (+15d) | 2014-09-11 18:57 → 2014-09-30 18:27 (+19d) |  |  |
| 166 | **Iteración T1** | 2014-08-06 19:57 → 2014-08-21 19:27 (+15d) | 2014-09-11 18:57 → 2014-09-30 18:27 (+19d) |  |  |
| 167 | **Implementación** | 2014-08-06 19:57 → 2014-08-21 19:27 (+15d) | 2014-08-19 19:57 → 2014-09-03 19:27 (+15d) |  |  |
| 168 | Elaboracion de documentación para usuarios y videos tutoriales | 2014-08-06 19:57 → 2014-08-21 19:27 (+15d) | 2014-08-19 19:57 → 2014-09-03 19:27 (+15d) |  |  |
| 169 | **Despliegue** | 2014-08-19 19:57 → 2014-09-03 19:27 (+15d) | 2014-09-02 19:57 → 2014-09-17 19:27 (+15d) |  |  |
| 170 | Modelo de despliegue | 2014-08-19 19:57 → 2014-09-03 19:27 (+15d) | 2014-08-26 17:57 → 2014-09-10 17:27 (+15d) |  |  |
| 171 | Integración y puesta a punto del sistema | 2014-08-26 17:57 → 2014-09-10 17:27 (+15d) | 2014-09-02 19:57 → 2014-09-17 19:27 (+15d) |  |  |
| 172 | **Gestión del Proyecto** | 2014-09-02 19:57 → 2014-09-17 19:27 (+15d) | 2014-09-10 20:57 → 2014-09-25 20:27 (+15d) |  |  |
| 173 | Actualización de Riesgos | 2014-09-02 19:57 → 2014-09-17 19:27 (+15d) | 2014-09-02 20:57 → 2014-09-17 20:27 (+15d) |  |  |
| 174 | Revisión de planificacion (posible replanificación) | 2014-09-02 20:57 → 2014-09-17 20:27 (+15d) | 2014-09-03 17:57 → 2014-09-18 17:27 (+15d) |  |  |
| 175 | Análisis de resultados del proyecto | 2014-09-03 17:57 → 2014-09-18 17:27 (+15d) | 2014-09-10 20:57 → 2014-09-25 20:27 (+15d) |  |  |
| 176 | **Gestión de Configuración** | 2014-09-10 20:57 → 2014-09-25 20:27 (+15d) | 2014-09-11 18:57 → 2014-09-30 18:27 (+19d) |  |  |
| 177 | Versionado de todos los proyectos | 2014-09-10 20:57 → 2014-09-25 20:27 (+15d) | 2014-09-11 18:57 → 2014-09-30 18:27 (+19d) |  |  |
| 178 | Revisión de versionado de documentos modificados | 2014-09-10 20:57 → 2014-09-25 20:27 (+15d) | 2014-09-11 18:57 → 2014-09-30 18:27 (+19d) |  |  |
| 179 | Lanzamiento de producto | 2014-09-11 18:57 → 2014-09-30 18:27 (+19d) | 2014-09-11 18:57 → 2014-09-30 18:27 (+19d) |  |  |
| 180 | Fin de Proyecto | 2014-09-11 18:57 → 2014-09-30 18:27 (+19d) | 2014-09-11 18:57 → 2014-09-30 18:27 (+19d) |  |  |
| 181 | **Informe de avance mensual** |  |  | 58% → 45% |  |
| 187 | Informe de avance mensual 6 | 2014-03-27 09:00 A → 2014-03-26 09:00 (-1d) | 2014-03-27 13:00 A → 2014-03-26 13:00 (-1d) | 100% → 0% | constraint start no earlier than 2014-03-27 09:00 → start no earlier than 2014-03-26 09:00; baseline start 2014-01-29 09:00 → 2014-03-26 09:00; baseline finish 2014-01-29 13:00 → 2014-03-26 13:00 |
| 188 | Informe de avance mensual 7 | 2014-03-26 09:00 A → 2014-04-30 09:00 (+35d) | 2014-03-26 13:00 A → 2014-04-30 13:00 (+35d) | 100% → 0% | constraint start no earlier than 2014-03-26 09:00 → start no earlier than 2014-04-30 09:00; baseline start 2014-03-26 09:00 → 2014-04-30 09:00; baseline finish 2014-03-26 13:00 → 2014-04-30 13:00 |
| 189 | Informe de avance mensual 8 | 2014-04-30 09:00 → 2014-05-28 09:00 (+28d) | 2014-04-30 13:00 → 2014-05-28 13:00 (+28d) |  | constraint start no earlier than 2014-04-30 09:00 → start no earlier than 2014-05-28 09:00; baseline start 2014-04-30 09:00 → 2014-05-28 09:00; baseline finish 2014-04-30 13:00 → 2014-05-28 13:00 |
| 190 | Informe de avance mensual 9 | 2014-05-28 09:00 → 2014-06-25 09:00 (+28d) | 2014-05-28 13:00 → 2014-06-25 13:00 (+28d) |  | constraint start no earlier than 2014-05-28 09:00 → start no earlier than 2014-06-25 09:00; baseline start 2014-05-28 09:00 → 2014-06-25 09:00; baseline finish 2014-05-28 13:00 → 2014-06-25 13:00 |
| 191 | Informe de avance mensual 10 | 2014-06-25 09:00 → 2014-07-30 09:00 (+35d) | 2014-06-25 13:00 → 2014-07-30 13:00 (+35d) |  | constraint start no earlier than 2014-06-25 09:00 → start no earlier than 2014-07-30 09:00; baseline start 2014-06-25 09:00 → 2014-07-30 09:00; baseline finish 2014-06-25 13:00 → 2014-07-30 13:00 |
| 192 | Informe de avance mensual 11 | 2014-07-30 09:00 → 2014-08-27 09:00 (+28d) | 2014-07-30 13:00 → 2014-08-27 13:00 (+28d) |  | constraint start no earlier than 2014-07-30 09:00 → start no earlier than 2014-08-27 09:00; baseline start 2014-07-30 09:00 → 2014-08-27 09:00; baseline finish 2014-07-30 13:00 → 2014-08-27 13:00 |

## Version 20 (data date 2014-03-28, saved 2014-03-28, file Informe7.mpp)

Note of the change: Planificacion #7

Last finish 2014-09-30 → 2014-09-11 (-19d). Complete tasks 43 → 62.

Added:

| ID | Task | Duration | Start | Finish | Constraint |
| --- | --- | --- | --- | --- | --- |
| 193 | Informe de avance mensual 12 | 4h | 2014-08-27 09:00 | 2014-08-27 13:00 | start no earlier than 2014-08-27 09:00 |

Changed:

| ID | Task | Start | Finish | Duration | Complete | Total float |
| --- | --- | --- | --- | --- | --- | --- |
| 1 | **RestApp** |  | 2014-09-30 18:27 → 2014-09-11 18:57 (-19d) | 70.68d → 67.24d | 26% → 31% |  |
| 25 | **ELABORACIÓN** |  | 2014-03-27 17:27 → 2014-03-13 20:57 A (-14d) | 19.69d → 17.12d | 78% → 100% | 0d → none |
| 65 | **Iteración E3** | 2014-02-27 17:27 A | 2014-03-27 17:27 → 2014-03-13 20:57 A (-14d) | 4.5d → 1.94d | 0% → 100% | 0d → none |
| 66 | **Requerimientos** | 2014-02-27 17:27 A | 2014-02-27 20:27 → 2014-02-27 18:27 A | 0.38d → 0.12d | 0% → 100% | 0d → none |
| 67 | Validacion de Mapeo de Requerimientos a Casos de Uso | 2014-02-27 17:27 A | 2014-02-27 20:27 → 2014-02-27 18:27 A | 3h → 1h | 0% → 100% | 0d → none |
| 68 | **Análisis/Diseño** | 2014-02-27 20:27 → 2014-02-27 18:27 A | 2014-03-20 18:27 → 2014-03-12 19:27 A (-8d) | 2.75d → 1.12d | 0% → 100% | 0d → none |
| 69 | Refinación de Diagrama de Casos de Uso | 2014-02-27 20:27 → 2014-02-27 18:27 A | 2014-03-12 18:27 → 2014-02-27 20:27 A (-13d) | 6h → 2h | 0% → 100% | 0d → none |
| 70 | Refinación de Diagrama de Clases | 2014-03-12 18:27 → 2014-02-27 20:27 A (-13d) | 2014-03-13 20:27 → 2014-03-11 19:27 A (-2d) | 6h → 3h | 0% → 100% | 0d → none |
| 71 | Refinación del Modelo de Datos | 2014-03-13 20:27 → 2014-03-11 19:27 A (-2d) | 2014-03-18 20:27 → 2014-03-12 17:27 A (-6d) | 4h → 2h | 0% → 100% | 0d → none |
| 72 | Descripción de casos de uso mas importantes | 2014-03-18 20:27 → 2014-03-12 17:27 A (-6d) | 2014-03-20 18:27 → 2014-03-12 19:27 A (-8d) | 6h → 2h | 0% → 100% | 0d → none |
| 73 | **Implementación** | 2014-03-20 18:27 → 2014-03-12 19:27 A (-8d) | 2014-03-26 18:27 → 2014-03-13 18:27 A (-13d) | 1d → 0.38d | 0% → 100% | 0d → none |
| 74 | Definición de interfaces de comunicación entre plataformas | 2014-03-20 18:27 → 2014-03-12 19:27 A (-8d) | 2014-03-26 18:27 → 2014-03-13 18:27 A (-13d) | 8h → 3h | 0% → 100% | 0d → none |
| 75 | **Gestión del Proyecto** | 2014-03-26 18:27 → 2014-03-13 18:27 A (-13d) | 2014-03-26 20:27 → 2014-03-13 20:27 A (-13d) |  | 0% → 100% | 0d → none |
| 76 | Actualización de planes de prevención y contigencia para nuevos Riesgos | 2014-03-26 18:27 → 2014-03-13 18:27 A (-13d) | 2014-03-26 20:27 → 2014-03-13 20:27 A (-13d) |  | 0% → 100% | 0d → none |
| 77 | **Gestión de Configuración** | 2014-03-26 20:27 → 2014-03-13 20:27 A (-13d) | 2014-03-27 17:27 → 2014-03-13 20:57 A (-14d) | 0.12d → 0.06d | 0% → 100% | 0d → none |
| 78 | Revisión de versionado de documentos modificados | 2014-03-26 20:27 → 2014-03-13 20:27 A (-13d) | 2014-03-27 17:27 → 2014-03-13 20:57 A (-14d) | 1h → 0.5h | 0% → 100% | 0d → none |
| 79 | Arquitectura del ciclo de vida | 2014-03-27 17:27 → 2014-03-13 20:57 A (-14d) | 2014-03-27 17:27 → 2014-03-13 20:57 A (-14d) |  | 0% → 100% | 0d → none |
| 80 | **CONSTRUCCIÓN** | 2014-03-27 17:27 → 2014-03-13 20:57 A (-14d) | 2014-08-21 19:27 → 2014-08-06 19:57 (-15d) | 31.75d → 30.88d | 0% → 4% |  |
| 81 | **Iteración C1** | 2014-03-27 17:27 → 2014-03-13 20:57 A (-14d) | 2014-04-15 17:27 → 2014-03-27 17:57 A (-19d) | 3.5d → 2.62d | 0% → 100% | 0d → none |
| 82 | **Análisis/Diseño** | 2014-03-27 17:27 → 2014-03-13 20:57 A (-14d) | 2014-04-02 17:27 → 2014-03-18 20:57 A (-15d) | 1d → 0.5d | 0% → 100% | 0d → none |
| 83 | Refinación de Diagramas de Actividad | 2014-03-27 17:27 → 2014-03-13 20:57 A (-14d) | 2014-04-01 17:27 → 2014-03-18 18:57 A (-14d) | 4h → 2h | 0% → 100% | 0d → none |
| 84 | Refinación de Diagramas de Secuencia | 2014-04-01 17:27 → 2014-03-18 18:57 A (-14d) | 2014-04-02 17:27 → 2014-03-18 20:57 A (-15d) | 4h → 2h | 0% → 100% | 0d → none |
| 85 | **Implementación** | 2014-04-02 17:27 → 2014-03-18 20:57 A (-15d) | 2014-04-09 20:27 → 2014-03-25 19:57 A (-15d) | 1.88d → 1.38d | 0% → 100% | 0d → none |
| 86 | Construcción de Base de Datos | 2014-04-02 17:27 → 2014-03-18 20:57 A (-15d) | 2014-04-08 17:27 → 2014-03-20 18:57 A (-19d) | 8h → 6h | 0% → 100% | 0d → none |
| 87 | Definición de Interfaz de Usuario | 2014-04-08 17:27 → 2014-03-20 18:57 A (-19d) | 2014-04-09 20:27 → 2014-03-25 19:57 A (-15d) | 7h → 5h | 0% → 100% | 0d → none |
| 88 | **Gestión del Proyecto** | 2014-04-09 20:27 → 2014-03-25 19:57 A (-15d) | 2014-04-10 20:27 → 2014-03-26 20:57 A (-15d) | 0.5d → 0.62d | 0% → 100% | 0d → none |
| 89 | Actualización de Riesgos | 2014-04-09 20:27 → 2014-03-25 19:57 A (-15d) | 2014-04-10 17:27 → 2014-03-25 20:57 A (-16d) |  | 0% → 100% | 0d → none |
| 90 | Revisión de planificacion (posible replanificación) | 2014-04-10 17:27 → 2014-03-25 20:57 A (-16d) | 2014-04-10 20:27 → 2014-03-26 20:57 A (-15d) | 3h → 4h | 0% → 100% | 0d → none |
| 91 | **Gestión de Configuración** | 2014-04-10 20:27 → 2014-03-26 20:57 A (-15d) | 2014-04-15 17:27 → 2014-03-27 17:57 A (-19d) |  | 0% → 100% | 0d → none |
| 92 | Versionado de prototipos | 2014-04-10 20:27 → 2014-03-26 20:57 A (-15d) | 2014-04-15 17:27 → 2014-03-27 17:57 A (-19d) |  | 0% → 100% | 0d → none |
| 93 | Revisión de versionado de documentos modificados | 2014-04-10 20:27 → 2014-03-26 20:57 A (-15d) | 2014-04-15 17:27 → 2014-03-27 17:57 A (-19d) |  | 0% → 100% | 0d → none |
| 94 | **Iteración C2** | 2014-04-15 17:27 → 2014-03-27 17:57 (-19d) | 2014-05-07 17:27 → 2014-04-22 17:57 (-15d) |  |  |  |
| 95 | **Análisis/Diseño** | 2014-04-15 17:27 → 2014-03-27 17:57 (-19d) | 2014-04-22 18:27 → 2014-04-03 18:57 (-19d) |  |  |  |
| 96 | Definición inicial del Modelo de componentes | 2014-04-15 17:27 → 2014-03-27 17:57 (-19d) | 2014-04-17 18:27 → 2014-04-02 18:57 (-15d) |  |  |  |
| 97 | Refinación de Diagramas de clases (agregado de operaciones) | 2014-04-17 18:27 → 2014-04-02 18:57 (-15d) | 2014-04-22 18:27 → 2014-04-03 18:57 (-19d) |  |  |  |
| 98 | **Implementación** | 2014-04-22 18:27 → 2014-04-03 18:57 (-19d) | 2014-05-01 17:27 → 2014-04-16 17:57 (-15d) |  |  |  |
| 99 | Codificación de Interfaz de usuario (FrontEnd) | 2014-04-22 18:27 → 2014-04-03 18:57 (-19d) | 2014-04-30 20:27 → 2014-04-15 20:57 (-15d) |  |  |  |
| 100 | Codificación de Interfaz de usuario (BackEnd) | 2014-04-22 18:27 → 2014-04-03 18:57 (-19d) | 2014-05-01 17:27 → 2014-04-16 17:57 (-15d) |  |  |  |
| 101 | Codificación de Interfaz de usuario (Android) | 2014-04-22 18:27 → 2014-04-03 18:57 (-19d) | 2014-05-01 17:27 → 2014-04-16 17:57 (-15d) |  |  |  |
| 102 | **Gestión del Proyecto** | 2014-05-01 17:27 → 2014-04-16 17:57 (-15d) | 2014-05-06 19:27 → 2014-04-17 19:57 (-19d) |  |  |  |
| 103 | Actualización de Riesgos | 2014-05-01 17:27 → 2014-04-16 17:57 (-15d) | 2014-05-01 20:27 → 2014-04-16 20:57 (-15d) |  |  |  |
| 104 | Revisión de planificacion (posible replanificación) | 2014-05-01 20:27 → 2014-04-16 20:57 (-15d) | 2014-05-06 19:27 → 2014-04-17 19:57 (-19d) |  |  |  |
| 105 | **Gestión de Configuración** | 2014-05-06 19:27 → 2014-04-17 19:57 (-19d) | 2014-05-07 17:27 → 2014-04-22 17:57 (-15d) |  |  |  |
| 106 | Versionado de interfaz de usuario | 2014-05-06 19:27 → 2014-04-17 19:57 (-19d) | 2014-05-06 20:27 → 2014-04-17 20:57 (-19d) |  |  |  |
| 107 | Revisión de versionado de documentos modificados | 2014-05-06 20:27 → 2014-04-17 20:57 (-19d) | 2014-05-07 17:27 → 2014-04-22 17:57 (-15d) |  |  |  |
| 108 | **Iteración C3** | 2014-05-07 17:27 → 2014-04-22 17:57 (-15d) | 2014-05-22 17:27 → 2014-05-07 17:57 (-15d) |  |  |  |
| 109 | **Análisis/Diseño** | 2014-05-07 17:27 → 2014-04-22 17:57 (-15d) | 2014-05-07 20:27 → 2014-04-22 20:57 (-15d) |  |  |  |
| 110 | Refinación del Modelo de componentes | 2014-05-07 17:27 → 2014-04-22 17:57 (-15d) | 2014-05-07 20:27 → 2014-04-22 20:57 (-15d) |  |  |  |
| 111 | **Implementación** | 2014-05-07 20:27 → 2014-04-22 20:57 (-15d) | 2014-05-21 17:27 → 2014-05-06 17:57 (-15d) |  |  |  |
| 112 | Codificacion de logeo de usuario (FrontEnd) | 2014-05-07 20:27 → 2014-04-22 20:57 (-15d) | 2014-05-21 17:27 → 2014-05-06 17:57 (-15d) |  |  |  |
| 113 | Codificación de seguridad [Roles y Usuario] (BackEnd) | 2014-05-07 20:27 → 2014-04-22 20:57 (-15d) | 2014-05-20 20:27 → 2014-05-01 20:57 (-19d) |  |  |  |
| 114 | Codificación de Local Storage (Android) | 2014-05-07 20:27 → 2014-04-22 20:57 (-15d) | 2014-05-20 20:27 → 2014-05-01 20:57 (-19d) |  |  |  |
| 115 | **Gestión del Proyecto** | 2014-05-21 17:27 → 2014-05-06 17:57 (-15d) | 2014-05-21 20:27 → 2014-05-06 20:57 (-15d) |  |  |  |
| 116 | Actualización de Riesgos | 2014-05-21 17:27 → 2014-05-06 17:57 (-15d) | 2014-05-21 20:27 → 2014-05-06 20:57 (-15d) |  |  |  |
| 117 | Revisión de planificacion (posible replanificación) | 2014-05-21 17:27 → 2014-05-06 17:57 (-15d) | 2014-05-21 20:27 → 2014-05-06 20:57 (-15d) |  |  |  |
| 118 | **Gestión de Configuración** | 2014-05-21 20:27 → 2014-05-06 20:57 (-15d) | 2014-05-22 17:27 → 2014-05-07 17:57 (-15d) |  |  |  |
| 119 | Versionado de todos los proyectos | 2014-05-21 20:27 → 2014-05-06 20:57 (-15d) | 2014-05-22 17:27 → 2014-05-07 17:57 (-15d) |  |  |  |
| 120 | Revisión de versionado de documentos modificados | 2014-05-21 20:27 → 2014-05-06 20:57 (-15d) | 2014-05-22 17:27 → 2014-05-07 17:57 (-15d) |  |  |  |
| 121 | **Iteración C4** | 2014-05-22 17:27 → 2014-05-07 17:57 (-15d) | 2014-06-11 20:27 → 2014-05-27 20:57 (-15d) |  |  |  |
| 122 | **Análisis/Diseño** | 2014-05-22 17:27 → 2014-05-07 17:57 (-15d) | 2014-05-27 17:27 → 2014-05-08 17:57 (-19d) |  |  |  |
| 123 | Refinación del Modelo de Datos | 2014-05-22 17:27 → 2014-05-07 17:57 (-15d) | 2014-05-27 17:27 → 2014-05-08 17:57 (-19d) |  |  |  |
| 124 | **Implementación** | 2014-05-27 17:27 → 2014-05-08 17:57 (-19d) | 2014-06-11 17:27 → 2014-05-27 17:57 (-15d) |  |  |  |
| 125 | Codificación de Gestión de reservas online (FrontEnd) | 2014-05-27 17:27 → 2014-05-08 17:57 (-19d) | 2014-06-11 17:27 → 2014-05-27 17:57 (-15d) |  |  |  |
| 126 | Codificación de ABM principales (BackEnd) | 2014-05-27 17:27 → 2014-05-08 17:57 (-19d) | 2014-06-10 19:27 → 2014-05-22 19:57 (-19d) |  |  |  |
| 127 | Codificación de ABM principales (Android) | 2014-05-27 17:27 → 2014-05-08 17:57 (-19d) | 2014-06-11 17:27 → 2014-05-27 17:57 (-15d) |  |  |  |
| 128 | **Gestión del Proyecto** | 2014-06-11 17:27 → 2014-05-27 17:57 (-15d) | 2014-06-11 19:27 → 2014-05-27 19:57 (-15d) |  |  |  |
| 129 | Actualización de Riesgos | 2014-06-11 17:27 → 2014-05-27 17:57 (-15d) | 2014-06-11 19:27 → 2014-05-27 19:57 (-15d) |  |  |  |
| 130 | Revisión de planificacion (posible replanificación) | 2014-06-11 17:27 → 2014-05-27 17:57 (-15d) | 2014-06-11 18:27 → 2014-05-27 18:57 (-15d) |  |  |  |
| 131 | **Gestión de Configuración** | 2014-06-11 19:27 → 2014-05-27 19:57 (-15d) | 2014-06-11 20:27 → 2014-05-27 20:57 (-15d) |  |  |  |
| 132 | Versionado de todos los proyectos | 2014-06-11 19:27 → 2014-05-27 19:57 (-15d) | 2014-06-11 20:27 → 2014-05-27 20:57 (-15d) |  |  |  |

| ID | Task | Start | Finish | Complete | Other |
| --- | --- | --- | --- | --- | --- |
| 133 | Revisión de versionado de documentos modificados | 2014-06-11 19:27 → 2014-05-27 19:57 (-15d) | 2014-06-11 20:27 → 2014-05-27 20:57 (-15d) |  |  |
| 134 | **Iteración C5** | 2014-06-11 20:27 → 2014-05-27 20:57 (-15d) | 2014-07-17 20:27 → 2014-07-02 20:57 (-15d) |  |  |
| 135 | **Análisis/Diseño** | 2014-06-11 20:27 → 2014-05-27 20:57 (-15d) | 2014-06-17 18:27 → 2014-05-29 18:57 (-19d) |  |  |
| 136 | Revisión de Diagramas y Modelos de Análisis/Diseño | 2014-06-11 20:27 → 2014-05-27 20:57 (-15d) | 2014-06-17 18:27 → 2014-05-29 18:57 (-19d) |  |  |
| 137 | **Implementación** | 2014-06-17 18:27 → 2014-05-29 18:57 (-19d) | 2014-07-10 19:27 → 2014-06-25 19:57 (-15d) |  |  |
| 138 | Codificación de Calculos de tiempos de espera (FrontEnd) | 2014-06-17 18:27 → 2014-05-29 18:57 (-19d) | 2014-07-10 17:27 → 2014-06-25 17:57 (-15d) |  |  |
| 139 | Codificación de Funciones básicas (BackEnd) | 2014-06-17 18:27 → 2014-05-29 18:57 (-19d) | 2014-07-10 17:27 → 2014-06-25 17:57 (-15d) |  |  |
| 140 | Codificación de visualizador de ordenes (Android) | 2014-06-17 18:27 → 2014-05-29 18:57 (-19d) | 2014-07-10 19:27 → 2014-06-25 19:57 (-15d) |  |  |
| 141 | **Pruebas** | 2014-07-10 19:27 → 2014-06-25 19:57 (-15d) | 2014-07-17 17:27 → 2014-07-02 17:57 (-15d) |  |  |
| 142 | Pruebas de Funcionalidad (para las 3 aplicaciones) | 2014-07-10 19:27 → 2014-06-25 19:57 (-15d) | 2014-07-17 17:27 → 2014-07-02 17:57 (-15d) |  |  |
| 143 | **Gestión del Proyecto** | 2014-07-17 17:27 → 2014-07-02 17:57 (-15d) | 2014-07-17 19:27 → 2014-07-02 19:57 (-15d) |  |  |
| 144 | Actualización de Riesgos | 2014-07-17 17:27 → 2014-07-02 17:57 (-15d) | 2014-07-17 19:27 → 2014-07-02 19:57 (-15d) |  |  |
| 145 | Revisión de planificacion (posible replanificación) | 2014-07-17 17:27 → 2014-07-02 17:57 (-15d) | 2014-07-17 18:27 → 2014-07-02 18:57 (-15d) |  |  |
| 146 | **Gestión de Configuración** | 2014-07-17 19:27 → 2014-07-02 19:57 (-15d) | 2014-07-17 20:27 → 2014-07-02 20:57 (-15d) |  |  |
| 147 | Versionado de todos los proyectos | 2014-07-17 19:27 → 2014-07-02 19:57 (-15d) | 2014-07-17 20:27 → 2014-07-02 20:57 (-15d) |  |  |
| 148 | Revisión de versionado de documentos modificados | 2014-07-17 19:27 → 2014-07-02 19:57 (-15d) | 2014-07-17 20:27 → 2014-07-02 20:57 (-15d) |  |  |
| 149 | **Iteración C6** | 2014-07-17 20:27 → 2014-07-02 20:57 (-15d) | 2014-08-21 19:27 → 2014-08-06 19:57 (-15d) |  |  |
| 150 | **Análisis/Diseño** | 2014-07-17 20:27 → 2014-07-02 20:57 (-15d) | 2014-07-23 20:27 → 2014-07-08 20:57 (-15d) |  |  |
| 151 | Revisión de Diagramas y Modelos de Análisis/Diseño | 2014-07-17 20:27 → 2014-07-02 20:57 (-15d) | 2014-07-23 20:27 → 2014-07-08 20:57 (-15d) |  |  |
| 152 | **Implementación** | 2014-07-23 20:27 → 2014-07-08 20:57 (-15d) | 2014-08-14 18:27 → 2014-07-30 18:57 (-15d) |  |  |
| 153 | Codificación de Calculos de tiempos de espera (FrontEnd) | 2014-07-23 20:27 → 2014-07-08 20:57 (-15d) | 2014-08-14 18:27 → 2014-07-30 18:57 (-15d) |  |  |
| 154 | Codificación de visualizador de Ordenes (BackEnd) | 2014-07-23 20:27 → 2014-07-08 20:57 (-15d) | 2014-08-13 20:27 → 2014-07-29 20:57 (-15d) |  |  |
| 155 | Codificación de personalización gráfica (Android) | 2014-07-23 20:27 → 2014-07-08 20:57 (-15d) | 2014-08-14 18:27 → 2014-07-30 18:57 (-15d) |  |  |
| 156 | **Pruebas** | 2014-08-14 18:27 → 2014-07-30 18:57 (-15d) | 2014-08-20 20:27 → 2014-08-05 20:57 (-15d) |  |  |
| 157 | Pruebas de comunicación de interfaces y pruebas de funcionalidad | 2014-08-14 18:27 → 2014-07-30 18:57 (-15d) | 2014-08-20 20:27 → 2014-08-05 20:57 (-15d) |  |  |
| 158 | **Gestión del Proyecto** | 2014-08-20 20:27 → 2014-08-05 20:57 (-15d) | 2014-08-21 17:27 → 2014-08-06 17:57 (-15d) |  |  |
| 159 | Actualización de Riesgos | 2014-08-20 20:27 → 2014-08-05 20:57 (-15d) | 2014-08-21 17:27 → 2014-08-06 17:57 (-15d) |  |  |
| 160 | Revisión de planificacion (posible replanificación) | 2014-08-20 20:27 → 2014-08-05 20:57 (-15d) | 2014-08-21 17:27 → 2014-08-06 17:57 (-15d) |  |  |
| 161 | **Gestión de Configuración** | 2014-08-21 17:27 → 2014-08-06 17:57 (-15d) | 2014-08-21 19:27 → 2014-08-06 19:57 (-15d) |  |  |
| 162 | Versionado de todos los proyectos | 2014-08-21 17:27 → 2014-08-06 17:57 (-15d) | 2014-08-21 19:27 → 2014-08-06 19:57 (-15d) |  |  |
| 163 | Revisión de versionado de documentos modificados | 2014-08-21 17:27 → 2014-08-06 17:57 (-15d) | 2014-08-21 19:27 → 2014-08-06 19:57 (-15d) |  |  |
| 164 | Capacidad Operacional Inicial | 2014-08-21 19:27 → 2014-08-06 19:57 (-15d) | 2014-08-21 19:27 → 2014-08-06 19:57 (-15d) |  |  |
| 165 | **TRANSICIÓN** | 2014-08-21 19:27 → 2014-08-06 19:57 (-15d) | 2014-09-30 18:27 → 2014-09-11 18:57 (-19d) |  |  |
| 166 | **Iteración T1** | 2014-08-21 19:27 → 2014-08-06 19:57 (-15d) | 2014-09-30 18:27 → 2014-09-11 18:57 (-19d) |  |  |
| 167 | **Implementación** | 2014-08-21 19:27 → 2014-08-06 19:57 (-15d) | 2014-09-03 19:27 → 2014-08-19 19:57 (-15d) |  |  |
| 168 | Elaboracion de documentación para usuarios y videos tutoriales | 2014-08-21 19:27 → 2014-08-06 19:57 (-15d) | 2014-09-03 19:27 → 2014-08-19 19:57 (-15d) |  |  |
| 169 | **Despliegue** | 2014-09-03 19:27 → 2014-08-19 19:57 (-15d) | 2014-09-17 19:27 → 2014-09-02 19:57 (-15d) |  |  |
| 170 | Modelo de despliegue | 2014-09-03 19:27 → 2014-08-19 19:57 (-15d) | 2014-09-10 17:27 → 2014-08-26 17:57 (-15d) |  |  |
| 171 | Integración y puesta a punto del sistema | 2014-09-10 17:27 → 2014-08-26 17:57 (-15d) | 2014-09-17 19:27 → 2014-09-02 19:57 (-15d) |  |  |
| 172 | **Gestión del Proyecto** | 2014-09-17 19:27 → 2014-09-02 19:57 (-15d) | 2014-09-25 20:27 → 2014-09-10 20:57 (-15d) |  |  |
| 173 | Actualización de Riesgos | 2014-09-17 19:27 → 2014-09-02 19:57 (-15d) | 2014-09-17 20:27 → 2014-09-02 20:57 (-15d) |  |  |
| 174 | Revisión de planificacion (posible replanificación) | 2014-09-17 20:27 → 2014-09-02 20:57 (-15d) | 2014-09-18 17:27 → 2014-09-03 17:57 (-15d) |  |  |
| 175 | Análisis de resultados del proyecto | 2014-09-18 17:27 → 2014-09-03 17:57 (-15d) | 2014-09-25 20:27 → 2014-09-10 20:57 (-15d) |  |  |
| 176 | **Gestión de Configuración** | 2014-09-25 20:27 → 2014-09-10 20:57 (-15d) | 2014-09-30 18:27 → 2014-09-11 18:57 (-19d) |  |  |
| 177 | Versionado de todos los proyectos | 2014-09-25 20:27 → 2014-09-10 20:57 (-15d) | 2014-09-30 18:27 → 2014-09-11 18:57 (-19d) |  |  |
| 178 | Revisión de versionado de documentos modificados | 2014-09-25 20:27 → 2014-09-10 20:57 (-15d) | 2014-09-30 18:27 → 2014-09-11 18:57 (-19d) |  |  |
| 179 | Lanzamiento de producto | 2014-09-30 18:27 → 2014-09-11 18:57 (-19d) | 2014-09-30 18:27 → 2014-09-11 18:57 (-19d) |  |  |
| 180 | Fin de Proyecto | 2014-09-30 18:27 → 2014-09-11 18:57 (-19d) | 2014-09-30 18:27 → 2014-09-11 18:57 (-19d) |  |  |
| 181 | **Informe de avance mensual** |  |  | 45% → 58% |  |
| 187 | Informe de avance mensual 6 | 2014-03-26 09:00 → 2014-03-27 09:00 A (+1d) | 2014-03-26 13:00 → 2014-03-27 13:00 A (+1d) | 0% → 100% | constraint start no earlier than 2014-03-26 09:00 → start no earlier than 2014-03-27 09:00; baseline start 2014-03-26 09:00 → 2014-01-29 09:00; baseline finish 2014-03-26 13:00 → 2014-01-29 13:00 |
| 188 | Informe de avance mensual 7 | 2014-04-30 09:00 → 2014-03-26 09:00 A (-35d) | 2014-04-30 13:00 → 2014-03-26 13:00 A (-35d) | 0% → 100% | constraint start no earlier than 2014-04-30 09:00 → start no earlier than 2014-03-26 09:00; baseline start 2014-04-30 09:00 → 2014-03-26 09:00; baseline finish 2014-04-30 13:00 → 2014-03-26 13:00 |
| 189 | Informe de avance mensual 8 | 2014-05-28 09:00 → 2014-04-30 09:00 (-28d) | 2014-05-28 13:00 → 2014-04-30 13:00 (-28d) |  | constraint start no earlier than 2014-05-28 09:00 → start no earlier than 2014-04-30 09:00; baseline start 2014-05-28 09:00 → 2014-04-30 09:00; baseline finish 2014-05-28 13:00 → 2014-04-30 13:00 |
| 190 | Informe de avance mensual 9 | 2014-06-25 09:00 → 2014-05-28 09:00 (-28d) | 2014-06-25 13:00 → 2014-05-28 13:00 (-28d) |  | constraint start no earlier than 2014-06-25 09:00 → start no earlier than 2014-05-28 09:00; baseline start 2014-06-25 09:00 → 2014-05-28 09:00; baseline finish 2014-06-25 13:00 → 2014-05-28 13:00 |
| 191 | Informe de avance mensual 10 | 2014-07-30 09:00 → 2014-06-25 09:00 (-35d) | 2014-07-30 13:00 → 2014-06-25 13:00 (-35d) |  | constraint start no earlier than 2014-07-30 09:00 → start no earlier than 2014-06-25 09:00; baseline start 2014-07-30 09:00 → 2014-06-25 09:00; baseline finish 2014-07-30 13:00 → 2014-06-25 13:00 |
| 192 | Informe de avance mensual 11 | 2014-08-27 09:00 → 2014-07-30 09:00 (-28d) | 2014-08-27 13:00 → 2014-07-30 13:00 (-28d) |  | constraint start no earlier than 2014-08-27 09:00 → start no earlier than 2014-07-30 09:00; baseline start 2014-08-27 09:00 → 2014-07-30 09:00; baseline finish 2014-08-27 13:00 → 2014-07-30 13:00 |

## Version 21 (data date 2014-03-28, saved 2014-04-09, file Informe7.mpp)

Note of the change: Save planificación #7

Last finish 2014-09-11 → 2014-09-09 (-2d).

Removed: 188 Informe de avance mensual 7

Changed:

| ID | Task | Start | Finish | Duration | Complete | Total float |
| --- | --- | --- | --- | --- | --- | --- |
| 1 | **RestApp** |  | 2014-09-11 18:57 → 2014-09-09 19:57 (-2d) | 67.24d → 66.37d | 31% → 32% |  |
| 80 | **CONSTRUCCIÓN** |  | 2014-08-06 19:57 → 2014-07-31 20:57 (-6d) | 30.88d → 30d |  |  |
| 94 | **Iteración C2** | 2014-03-27 17:57 A | 2014-04-22 17:57 → 2014-04-16 18:57 (-6d) | 5d → 4.12d | 0% → 3% |  |
| 95 | **Análisis/Diseño** | 2014-03-27 17:57 A | 2014-04-03 18:57 → 2014-04-01 19:57 (-2d) | 1.62d → 0.75d | 0% → 33% |  |
| 96 | Definición inicial del Modelo de componentes | 2014-03-27 17:57 A | 2014-04-02 18:57 → 2014-03-27 19:57 A (-6d) | 9h → 2h | 0% → 100% | 0d → none |
| 97 | Refinación de Diagramas de clases (agregado de operaciones) | 2014-04-02 18:57 → 2014-03-27 19:57 (-6d) | 2014-04-03 18:57 → 2014-04-01 19:57 (-2d) |  |  |  |
| 98 | **Implementación** | 2014-04-03 18:57 → 2014-04-01 19:57 (-2d) | 2014-04-16 17:57 → 2014-04-10 18:57 (-6d) |  |  |  |
| 99 | Codificación de Interfaz de usuario (FrontEnd) | 2014-04-03 18:57 → 2014-04-01 19:57 (-2d) | 2014-04-15 20:57 → 2014-04-10 17:57 (-5d) |  |  |  |
| 100 | Codificación de Interfaz de usuario (BackEnd) | 2014-04-03 18:57 → 2014-04-01 19:57 (-2d) | 2014-04-16 17:57 → 2014-04-10 18:57 (-6d) |  |  |  |
| 101 | Codificación de Interfaz de usuario (Android) | 2014-04-03 18:57 → 2014-04-01 19:57 (-2d) | 2014-04-16 17:57 → 2014-04-10 18:57 (-6d) |  |  |  |
| 102 | **Gestión del Proyecto** | 2014-04-16 17:57 → 2014-04-10 18:57 (-6d) | 2014-04-17 19:57 → 2014-04-15 20:57 (-2d) |  |  |  |
| 103 | Actualización de Riesgos | 2014-04-16 17:57 → 2014-04-10 18:57 (-6d) | 2014-04-16 20:57 → 2014-04-15 17:57 (-1d) |  |  |  |
| 104 | Revisión de planificacion (posible replanificación) | 2014-04-16 20:57 → 2014-04-15 17:57 (-1d) | 2014-04-17 19:57 → 2014-04-15 20:57 (-2d) |  |  |  |
| 105 | **Gestión de Configuración** | 2014-04-17 19:57 → 2014-04-15 20:57 (-2d) | 2014-04-22 17:57 → 2014-04-16 18:57 (-6d) |  |  |  |
| 106 | Versionado de interfaz de usuario | 2014-04-17 19:57 → 2014-04-15 20:57 (-2d) | 2014-04-17 20:57 → 2014-04-16 17:57 (-1d) |  |  |  |
| 107 | Revisión de versionado de documentos modificados | 2014-04-17 20:57 → 2014-04-16 17:57 (-1d) | 2014-04-22 17:57 → 2014-04-16 18:57 (-6d) |  |  |  |
| 108 | **Iteración C3** | 2014-04-22 17:57 → 2014-04-16 18:57 (-6d) | 2014-05-07 17:57 → 2014-05-01 18:57 (-6d) |  |  |  |
| 109 | **Análisis/Diseño** | 2014-04-22 17:57 → 2014-04-16 18:57 (-6d) | 2014-04-22 20:57 → 2014-04-17 17:57 (-5d) |  |  |  |
| 110 | Refinación del Modelo de componentes | 2014-04-22 17:57 → 2014-04-16 18:57 (-6d) | 2014-04-22 20:57 → 2014-04-17 17:57 (-5d) |  |  |  |
| 111 | **Implementación** | 2014-04-22 20:57 → 2014-04-17 17:57 (-5d) | 2014-05-06 17:57 → 2014-04-30 18:57 (-6d) |  |  |  |
| 112 | Codificacion de logeo de usuario (FrontEnd) | 2014-04-22 20:57 → 2014-04-17 17:57 (-5d) | 2014-05-06 17:57 → 2014-04-30 18:57 (-6d) |  |  |  |
| 113 | Codificación de seguridad [Roles y Usuario] (BackEnd) | 2014-04-22 20:57 → 2014-04-17 17:57 (-5d) | 2014-05-01 20:57 → 2014-04-30 17:57 (-1d) |  |  |  |
| 114 | Codificación de Local Storage (Android) | 2014-04-22 20:57 → 2014-04-17 17:57 (-5d) | 2014-05-01 20:57 → 2014-04-30 17:57 (-1d) |  |  |  |
| 115 | **Gestión del Proyecto** | 2014-05-06 17:57 → 2014-04-30 18:57 (-6d) | 2014-05-06 20:57 → 2014-05-01 17:57 (-5d) |  |  |  |
| 116 | Actualización de Riesgos | 2014-05-06 17:57 → 2014-04-30 18:57 (-6d) | 2014-05-06 20:57 → 2014-05-01 17:57 (-5d) |  |  |  |
| 117 | Revisión de planificacion (posible replanificación) | 2014-05-06 17:57 → 2014-04-30 18:57 (-6d) | 2014-05-06 20:57 → 2014-05-01 17:57 (-5d) |  |  |  |
| 118 | **Gestión de Configuración** | 2014-05-06 20:57 → 2014-05-01 17:57 (-5d) | 2014-05-07 17:57 → 2014-05-01 18:57 (-6d) |  |  |  |
| 119 | Versionado de todos los proyectos | 2014-05-06 20:57 → 2014-05-01 17:57 (-5d) | 2014-05-07 17:57 → 2014-05-01 18:57 (-6d) |  |  |  |
| 120 | Revisión de versionado de documentos modificados | 2014-05-06 20:57 → 2014-05-01 17:57 (-5d) | 2014-05-07 17:57 → 2014-05-01 18:57 (-6d) |  |  |  |
| 121 | **Iteración C4** | 2014-05-07 17:57 → 2014-05-01 18:57 (-6d) | 2014-05-27 20:57 → 2014-05-22 17:57 (-5d) |  |  |  |
| 122 | **Análisis/Diseño** | 2014-05-07 17:57 → 2014-05-01 18:57 (-6d) | 2014-05-08 17:57 → 2014-05-06 18:57 (-2d) |  |  |  |
| 123 | Refinación del Modelo de Datos | 2014-05-07 17:57 → 2014-05-01 18:57 (-6d) | 2014-05-08 17:57 → 2014-05-06 18:57 (-2d) |  |  |  |
| 124 | **Implementación** | 2014-05-08 17:57 → 2014-05-06 18:57 (-2d) | 2014-05-27 17:57 → 2014-05-21 18:57 (-6d) |  |  |  |
| 125 | Codificación de Gestión de reservas online (FrontEnd) | 2014-05-08 17:57 → 2014-05-06 18:57 (-2d) | 2014-05-27 17:57 → 2014-05-21 18:57 (-6d) |  |  |  |
| 126 | Codificación de ABM principales (BackEnd) | 2014-05-08 17:57 → 2014-05-06 18:57 (-2d) | 2014-05-22 19:57 → 2014-05-20 20:57 (-2d) |  |  |  |
| 127 | Codificación de ABM principales (Android) | 2014-05-08 17:57 → 2014-05-06 18:57 (-2d) | 2014-05-27 17:57 → 2014-05-21 18:57 (-6d) |  |  |  |
| 128 | **Gestión del Proyecto** | 2014-05-27 17:57 → 2014-05-21 18:57 (-6d) | 2014-05-27 19:57 → 2014-05-21 20:57 (-6d) |  |  |  |
| 129 | Actualización de Riesgos | 2014-05-27 17:57 → 2014-05-21 18:57 (-6d) | 2014-05-27 19:57 → 2014-05-21 20:57 (-6d) |  |  |  |
| 130 | Revisión de planificacion (posible replanificación) | 2014-05-27 17:57 → 2014-05-21 18:57 (-6d) | 2014-05-27 18:57 → 2014-05-21 19:57 (-6d) |  |  |  |
| 131 | **Gestión de Configuración** | 2014-05-27 19:57 → 2014-05-21 20:57 (-6d) | 2014-05-27 20:57 → 2014-05-22 17:57 (-5d) |  |  |  |
| 132 | Versionado de todos los proyectos | 2014-05-27 19:57 → 2014-05-21 20:57 (-6d) | 2014-05-27 20:57 → 2014-05-22 17:57 (-5d) |  |  |  |
| 133 | Revisión de versionado de documentos modificados | 2014-05-27 19:57 → 2014-05-21 20:57 (-6d) | 2014-05-27 20:57 → 2014-05-22 17:57 (-5d) |  |  |  |
| 134 | **Iteración C5** | 2014-05-27 20:57 → 2014-05-22 17:57 (-5d) | 2014-07-02 20:57 → 2014-07-01 17:57 (-1d) |  |  |  |
| 135 | **Análisis/Diseño** | 2014-05-27 20:57 → 2014-05-22 17:57 (-5d) | 2014-05-29 18:57 → 2014-05-27 19:57 (-2d) |  |  |  |
| 136 | Revisión de Diagramas y Modelos de Análisis/Diseño | 2014-05-27 20:57 → 2014-05-22 17:57 (-5d) | 2014-05-29 18:57 → 2014-05-27 19:57 (-2d) |  |  |  |
| 137 | **Implementación** | 2014-05-29 18:57 → 2014-05-27 19:57 (-2d) | 2014-06-25 19:57 → 2014-06-19 20:57 (-6d) |  |  |  |
| 138 | Codificación de Calculos de tiempos de espera (FrontEnd) | 2014-05-29 18:57 → 2014-05-27 19:57 (-2d) | 2014-06-25 17:57 → 2014-06-19 18:57 (-6d) |  |  |  |
| 139 | Codificación de Funciones básicas (BackEnd) | 2014-05-29 18:57 → 2014-05-27 19:57 (-2d) | 2014-06-25 17:57 → 2014-06-19 18:57 (-6d) |  |  |  |
| 140 | Codificación de visualizador de ordenes (Android) | 2014-05-29 18:57 → 2014-05-27 19:57 (-2d) | 2014-06-25 19:57 → 2014-06-19 20:57 (-6d) |  |  |  |
| 141 | **Pruebas** | 2014-06-25 19:57 → 2014-06-19 20:57 (-6d) | 2014-07-02 17:57 → 2014-06-26 18:57 (-6d) |  |  |  |
| 142 | Pruebas de Funcionalidad (para las 3 aplicaciones) | 2014-06-25 19:57 → 2014-06-19 20:57 (-6d) | 2014-07-02 17:57 → 2014-06-26 18:57 (-6d) |  |  |  |
| 143 | **Gestión del Proyecto** | 2014-07-02 17:57 → 2014-06-26 18:57 (-6d) | 2014-07-02 19:57 → 2014-06-26 20:57 (-6d) |  |  |  |
| 144 | Actualización de Riesgos | 2014-07-02 17:57 → 2014-06-26 18:57 (-6d) | 2014-07-02 19:57 → 2014-06-26 20:57 (-6d) |  |  |  |
| 145 | Revisión de planificacion (posible replanificación) | 2014-07-02 17:57 → 2014-06-26 18:57 (-6d) | 2014-07-02 18:57 → 2014-06-26 19:57 (-6d) |  |  |  |
| 146 | **Gestión de Configuración** | 2014-07-02 19:57 → 2014-06-26 20:57 (-6d) | 2014-07-02 20:57 → 2014-07-01 17:57 (-1d) |  |  |  |
| 147 | Versionado de todos los proyectos | 2014-07-02 19:57 → 2014-06-26 20:57 (-6d) | 2014-07-02 20:57 → 2014-07-01 17:57 (-1d) |  |  |  |
| 148 | Revisión de versionado de documentos modificados | 2014-07-02 19:57 → 2014-06-26 20:57 (-6d) | 2014-07-02 20:57 → 2014-07-01 17:57 (-1d) |  |  |  |
| 149 | **Iteración C6** | 2014-07-02 20:57 → 2014-07-01 17:57 (-1d) | 2014-08-06 19:57 → 2014-07-31 20:57 (-6d) |  |  |  |
| 150 | **Análisis/Diseño** | 2014-07-02 20:57 → 2014-07-01 17:57 (-1d) | 2014-07-08 20:57 → 2014-07-03 17:57 (-5d) |  |  |  |
| 151 | Revisión de Diagramas y Modelos de Análisis/Diseño | 2014-07-02 20:57 → 2014-07-01 17:57 (-1d) | 2014-07-08 20:57 → 2014-07-03 17:57 (-5d) |  |  |  |
| 152 | **Implementación** | 2014-07-08 20:57 → 2014-07-03 17:57 (-5d) | 2014-07-30 18:57 → 2014-07-24 19:57 (-6d) |  |  |  |
| 153 | Codificación de Calculos de tiempos de espera (FrontEnd) | 2014-07-08 20:57 → 2014-07-03 17:57 (-5d) | 2014-07-30 18:57 → 2014-07-24 19:57 (-6d) |  |  |  |
| 154 | Codificación de visualizador de Ordenes (BackEnd) | 2014-07-08 20:57 → 2014-07-03 17:57 (-5d) | 2014-07-29 20:57 → 2014-07-24 17:57 (-5d) |  |  |  |
| 155 | Codificación de personalización gráfica (Android) | 2014-07-08 20:57 → 2014-07-03 17:57 (-5d) | 2014-07-30 18:57 → 2014-07-24 19:57 (-6d) |  |  |  |
| 156 | **Pruebas** | 2014-07-30 18:57 → 2014-07-24 19:57 (-6d) | 2014-08-05 20:57 → 2014-07-31 17:57 (-5d) |  |  |  |
| 157 | Pruebas de comunicación de interfaces y pruebas de funcionalidad | 2014-07-30 18:57 → 2014-07-24 19:57 (-6d) | 2014-08-05 20:57 → 2014-07-31 17:57 (-5d) |  |  |  |
| 158 | **Gestión del Proyecto** | 2014-08-05 20:57 → 2014-07-31 17:57 (-5d) | 2014-08-06 17:57 → 2014-07-31 18:57 (-6d) |  |  |  |
| 159 | Actualización de Riesgos | 2014-08-05 20:57 → 2014-07-31 17:57 (-5d) | 2014-08-06 17:57 → 2014-07-31 18:57 (-6d) |  |  |  |
| 160 | Revisión de planificacion (posible replanificación) | 2014-08-05 20:57 → 2014-07-31 17:57 (-5d) | 2014-08-06 17:57 → 2014-07-31 18:57 (-6d) |  |  |  |
| 161 | **Gestión de Configuración** | 2014-08-06 17:57 → 2014-07-31 18:57 (-6d) | 2014-08-06 19:57 → 2014-07-31 20:57 (-6d) |  |  |  |

| ID | Task | Start | Finish | Complete |
| --- | --- | --- | --- | --- |
| 162 | Versionado de todos los proyectos | 2014-08-06 17:57 → 2014-07-31 18:57 (-6d) | 2014-08-06 19:57 → 2014-07-31 20:57 (-6d) |  |
| 163 | Revisión de versionado de documentos modificados | 2014-08-06 17:57 → 2014-07-31 18:57 (-6d) | 2014-08-06 19:57 → 2014-07-31 20:57 (-6d) |  |
| 164 | Capacidad Operacional Inicial | 2014-08-06 19:57 → 2014-07-31 20:57 (-6d) | 2014-08-06 19:57 → 2014-07-31 20:57 (-6d) |  |
| 165 | **TRANSICIÓN** | 2014-08-06 19:57 → 2014-07-31 20:57 (-6d) | 2014-09-11 18:57 → 2014-09-09 19:57 (-2d) |  |
| 166 | **Iteración T1** | 2014-08-06 19:57 → 2014-07-31 20:57 (-6d) | 2014-09-11 18:57 → 2014-09-09 19:57 (-2d) |  |
| 167 | **Implementación** | 2014-08-06 19:57 → 2014-07-31 20:57 (-6d) | 2014-08-19 19:57 → 2014-08-13 20:57 (-6d) |  |
| 168 | Elaboracion de documentación para usuarios y videos tutoriales | 2014-08-06 19:57 → 2014-07-31 20:57 (-6d) | 2014-08-19 19:57 → 2014-08-13 20:57 (-6d) |  |
| 169 | **Despliegue** | 2014-08-19 19:57 → 2014-08-13 20:57 (-6d) | 2014-09-02 19:57 → 2014-08-27 20:57 (-6d) |  |
| 170 | Modelo de despliegue | 2014-08-19 19:57 → 2014-08-13 20:57 (-6d) | 2014-08-26 17:57 → 2014-08-20 18:57 (-6d) |  |
| 171 | Integración y puesta a punto del sistema | 2014-08-26 17:57 → 2014-08-20 18:57 (-6d) | 2014-09-02 19:57 → 2014-08-27 20:57 (-6d) |  |
| 172 | **Gestión del Proyecto** | 2014-09-02 19:57 → 2014-08-27 20:57 (-6d) | 2014-09-10 20:57 → 2014-09-09 17:57 (-1d) |  |
| 173 | Actualización de Riesgos | 2014-09-02 19:57 → 2014-08-27 20:57 (-6d) | 2014-09-02 20:57 → 2014-08-28 17:57 (-5d) |  |
| 174 | Revisión de planificacion (posible replanificación) | 2014-09-02 20:57 → 2014-08-28 17:57 (-5d) | 2014-09-03 17:57 → 2014-08-28 18:57 (-6d) |  |
| 175 | Análisis de resultados del proyecto | 2014-09-03 17:57 → 2014-08-28 18:57 (-6d) | 2014-09-10 20:57 → 2014-09-09 17:57 (-1d) |  |
| 176 | **Gestión de Configuración** | 2014-09-10 20:57 → 2014-09-09 17:57 (-1d) | 2014-09-11 18:57 → 2014-09-09 19:57 (-2d) |  |
| 177 | Versionado de todos los proyectos | 2014-09-10 20:57 → 2014-09-09 17:57 (-1d) | 2014-09-11 18:57 → 2014-09-09 19:57 (-2d) |  |
| 178 | Revisión de versionado de documentos modificados | 2014-09-10 20:57 → 2014-09-09 17:57 (-1d) | 2014-09-11 18:57 → 2014-09-09 19:57 (-2d) |  |
| 179 | Lanzamiento de producto | 2014-09-11 18:57 → 2014-09-09 19:57 (-2d) | 2014-09-11 18:57 → 2014-09-09 19:57 (-2d) |  |
| 180 | Fin de Proyecto | 2014-09-11 18:57 → 2014-09-09 19:57 (-2d) | 2014-09-11 18:57 → 2014-09-09 19:57 (-2d) |  |
| 181 | **Informe de avance mensual** |  |  | 58% → 55% |
